# P1 - PGSI

How a schedule from MS Project changed from version to version. A marks actual dates.

## Version 1 (saved 2008-04-03, file P1 - PGSI.mpp)

Note of the change: Añadido p1 gestoria

| ID | WBS | Task | Duration | Start | Finish | Total float |
| --- | --- | --- | --- | --- | --- | --- |
| 1 | 1 | **Análisis** | 1d | 2008-04-03 | 2008-04-03 | 0d |
| 2 | 1.1 | **1. Definición del sistema** | 1d | 2008-04-03 | 2008-04-03 | 0d |
| 3 |  | 1.1 Determinación del alcance del sistema | 1d | 2008-04-03 | 2008-04-03 | 0d |
| 4 |  | 1.2 Identificación del entorno tecnológico | 1d | 2008-04-03 | 2008-04-03 | 0d |
| 5 | 1.2 | **2. Establecimiento de requisitos** | 1d | 2008-04-03 | 2008-04-03 | 0d |
| 6 |  | 2.1 Obtención y análisis de requisitos | 1d | 2008-04-03 | 2008-04-03 | 0d |
| 7 |  | 2.2 Validación de los requisitos | 0d | 2008-04-03 | 2008-04-03 | 1d |
| 8 | 1.3 | **3. Identificación de Subsistemas de análisis** | 1d | 2008-04-03 | 2008-04-03 | 0d |
| 9 |  | 3.1 Determinación de subsistemas de análisis | 1d | 2008-04-03 | 2008-04-03 | 0d |
| 10 |  | 3.2 Integración de subsistemas de análisis | 1d | 2008-04-03 | 2008-04-03 | 0d |
| 11 | 1.4 | **4. Elaboración del Modelo de Datos** | 1d | 2008-04-03 | 2008-04-03 | 0d |
| 12 |  | 4.1 Elaboración del modelo conceptual y lógico de datos | 1d | 2008-04-03 | 2008-04-03 | 0d |
| 13 |  | 4.2 Normalización | 1d | 2008-04-03 | 2008-04-03 | 0d |
| 14 |  | 4.3 Especificación de necesidades de carga inicial | 1d | 2008-04-03 | 2008-04-03 | 0d |
| 15 |  | 5. Elaboración del Modelo de Procesos | 1d | 2008-04-03 | 2008-04-03 | 0d |
| 16 | 1.6 | **6. Definición de Interfaces de Usuario** | 1d | 2008-04-03 | 2008-04-03 | 0d |
| 17 |  | 6.1 Especificación de principios generales de la interfaz | 1d | 2008-04-03 | 2008-04-03 | 0d |
| 18 |  | 6.2 Identificación de perfiles y diálogos | 1d | 2008-04-03 | 2008-04-03 | 0d |
| 19 |  | 7. Análisis de consistencia y especificación de requisitos | 1d | 2008-04-03 | 2008-04-03 | 0d |
| 20 | 1.8 | **8. Especificación del Plan de Pruebas** | 1d | 2008-04-03 | 2008-04-03 | 0d |
| 21 |  | 8.1 Definición del alcance y requisitos de las pruebas | 1d | 2008-04-03 | 2008-04-03 | 0d |
| 22 |  | 8.2 Definición de las pruebas de aceptación del sistema | 1d | 2008-04-03 | 2008-04-03 | 0d |
| 23 |  | 9. Aprobación del análisis del Sistema de Información | 1d | 2008-04-03 | 2008-04-03 | 0d |
| 24 | 2 | **Diseño** | 1d | 2008-04-03 | 2008-04-03 | 0d |
| 25 |  | 1. Definición de la Arquitectura del Sistema | 1d | 2008-04-03 | 2008-04-03 | 0d |
| 26 |  | 2. Diseño de arquitectura de soporte | 1d | 2008-04-03 | 2008-04-03 | 0d |
| 27 | 2.3 | **3. Diseño de arquitectura de módulos del sistema** | 1d | 2008-04-03 | 2008-04-03 | 0d |
| 28 |  | 3.1 Diseño de módulos del sistema | 1d | 2008-04-03 | 2008-04-03 | 0d |
| 29 |  | 3.2 Diseño de la comunicación entre módulos | 1d | 2008-04-03 | 2008-04-03 | 0d |
| 30 |  | 3.3 Revisión de la interfaz de usuario | 1d | 2008-04-03 | 2008-04-03 | 0d |
| 31 | 2.4 | **4. Diseño físico de datos** | 1d | 2008-04-03 | 2008-04-03 | 0d |
| 32 |  | 4.1 Diseño del modelo físico de datos | 1d | 2008-04-03 | 2008-04-03 | 0d |
| 33 |  | 4.2 Especificación de los caminos de acceso a los datos | 1d | 2008-04-03 | 2008-04-03 | 0d |
| 34 |  | 4.3 Especificación de la distribución de datos | 1d | 2008-04-03 | 2008-04-03 | 0d |
| 35 |  | 5. Verificación y aceptación de la arquitectura del sistema | 1d | 2008-04-03 | 2008-04-03 | 0d |
| 36 |  | 6. Generación de especificaciones de construcción | 1d | 2008-04-03 | 2008-04-03 | 0d |
| 37 | 2.7 | **7. Diseño de la migración y carga inicial de datos** | 1d | 2008-04-03 | 2008-04-03 | 0d |
| 38 |  | 7.1 Especificación del entorno de carga inicial | 1d | 2008-04-03 | 2008-04-03 | 0d |
| 39 |  | 7.2 Diseño de procedimientos de carga inicial | 1d | 2008-04-03 | 2008-04-03 | 0d |
| 40 |  | 7.3 Diseño detallado de componentes de carga inicial | 1d | 2008-04-03 | 2008-04-03 | 0d |
| 41 |  | 8. Especificación técnica del plan de pruebas | 1d | 2008-04-03 | 2008-04-03 | 0d |
| 42 | 2.9 | **9. Establecimiento de los requisitos de implantación** | 1d | 2008-04-03 | 2008-04-03 | 0d |
| 43 |  | 9.1 Especificación de requisitos de documentación de usuario | 1d | 2008-04-03 | 2008-04-03 | 0d |
| 44 |  | 9.2 Especificación de requisitos de implantación | 1d | 2008-04-03 | 2008-04-03 | 0d |
| 45 |  | 10. Aprobación del diseño del Sistema de Información | 1d | 2008-04-03 | 2008-04-03 | 0d |
| 46 | 3 | **Construcción** | 1d | 2008-04-03 | 2008-04-03 | 0d |
| 47 |  | 1. Preparación del entorno de generación y construcción | 1d | 2008-04-03 | 2008-04-03 | 0d |
| 48 |  | 2. Generación del código de los componentes y procedimientos | 1d | 2008-04-03 | 2008-04-03 | 0d |
| 49 | 3.3 | **3. Ejecución de las Pruebas Unitarias** | 1d | 2008-04-03 | 2008-04-03 | 0d |
| 50 |  | 3.1 Preparación del entorno de pruebas unitarias | 1d | 2008-04-03 | 2008-04-03 | 0d |
| 51 |  | 3.2 Realización y evaluación de las pruebas unitarias | 1d | 2008-04-03 | 2008-04-03 | 0d |
| 52 | 3.4 | **4. Ejecución de las Pruebas de Integración** | 1d | 2008-04-03 | 2008-04-03 | 0d |
| 53 |  | 4.1 Preparación del entorno de las pruebas de integración | 1d | 2008-04-03 | 2008-04-03 | 0d |
| 54 |  | 4.2 Realización y evaluación del resultado de las pruebas de integración | 1d | 2008-04-03 | 2008-04-03 | 0d |
| 55 | 3.5 | **5. Ejecución de las Pruebas del Sistema** | 1d | 2008-04-03 | 2008-04-03 | 0d |
| 56 |  | 5.1 Preparación del entorno de las pruebas del sistema | 1d | 2008-04-03 | 2008-04-03 | 0d |
| 57 |  | 5.2 Realización y evaluación de las pruebas del sistema | 1d | 2008-04-03 | 2008-04-03 | 0d |
| 58 |  | 6. Elaboración de los Manuales de Usuario | 1d | 2008-04-03 | 2008-04-03 | 0d |
| 59 | 3.7 | **7. Definición de la Formación de Usuarios Finales** | 1d | 2008-04-03 | 2008-04-03 | 0d |
| 60 |  | 7.1 Definición del esquema de formación | 1d | 2008-04-03 | 2008-04-03 | 0d |
| 61 |  | 7.2 Especificación de los recursos y entornos de formación | 1d | 2008-04-03 | 2008-04-03 | 0d |
| 62 | 3.8 | **8. Construcción de los Componentes y Procedimientos de la Carga Inicial de Datos** | 1d | 2008-04-03 | 2008-04-03 | 0d |
| 63 |  | 8.1 Preparación y generación de código de los componentes y procedimientos de carga inicial de datos | 1d | 2008-04-03 | 2008-04-03 | 0d |
| 64 |  | 8.2 Realización y evaluación de las pruebas de carga inicial de datos | 1d | 2008-04-03 | 2008-04-03 | 0d |
| 65 |  | 9. Aprobación del Sistema de Información | 1d | 2008-04-03 | 2008-04-03 | 0d |

## Version 2 (saved 2008-04-09, file P1 - PGSI - version 2 - dependencias.mpp)

Note of the change: Añadido p1 gestoria

Last finish 2008-04-03 → 2008-07-14 (+102d).

Added:

| ID | Task | Duration | Start | Finish | Predecessors |
| --- | --- | --- | --- | --- | --- |
| 24 | Fin Análisis | 0d | 2008-05-09 | 2008-05-09 | 23 |
| 47 | Fin Diseño | 0d | 2008-06-12 | 2008-06-12 | 46 |
| 68 | Fin Proyecto | 0d | 2008-07-14 | 2008-07-14 | 67 |

Changed:

| ID | Task | Start | Finish | Duration | Total float | Predecessors |
| --- | --- | --- | --- | --- | --- | --- |
| 1 | **Análisis** | 2008-04-03 → 2008-04-14 (+11d) | 2008-04-03 → 2008-05-09 (+36d) | 1d → 19.62d |  |  |
| 2 | **1. Definición del sistema** | 2008-04-03 → 2008-04-14 (+11d) | 2008-04-03 → 2008-04-21 (+18d) | 1d → 5.12d |  |  |
| 3 | 1.1 Determinación del alcance del sistema | 2008-04-03 → 2008-04-14 (+11d) | 2008-04-03 → 2008-04-18 (+15d) | 1d → 33h |  |  |
| 4 | 1.2 Identificación del entorno tecnológico | 2008-04-03 → 2008-04-18 (+15d) | 2008-04-03 → 2008-04-21 (+18d) | 1d → 8h |  | none → 3 |
| 5 | **2. Establecimiento de requisitos** | 2008-04-03 → 2008-04-21 (+18d) | 2008-04-03 → 2008-04-25 (+22d) | 1d → 4.12d |  |  |
| 6 | 2.1 Obtención y análisis de requisitos | 2008-04-03 → 2008-04-21 (+18d) | 2008-04-03 → 2008-04-24 (+21d) | 1d → 25h |  | none → 4 |
| 7 | 2.2 Validación de los requisitos | 2008-04-03 → 2008-04-24 (+21d) | 2008-04-03 → 2008-04-25 (+22d) | 0d → 8h | 1d → 0d | none → 6 |
| 8 | **3. Identificación de Subsistemas de análisis** | 2008-04-03 → 2008-04-25 (+22d) | 2008-04-03 → 2008-04-30 (+27d) | 1d → 3.62d | 0d → 1.88d |  |
| 9 | 3.1 Determinación de subsistemas de análisis | 2008-04-03 → 2008-04-25 (+22d) | 2008-04-03 → 2008-04-28 (+25d) | 1d → 14h | 0d → 1.88d | none → 7 |
| 10 | 3.2 Integración de subsistemas de análisis | 2008-04-03 → 2008-04-29 (+26d) | 2008-04-03 → 2008-04-30 (+27d) | 1d → 15h | 0d → 1.88d | none → 9 |
| 11 | **4. Elaboración del Modelo de Datos** | 2008-04-03 → 2008-04-25 (+22d) | 2008-04-03 → 2008-05-02 (+29d) | 1d → 5.5d |  |  |
| 12 | 4.1 Elaboración del modelo conceptual y lógico de datos | 2008-04-03 → 2008-04-25 (+22d) | 2008-04-03 → 2008-04-30 (+27d) | 1d → 24h |  | none → 7 |
| 13 | 4.2 Normalización | 2008-04-03 → 2008-04-30 (+27d) | 2008-04-03 → 2008-05-01 (+28d) | 1d → 10h |  | none → 12 |
| 14 | 4.3 Especificación de necesidades de carga inicial | 2008-04-03 → 2008-05-01 (+28d) | 2008-04-03 → 2008-05-02 (+29d) | 1d → 10h |  | none → 13 |
| 15 | 5. Elaboración del Modelo de Procesos | 2008-04-03 → 2008-04-25 (+22d) | 2008-04-03 → 2008-04-30 (+27d) | 1d → 24h | 0d → 2.5d | none → 7 |
| 16 | **6. Definición de Interfaces de Usuario** | 2008-04-03 → 2008-04-25 (+22d) | 2008-04-03 → 2008-04-29 (+26d) | 1d → 2d | 0d → 3.5d |  |
| 17 | 6.1 Especificación de principios generales de la interfaz | 2008-04-03 → 2008-04-25 (+22d) | 2008-04-03 → 2008-04-28 (+25d) | 1d → 8h | 0d → 3.5d | none → 7 |
| 18 | 6.2 Identificación de perfiles y diálogos | 2008-04-03 → 2008-04-28 (+25d) | 2008-04-03 → 2008-04-29 (+26d) | 1d → 8h | 0d → 3.5d | none → 17 |
| 19 | 7. Análisis de consistencia y especificación de requisitos | 2008-04-03 → 2008-05-02 (+29d) | 2008-04-03 → 2008-05-07 (+34d) | 1d → 22h | 0d → 1d | none → 10, 14, 15, 18 |
| 20 | **8. Especificación del Plan de Pruebas** | 2008-04-03 → 2008-05-02 (+29d) | 2008-04-03 → 2008-05-08 (+35d) | 1d → 3.75d |  |  |
| 21 | 8.1 Definición del alcance y requisitos de las pruebas | 2008-04-03 → 2008-05-02 (+29d) | 2008-04-03 → 2008-05-06 (+33d) | 1d → 16h |  | none → 10, 14, 15, 18 |
| 22 | 8.2 Definición de las pruebas de aceptación del sistema | 2008-04-03 → 2008-05-06 (+33d) | 2008-04-03 → 2008-05-08 (+35d) | 1d → 14h |  | none → 21 |
| 23 | 9. Aprobación del análisis del Sistema de Información | 2008-04-03 → 2008-05-08 (+35d) | 2008-04-03 → 2008-05-09 (+36d) | 1d → 9h |  | none → 19, 22 |
| 25 | **Diseño** | 2008-04-03 → 2008-05-09 (+36d) | 2008-04-03 → 2008-06-12 (+70d) | 1d → 24.38d |  | none → 1 |
| 26 | 1. Definición de la Arquitectura del Sistema | 2008-04-03 → 2008-05-09 (+36d) | 2008-04-03 → 2008-05-14 (+41d) | 1d → 26h |  | none → 24 |
| 27 | 2. Diseño de arquitectura de soporte | 2008-04-03 → 2008-05-14 (+41d) | 2008-04-03 → 2008-05-21 (+48d) | 1d → 38h | 0d → 5.5d | none → 26 |
| 28 | **3. Diseño de arquitectura de módulos del sistema** | 2008-04-03 → 2008-05-14 (+41d) | 2008-04-03 → 2008-05-29 (+56d) | 1d → 10.25d |  |  |
| 29 | 3.1 Diseño de módulos del sistema | 2008-04-03 → 2008-05-14 (+41d) | 2008-04-03 → 2008-05-22 (+49d) | 1d → 46h |  | none → 26 |
| 30 | 3.2 Diseño de la comunicación entre módulos | 2008-04-03 → 2008-05-22 (+49d) | 2008-04-03 → 2008-05-28 (+55d) | 1d → 28h |  | none → 29 |
| 31 | 3.3 Revisión de la interfaz de usuario | 2008-04-03 → 2008-05-28 (+55d) | 2008-04-03 → 2008-05-29 (+56d) | 1d → 8h |  | none → 30 |
| 32 | **4. Diseño físico de datos** | 2008-04-03 → 2008-05-14 (+41d) | 2008-04-03 → 2008-05-28 (+55d) | 1d → 9.62d | 0d → 0.62d |  |
| 33 | 4.1 Diseño del modelo físico de datos | 2008-04-03 → 2008-05-14 (+41d) | 2008-04-03 → 2008-05-21 (+48d) | 1d → 35h | 0d → 0.62d | none → 26 |
| 34 | 4.2 Especificación de los caminos de acceso a los datos | 2008-04-03 → 2008-05-21 (+48d) | 2008-04-03 → 2008-05-23 (+50d) | 1d → 16h | 0d → 0.62d | none → 33 |
| 35 | 4.3 Especificación de la distribución de datos | 2008-04-03 → 2008-05-23 (+50d) | 2008-04-03 → 2008-05-28 (+55d) | 1d → 26h | 0d → 0.62d | none → 34 |
| 36 | 5. Verificación y aceptación de la arquitectura del sistema | 2008-04-03 → 2008-05-29 (+56d) | 2008-04-03 → 2008-05-30 (+57d) | 1d → 8h |  | none → 27, 31, 35 |
| 37 | 6. Generación de especificaciones de construcción | 2008-04-03 → 2008-05-30 (+57d) | 2008-04-03 → 2008-06-05 (+63d) | 1d → 37h | 0d → 4.25d | none → 36 |
| 38 | **7. Diseño de la migración y carga inicial de datos** | 2008-04-03 → 2008-05-30 (+57d) | 2008-04-03 → 2008-06-11 (+69d) | 1d → 8.88d |  |  |
| 39 | 7.1 Especificación del entorno de carga inicial | 2008-04-03 → 2008-05-30 (+57d) | 2008-04-03 → 2008-06-03 (+61d) | 1d → 17h |  | none → 36 |
| 40 | 7.2 Diseño de procedimientos de carga inicial | 2008-04-03 → 2008-06-03 (+61d) | 2008-04-03 → 2008-06-06 (+64d) | 1d → 27h |  | none → 39 |
| 41 | 7.3 Diseño detallado de componentes de carga inicial | 2008-04-03 → 2008-06-06 (+64d) | 2008-04-03 → 2008-06-11 (+69d) | 1d → 27h |  | none → 40 |
| 42 | 8. Especificación técnica del plan de pruebas | 2008-04-03 → 2008-05-30 (+57d) | 2008-04-03 → 2008-06-03 (+61d) | 1d → 16h | 0d → 6.88d | none → 36 |
| 43 | **9. Establecimiento de los requisitos de implantación** | 2008-04-03 → 2008-05-30 (+57d) | 2008-04-03 → 2008-06-03 (+61d) | 1d → 2d | 0d → 6.88d |  |
| 44 | 9.1 Especificación de requisitos de documentación de usuario | 2008-04-03 → 2008-05-30 (+57d) | 2008-04-03 → 2008-06-02 (+60d) | 1d → 8h | 0d → 7.88d | none → 36 |
| 45 | 9.2 Especificación de requisitos de implantación | 2008-04-03 → 2008-05-30 (+57d) | 2008-04-03 → 2008-06-03 (+61d) | 1d → 16h | 0d → 6.88d | none → 36 |
| 46 | 10. Aprobación del diseño del Sistema de Información | 2008-04-03 → 2008-06-12 (+70d) | 2008-04-03 → 2008-06-12 (+70d) | 1d → 8h |  | none → 37, 41, 42, 44, 45 |
| 48 | **Construcción** | 2008-04-03 → 2008-06-13 (+71d) | 2008-04-03 → 2008-07-14 (+102d) | 1d → 21.75d |  | none → 25 |
| 49 | 1. Preparación del entorno de generación y construcción | 2008-04-03 → 2008-06-13 (+71d) | 2008-04-03 → 2008-06-19 (+77d) | 1d → 36h |  | none → 47 |
| 50 | 2. Generación del código de los componentes y procedimientos | 2008-04-03 → 2008-06-19 (+77d) | 2008-04-03 → 2008-07-04 (+92d) | 1d → 87h |  | none → 49 |
| 51 | **3. Ejecución de las Pruebas Unitarias** | 2008-04-03 → 2008-07-04 (+92d) | 2008-04-03 → 2008-07-09 (+97d) | 1d → 3.5d | 0d → 1.62d |  |
| 52 | 3.1 Preparación del entorno de pruebas unitarias | 2008-04-03 → 2008-07-04 (+92d) | 2008-04-03 → 2008-07-07 (+95d) | 1d → 11h | 0d → 1.62d | none → 50 |
| 53 | 3.2 Realización y evaluación de las pruebas unitarias | 2008-04-03 → 2008-07-07 (+95d) | 2008-04-03 → 2008-07-09 (+97d) | 1d → 17h | 0d → 1.62d | none → 52, 56FF |
| 54 | **4. Ejecución de las Pruebas de Integración** | 2008-04-03 → 2008-07-04 (+92d) | 2008-04-03 → 2008-07-09 (+97d) | 1d → 3.38d | 0d → 1.75d |  |
| 55 | 4.1 Preparación del entorno de las pruebas de integración | 2008-04-03 → 2008-07-04 (+92d) | 2008-04-03 → 2008-07-07 (+95d) | 1d → 10h | 0d → 1.75d | none → 50, 52SS |
| 56 | 4.2 Realización y evaluación del resultado de las pruebas de integración | 2008-04-03 → 2008-07-07 (+95d) | 2008-04-03 → 2008-07-09 (+97d) | 1d → 17h | 0d → 1.75d | none → 55, 59FF |
| 57 | **5. Ejecución de las Pruebas del Sistema** | 2008-04-03 → 2008-07-04 (+92d) | 2008-04-03 → 2008-07-09 (+97d) | 1d → 3.25d | 0d → 1.88d |  |
| 58 | 5.1 Preparación del entorno de las pruebas del sistema | 2008-04-03 → 2008-07-04 (+92d) | 2008-04-03 → 2008-07-07 (+95d) | 1d → 11h | 0d → 1.88d | none → 50, 55SS |
| 59 | 5.2 Realización y evaluación de las pruebas del sistema | 2008-04-03 → 2008-07-07 (+95d) | 2008-04-03 → 2008-07-09 (+97d) | 1d → 15h | 0d → 1.88d | none → 58 |
| 60 | 6. Elaboración de los Manuales de Usuario | 2008-04-03 → 2008-07-04 (+92d) | 2008-04-03 → 2008-07-11 (+99d) | 1d → 41h |  | none → 50 |
| 61 | **7. Definición de la Formación de Usuarios Finales** | 2008-04-03 → 2008-06-13 (+71d) | 2008-04-03 → 2008-06-20 (+78d) | 1d → 5.38d | 0d → 15.12d |  |
| 62 | 7.1 Definición del esquema de formación | 2008-04-03 → 2008-06-13 (+71d) | 2008-04-03 → 2008-06-18 (+76d) | 1d → 26h | 0d → 15.12d | none → 46 |
| 63 | 7.2 Especificación de los recursos y entornos de formación | 2008-04-03 → 2008-06-18 (+76d) | 2008-04-03 → 2008-06-20 (+78d) | 1d → 17h | 0d → 15.12d | none → 62 |
| 64 | **8. Construcción de los Componentes y Procedimientos de la Carga Inicial de Datos** | 2008-04-03 → 2008-06-13 (+71d) | 2008-04-03 → 2008-06-20 (+78d) | 1d → 5.25d | 0d → 15.25d |  |
| 65 | 8.1 Preparación y generación de código de los componentes y procedimientos de carga inicial de datos | 2008-04-03 → 2008-06-13 (+71d) | 2008-04-03 → 2008-06-17 (+75d) | 1d → 17h | 0d → 15.25d | none → 46 |
| 66 | 8.2 Realización y evaluación de las pruebas de carga inicial de datos | 2008-04-03 → 2008-06-17 (+75d) | 2008-04-03 → 2008-06-20 (+78d) | 1d → 25h | 0d → 15.25d | none → 65 |
| 67 | 9. Aprobación del Sistema de Información | 2008-04-03 → 2008-07-11 (+99d) | 2008-04-03 → 2008-07-14 (+102d) | 1d → 10h |  | none → 53, 56, 59, 60, 63, 66 |

## Version 3 (saved 2008-04-09, file P1 - PGSI - version 4 - sobreasignaciones.mpp)

Note of the change: Añadido p1 gestoria

Last finish 2008-07-14 → 2008-07-30 (+16d).

Changed:

| ID | Task | Start | Finish | Duration | Total float | Predecessors | Other |
| --- | --- | --- | --- | --- | --- | --- | --- |
| 1 | **Análisis** |  | 2008-05-09 → 2008-05-28 (+19d) | 19.62d → 32.85d |  |  |  |
| 2 | **1. Definición del sistema** |  | 2008-04-21 → 2008-04-22 (+1d) | 5.12d → 6.12d |  |  |  |
| 3 | 1.1 Determinación del alcance del sistema |  |  |  |  |  | resources none → Analista [200%]; Jefe de Proyecto |
| 4 | 1.2 Identificación del entorno tecnológico | 2008-04-18 → 2008-04-21 (+3d) | 2008-04-21 → 2008-04-22 (+1d) |  |  | 3 → 3FS+1d | resources none → Analista [200%]; Jefe de Proyecto |
| 5 | **2. Establecimiento de requisitos** | 2008-04-21 → 2008-04-22 (+1d) | 2008-04-25 → 2008-05-05 (+10d) | 4.12d → 9.38d |  |  |  |
| 6 | 2.1 Obtención y análisis de requisitos | 2008-04-21 → 2008-04-22 (+1d) | 2008-04-24 → 2008-05-05 (+11d) | 25h → 75h |  |  | resources none → Analista |
| 7 | 2.2 Validación de los requisitos | 2008-04-24 → 2008-05-02 (+8d) | 2008-04-25 → 2008-05-05 (+10d) |  |  | 6 → 6FS-1d | resources none → Analista [200%] |
| 8 | **3. Identificación de Subsistemas de análisis** | 2008-04-25 → 2008-05-05 (+10d) | 2008-04-30 → 2008-05-14 (+14d) | 3.62d → 7.18d | 1.88d → 3.3d |  |  |
| 9 | 3.1 Determinación de subsistemas de análisis | 2008-04-25 → 2008-05-05 (+10d) | 2008-04-28 → 2008-05-12 (+14d) | 14h → 42.42h | 1.88d → 3.3d |  | resources none → Analista [75%]; Jefe de Proyecto [33%] |
| 10 | 3.2 Integración de subsistemas de análisis | 2008-04-29 → 2008-05-12 (+13d) | 2008-04-30 → 2008-05-14 (+14d) |  | 1.88d → 3.3d |  | resources none → Jefe de Proyecto; Analista |
| 11 | **4. Elaboración del Modelo de Datos** | 2008-04-25 → 2008-05-05 (+10d) | 2008-05-02 → 2008-05-19 (+17d) | 5.5d → 10.48d |  |  |  |
| 12 | 4.1 Elaboración del modelo conceptual y lógico de datos | 2008-04-25 → 2008-05-05 (+10d) | 2008-04-30 → 2008-05-15 (+15d) | 24h → 63.84h |  |  | resources none → Analista [50%] |
| 13 | 4.2 Normalización | 2008-04-30 → 2008-05-15 (+15d) | 2008-05-01 → 2008-05-16 (+15d) |  |  |  | resources none → Analista |
| 14 | 4.3 Especificación de necesidades de carga inicial | 2008-05-01 → 2008-05-16 (+15d) | 2008-05-02 → 2008-05-19 (+17d) |  |  |  | resources none → Analista |
| 15 | 5. Elaboración del Modelo de Procesos | 2008-04-25 → 2008-05-05 (+10d) | 2008-04-30 → 2008-05-08 (+8d) | 24h → 21.12h | 2.5d → 7.84d |  | resources none → Analista [50%] |
| 16 | **6. Definición de Interfaces de Usuario** | 2008-04-25 → 2008-05-05 (+10d) | 2008-04-29 → 2008-05-08 (+9d) | 2d → 2.6d | 3.5d → 7.88d |  |  |
| 17 | 6.1 Especificación de principios generales de la interfaz | 2008-04-25 → 2008-05-05 (+10d) | 2008-04-28 → 2008-05-07 (+9d) | 8h → 12.8h | 3.5d → 7.88d |  | resources none → Analista [25%] |
| 18 | 6.2 Identificación de perfiles y diálogos | 2008-04-28 → 2008-05-07 (+9d) | 2008-04-29 → 2008-05-08 (+9d) |  | 3.5d → 7.88d |  | resources none → Analista |
| 19 | 7. Análisis de consistencia y especificación de requisitos | 2008-05-02 → 2008-05-19 (+17d) | 2008-05-07 → 2008-05-27 (+20d) | 22h → 44h | 1d → 0.25d |  | resources none → Analista |
| 20 | **8. Especificación del Plan de Pruebas** | 2008-05-02 → 2008-05-19 (+17d) | 2008-05-08 → 2008-05-27 (+19d) | 3.75d → 5.75d |  |  |  |
| 21 | 8.1 Definición del alcance y requisitos de las pruebas | 2008-05-02 → 2008-05-19 (+17d) | 2008-05-06 → 2008-05-23 (+17d) | 16h → 32h |  |  | resources none → Jefe de Proyecto; Analista; Servicio técnico |
| 22 | 8.2 Definición de las pruebas de aceptación del sistema | 2008-05-06 → 2008-05-23 (+17d) | 2008-05-08 → 2008-05-27 (+19d) |  |  |  | resources none → Jefe de Proyecto; Analista; Servicio técnico |
| 23 | 9. Aprobación del análisis del Sistema de Información | 2008-05-08 → 2008-05-27 (+19d) | 2008-05-09 → 2008-05-28 (+19d) |  |  |  | resources none → Jefe de Proyecto |
| 24 | Fin Análisis | 2008-05-09 → 2008-05-28 (+19d) | 2008-05-09 → 2008-05-28 (+19d) |  |  |  |  |
| 25 | **Diseño** | 2008-05-09 → 2008-05-28 (+19d) | 2008-06-12 → 2008-06-30 (+18d) | 24.38d → 22.46d |  |  |  |
| 26 | 1. Definición de la Arquitectura del Sistema | 2008-05-09 → 2008-05-28 (+19d) | 2008-05-14 → 2008-06-03 (+20d) |  |  |  | resources none → Servicio técnico; Analista [200%] |
| 27 | 2. Diseño de arquitectura de soporte | 2008-05-14 → 2008-06-03 (+20d) | 2008-05-21 → 2008-06-09 (+19d) |  | 5.5d → 3.58d |  | resources none → Analista |
| 28 | **3. Diseño de arquitectura de módulos del sistema** | 2008-05-14 → 2008-06-03 (+20d) | 2008-05-29 → 2008-06-13 (+15d) | 10.25d → 8.33d |  |  |  |
| 29 | 3.1 Diseño de módulos del sistema | 2008-05-14 → 2008-06-03 (+20d) | 2008-05-22 → 2008-06-06 (+15d) | 46h → 30.67h |  |  | resources none → Analista [50%]; Jefe de Proyecto [50%] |
| 30 | 3.2 Diseño de la comunicación entre módulos | 2008-05-22 → 2008-06-06 (+15d) | 2008-05-28 → 2008-06-12 (+15d) |  |  |  | resources none → Jefe de Proyecto [50%]; Analista [50%] |
| 31 | 3.3 Revisión de la interfaz de usuario | 2008-05-28 → 2008-06-12 (+15d) | 2008-05-29 → 2008-06-13 (+15d) |  |  |  | resources none → Jefe de Proyecto; Analista |
| 32 | **4. Diseño físico de datos** | 2008-05-14 → 2008-06-03 (+20d) | 2008-05-28 → 2008-06-12 (+15d) | 9.62d → 7.44d | 0.62d → 0.9d |  |  |
| 33 | 4.1 Diseño del modelo físico de datos | 2008-05-14 → 2008-06-03 (+20d) | 2008-05-21 → 2008-06-05 (+15d) | 35h → 17.5h | 0.62d → 0.9d |  | resources none → Analista [50%]; Jefe de Proyecto [50%] |
| 34 | 4.2 Especificación de los caminos de acceso a los datos | 2008-05-21 → 2008-06-05 (+15d) | 2008-05-23 → 2008-06-09 (+17d) |  | 0.62d → 0.9d |  | resources none → Jefe de Proyecto [50%]; Analista [50%] |
| 35 | 4.3 Especificación de la distribución de datos | 2008-05-23 → 2008-06-09 (+17d) | 2008-05-28 → 2008-06-12 (+15d) |  | 0.62d → 0.9d |  | resources none → Jefe de Proyecto [50%]; Analista [50%] |
| 36 | 5. Verificación y aceptación de la arquitectura del sistema | 2008-05-29 → 2008-06-13 (+15d) | 2008-05-30 → 2008-06-16 (+17d) |  |  |  | resources none → Jefe de Proyecto; Analista [200%] |
| 37 | 6. Generación de especificaciones de construcción | 2008-05-30 → 2008-06-16 (+17d) | 2008-06-05 → 2008-06-23 (+18d) |  |  |  | resources none → Jefe de Proyecto; Analista; Servicio técnico |
| 38 | **7. Diseño de la migración y carga inicial de datos** | 2008-05-30 → 2008-06-16 (+17d) | 2008-06-11 → 2008-06-27 (+16d) |  |  |  |  |
| 39 | 7.1 Especificación del entorno de carga inicial | 2008-05-30 → 2008-06-16 (+17d) | 2008-06-03 → 2008-06-18 (+15d) |  |  |  | resources none → Servicio técnico |
| 40 | 7.2 Diseño de procedimientos de carga inicial | 2008-06-03 → 2008-06-18 (+15d) | 2008-06-06 → 2008-06-23 (+17d) |  |  |  | resources none → Jefe de Proyecto; Analista |
| 41 | 7.3 Diseño detallado de componentes de carga inicial | 2008-06-06 → 2008-06-23 (+17d) | 2008-06-11 → 2008-06-27 (+16d) |  |  |  | resources none → Jefe de Proyecto; Analista |
| 42 | 8. Especificación técnica del plan de pruebas | 2008-05-30 → 2008-06-16 (+17d) | 2008-06-03 → 2008-06-18 (+15d) |  |  |  | resources none → Jefe de Proyecto; Analista; Servicio técnico |
| 43 | **9. Establecimiento de los requisitos de implantación** | 2008-05-30 → 2008-06-16 (+17d) | 2008-06-03 → 2008-06-18 (+15d) |  |  |  |  |
| 44 | 9.1 Especificación de requisitos de documentación de usuario | 2008-05-30 → 2008-06-16 (+17d) | 2008-06-02 → 2008-06-17 (+15d) |  |  |  | resources none → Jefe de Proyecto; Analista |
| 45 | 9.2 Especificación de requisitos de implantación | 2008-05-30 → 2008-06-16 (+17d) | 2008-06-03 → 2008-06-18 (+15d) |  |  |  | resources none → Jefe de Proyecto; Servicio técnico |
| 46 | 10. Aprobación del diseño del Sistema de Información | 2008-06-12 → 2008-06-27 (+15d) | 2008-06-12 → 2008-06-30 (+18d) |  |  |  | resources none → Jefe de Proyecto |
| 47 | Fin Diseño | 2008-06-12 → 2008-06-30 (+18d) | 2008-06-12 → 2008-06-30 (+18d) |  |  |  |  |
| 48 | **Construcción** | 2008-06-13 → 2008-06-30 (+17d) | 2008-07-14 → 2008-07-30 (+16d) |  |  |  |  |
| 49 | 1. Preparación del entorno de generación y construcción | 2008-06-13 → 2008-06-30 (+17d) | 2008-06-19 → 2008-07-04 (+15d) |  |  |  | resources none → Jefe de Proyecto; Analista |
| 50 | 2. Generación del código de los componentes y procedimientos | 2008-06-19 → 2008-07-04 (+15d) | 2008-07-04 → 2008-07-21 (+17d) |  |  |  | resources none → Programador [300%] |
| 51 | **3. Ejecución de las Pruebas Unitarias** | 2008-07-04 → 2008-07-21 (+17d) | 2008-07-09 → 2008-07-25 (+16d) | 3.5d → 3.38d | 1.62d → 1.75d |  |  |
| 52 | 3.1 Preparación del entorno de pruebas unitarias | 2008-07-04 → 2008-07-21 (+17d) | 2008-07-07 → 2008-07-22 (+15d) | 11h → 3.67h | 1.62d → 1.75d |  | resources none → Programador [300%] |
| 53 | 3.2 Realización y evaluación de las pruebas unitarias | 2008-07-07 → 2008-07-22 (+15d) | 2008-07-09 → 2008-07-25 (+16d) |  | 1.62d → 1.75d |  | resources none → Programador [300%] |
| 54 | **4. Ejecución de las Pruebas de Integración** | 2008-07-04 → 2008-07-21 (+17d) | 2008-07-09 → 2008-07-25 (+16d) |  |  |  |  |
| 55 | 4.1 Preparación del entorno de las pruebas de integración | 2008-07-04 → 2008-07-21 (+17d) | 2008-07-07 → 2008-07-22 (+15d) |  |  |  | resources none → Analista |
| 56 | 4.2 Realización y evaluación del resultado de las pruebas de integración | 2008-07-07 → 2008-07-22 (+15d) | 2008-07-09 → 2008-07-25 (+16d) |  |  |  | resources none → Analista |
| 57 | **5. Ejecución de las Pruebas del Sistema** | 2008-07-04 → 2008-07-21 (+17d) | 2008-07-09 → 2008-07-23 (+14d) | 3.25d → 1.62d | 1.88d → 3.5d |  |  |
| 58 | 5.1 Preparación del entorno de las pruebas del sistema | 2008-07-04 → 2008-07-21 (+17d) | 2008-07-07 → 2008-07-22 (+15d) | 11h → 5.5h | 1.88d → 3.5d |  | resources none → Analista; Jefe de Proyecto |
| 59 | 5.2 Realización y evaluación de las pruebas del sistema | 2008-07-07 → 2008-07-22 (+15d) | 2008-07-09 → 2008-07-23 (+14d) | 15h → 7.5h | 1.88d → 3.5d |  | resources none → Analista; Jefe de Proyecto |
| 60 | 6. Elaboración de los Manuales de Usuario | 2008-07-04 → 2008-07-21 (+17d) | 2008-07-11 → 2008-07-28 (+17d) |  |  |  | resources none → Jefe de Proyecto; Analista |
| 61 | **7. Definición de la Formación de Usuarios Finales** | 2008-06-13 → 2008-06-30 (+17d) | 2008-06-20 → 2008-07-07 (+17d) |  |  |  |  |
| 62 | 7.1 Definición del esquema de formación | 2008-06-13 → 2008-06-30 (+17d) | 2008-06-18 → 2008-07-03 (+15d) |  |  |  | resources none → Analista |
| 63 | 7.2 Especificación de los recursos y entornos de formación | 2008-06-18 → 2008-07-03 (+15d) | 2008-06-20 → 2008-07-07 (+17d) |  |  |  | resources none → Analista |
| 64 | **8. Construcción de los Componentes y Procedimientos de la Carga Inicial de Datos** | 2008-06-13 → 2008-06-30 (+17d) | 2008-06-20 → 2008-07-07 (+17d) |  |  |  |  |
| 65 | 8.1 Preparación y generación de código de los componentes y procedimientos de carga inicial de datos | 2008-06-13 → 2008-06-30 (+17d) | 2008-06-17 → 2008-07-02 (+15d) |  |  |  | resources none → Jefe de Proyecto; Analista; Programador [300%] |
| 66 | 8.2 Realización y evaluación de las pruebas de carga inicial de datos | 2008-06-17 → 2008-07-02 (+15d) | 2008-06-20 → 2008-07-07 (+17d) |  |  |  | resources none → Jefe de Proyecto; Analista |
| 67 | 9. Aprobación del Sistema de Información | 2008-07-11 → 2008-07-28 (+17d) | 2008-07-14 → 2008-07-30 (+16d) |  |  |  | resources none → Jefe de Proyecto |
| 68 | Fin Proyecto | 2008-07-14 → 2008-07-30 (+16d) | 2008-07-14 → 2008-07-30 (+16d) |  |  |  |  |

## Version 4 (saved 2008-04-09, file P1 - PGSI - version 5 - sobreasignaciones arregladas por project.mpp)

Note of the change: Añadido p1 gestoria

Last finish 2008-07-30 → 2008-08-13 (+14d).

Changed:

| ID | Task | Start | Finish | Duration | Total float |
| --- | --- | --- | --- | --- | --- |
| 1 | **Análisis** |  | 2008-05-28 → 2008-05-29 (+1d) | 32.85d → 33.85d |  |
| 5 | **2. Establecimiento de requisitos** |  | 2008-05-05 → 2008-05-06 (+1d) | 9.38d → 10.38d |  |
| 7 | 2.2 Validación de los requisitos | 2008-05-02 → 2008-05-05 (+3d) | 2008-05-05 → 2008-05-06 (+1d) |  |  |
| 8 | **3. Identificación de Subsistemas de análisis** | 2008-05-05 → 2008-05-06 (+1d) | 2008-05-14 → 2008-05-15 (+1d) |  |  |
| 9 | 3.1 Determinación de subsistemas de análisis | 2008-05-05 → 2008-05-06 (+1d) | 2008-05-12 → 2008-05-13 (+1d) |  |  |
| 10 | 3.2 Integración de subsistemas de análisis | 2008-05-12 → 2008-05-13 (+1d) | 2008-05-14 → 2008-05-15 (+1d) |  |  |
| 11 | **4. Elaboración del Modelo de Datos** | 2008-05-05 → 2008-05-06 (+1d) | 2008-05-19 → 2008-05-20 (+1d) |  |  |
| 12 | 4.1 Elaboración del modelo conceptual y lógico de datos | 2008-05-05 → 2008-05-06 (+1d) | 2008-05-15 → 2008-05-16 (+1d) |  |  |
| 13 | 4.2 Normalización | 2008-05-15 → 2008-05-16 (+1d) | 2008-05-16 → 2008-05-19 (+3d) |  |  |
| 14 | 4.3 Especificación de necesidades de carga inicial | 2008-05-16 → 2008-05-19 (+3d) | 2008-05-19 → 2008-05-20 (+1d) |  |  |
| 15 | 5. Elaboración del Modelo de Procesos | 2008-05-05 → 2008-05-06 (+1d) | 2008-05-08 → 2008-05-09 (+1d) |  |  |
| 16 | **6. Definición de Interfaces de Usuario** | 2008-05-05 → 2008-05-06 (+1d) | 2008-05-08 → 2008-05-09 (+1d) | 2.6d → 3.33d | 7.88d → 7.15d |
| 17 | 6.1 Especificación de principios generales de la interfaz | 2008-05-05 → 2008-05-06 (+1d) | 2008-05-07 → 2008-05-08 (+1d) |  | 7.88d → 7.15d |
| 18 | 6.2 Identificación de perfiles y diálogos | 2008-05-07 → 2008-05-08 (+1d) | 2008-05-08 → 2008-05-09 (+1d) |  | 7.88d → 7.15d |
| 19 | 7. Análisis de consistencia y especificación de requisitos | 2008-05-19 → 2008-05-20 (+1d) | 2008-05-27 → 2008-05-28 (+1d) |  |  |
| 20 | **8. Especificación del Plan de Pruebas** | 2008-05-19 → 2008-05-20 (+1d) | 2008-05-27 → 2008-05-28 (+1d) |  |  |
| 21 | 8.1 Definición del alcance y requisitos de las pruebas | 2008-05-19 → 2008-05-20 (+1d) | 2008-05-23 → 2008-05-26 (+3d) |  |  |
| 22 | 8.2 Definición de las pruebas de aceptación del sistema | 2008-05-23 → 2008-05-26 (+3d) | 2008-05-27 → 2008-05-28 (+1d) |  |  |
| 23 | 9. Aprobación del análisis del Sistema de Información | 2008-05-27 → 2008-05-28 (+1d) | 2008-05-28 → 2008-05-29 (+1d) |  |  |
| 24 | Fin Análisis | 2008-05-28 → 2008-05-29 (+1d) | 2008-05-28 → 2008-05-29 (+1d) |  |  |
| 25 | **Diseño** | 2008-05-28 → 2008-05-29 (+1d) | 2008-06-30 → 2008-07-10 (+10d) | 22.46d → 30.06d |  |
| 26 | 1. Definición de la Arquitectura del Sistema | 2008-05-28 → 2008-05-29 (+1d) | 2008-06-03 → 2008-06-04 (+1d) |  |  |
| 27 | 2. Diseño de arquitectura de soporte | 2008-06-03 → 2008-06-04 (+1d) | 2008-06-09 → 2008-06-10 (+1d) |  | 3.58d → 3.69d |
| 28 | **3. Diseño de arquitectura de módulos del sistema** | 2008-06-03 → 2008-06-04 (+1d) | 2008-06-13 → 2008-06-16 (+3d) |  | 0d → 0.1d |
| 29 | 3.1 Diseño de módulos del sistema | 2008-06-03 → 2008-06-04 (+1d) | 2008-06-06 → 2008-06-09 (+3d) |  | 0d → 0.1d |
| 30 | 3.2 Diseño de la comunicación entre módulos | 2008-06-06 → 2008-06-09 (+3d) | 2008-06-12 → 2008-06-13 (+1d) |  | 0d → 0.1d |
| 31 | 3.3 Revisión de la interfaz de usuario | 2008-06-12 → 2008-06-13 (+1d) | 2008-06-13 → 2008-06-16 (+3d) |  | 0d → 0.1d |
| 32 | **4. Diseño físico de datos** | 2008-06-03 → 2008-06-04 (+1d) | 2008-06-12 → 2008-06-16 (+4d) | 7.44d → 8.44d | 0.9d → 0d |
| 33 | 4.1 Diseño del modelo físico de datos | 2008-06-03 → 2008-06-04 (+1d) | 2008-06-05 → 2008-06-06 (+1d) |  | 0.9d → 0d |
| 34 | 4.2 Especificación de los caminos de acceso a los datos | 2008-06-05 → 2008-06-06 (+1d) | 2008-06-09 → 2008-06-10 (+1d) |  | 0.9d → 0d |
| 35 | 4.3 Especificación de la distribución de datos | 2008-06-09 → 2008-06-10 (+1d) | 2008-06-12 → 2008-06-16 (+4d) | 26h → 26.83h | 0.9d → 0d |
| 36 | 5. Verificación y aceptación de la arquitectura del sistema | 2008-06-13 → 2008-06-16 (+3d) | 2008-06-16 → 2008-06-17 (+1d) |  |  |
| 37 | 6. Generación de especificaciones de construcción | 2008-06-16 → 2008-06-17 (+1d) | 2008-06-23 → 2008-06-27 (+4d) | 37h → 57h | 4.25d → 8.38d |
| 38 | **7. Diseño de la migración y carga inicial de datos** | 2008-06-16 → 2008-06-17 (+1d) | 2008-06-27 → 2008-07-07 (+10d) | 8.88d → 14.38d | 0d → 2d |
| 39 | 7.1 Especificación del entorno de carga inicial | 2008-06-16 → 2008-06-17 (+1d) | 2008-06-18 → 2008-06-19 (+1d) |  | 0d → 2d |
| 40 | 7.2 Diseño de procedimientos de carga inicial | 2008-06-18 → 2008-06-19 (+1d) | 2008-06-23 → 2008-07-02 (+9d) | 27h → 34h | 0d → 2d |
| 41 | 7.3 Diseño detallado de componentes de carga inicial | 2008-06-23 → 2008-07-02 (+9d) | 2008-06-27 → 2008-07-07 (+10d) |  | 0d → 2d |
| 42 | 8. Especificación técnica del plan de pruebas | 2008-06-16 → 2008-06-17 (+1d) | 2008-06-18 → 2008-06-30 (+12d) | 16h → 32h | 6.88d → 7.25d |
| 43 | **9. Establecimiento de los requisitos de implantación** | 2008-06-16 → 2008-06-19 (+3d) | 2008-06-18 → 2008-07-09 (+21d) | 2d → 14.38d | 6.88d → 0d |
| 44 | 9.1 Especificación de requisitos de documentación de usuario | 2008-06-16 → 2008-06-19 (+3d) | 2008-06-17 → 2008-07-01 (+14d) | 8h → 16h | 7.88d → 6.25d |
| 45 | 9.2 Especificación de requisitos de implantación | 2008-06-16 → 2008-07-07 (+21d) | 2008-06-18 → 2008-07-09 (+21d) |  | 6.88d → 0d |
| 46 | 10. Aprobación del diseño del Sistema de Información | 2008-06-27 → 2008-07-09 (+12d) | 2008-06-30 → 2008-07-10 (+10d) |  |  |
| 47 | Fin Diseño | 2008-06-30 → 2008-07-10 (+10d) | 2008-06-30 → 2008-07-10 (+10d) |  |  |
| 48 | **Construcción** | 2008-06-30 → 2008-07-10 (+10d) | 2008-07-30 → 2008-08-13 (+14d) | 21.75d → 23.38d |  |
| 49 | 1. Preparación del entorno de generación y construcción | 2008-06-30 → 2008-07-10 (+10d) | 2008-07-04 → 2008-07-17 (+13d) |  |  |
| 50 | 2. Generación del código de los componentes y procedimientos | 2008-07-04 → 2008-07-17 (+13d) | 2008-07-21 → 2008-08-01 (+11d) |  |  |
| 51 | **3. Ejecución de las Pruebas Unitarias** | 2008-07-21 → 2008-08-01 (+11d) | 2008-07-25 → 2008-08-12 (+18d) | 3.38d → 6.75d | 1.75d → 0d |
| 52 | 3.1 Preparación del entorno de pruebas unitarias | 2008-07-21 → 2008-08-01 (+11d) | 2008-07-22 → 2008-08-01 (+10d) |  | 1.75d → 0d |
| 53 | 3.2 Realización y evaluación de las pruebas unitarias | 2008-07-22 → 2008-08-07 (+16d) | 2008-07-25 → 2008-08-12 (+18d) |  | 1.75d → 0d |
| 54 | **4. Ejecución de las Pruebas de Integración** | 2008-07-21 → 2008-08-01 (+11d) | 2008-07-25 → 2008-08-12 (+18d) | 3.38d → 6.75d | 1.75d → 0d |
| 55 | 4.1 Preparación del entorno de las pruebas de integración | 2008-07-21 → 2008-08-01 (+11d) | 2008-07-22 → 2008-08-04 (+13d) |  | 1.75d → 0d |
| 56 | 4.2 Realización y evaluación del resultado de las pruebas de integración | 2008-07-22 → 2008-08-07 (+16d) | 2008-07-25 → 2008-08-12 (+18d) |  | 1.75d → 0d |
| 57 | **5. Ejecución de las Pruebas del Sistema** | 2008-07-21 → 2008-08-01 (+11d) | 2008-07-23 → 2008-08-12 (+20d) | 1.62d → 6.75d | 3.5d → 0d |
| 58 | 5.1 Preparación del entorno de las pruebas del sistema | 2008-07-21 → 2008-08-01 (+11d) | 2008-07-22 → 2008-08-01 (+10d) |  | 3.5d → 0d |
| 59 | 5.2 Realización y evaluación de las pruebas del sistema | 2008-07-22 → 2008-08-04 (+13d) | 2008-07-23 → 2008-08-12 (+20d) | 7.5h → 15h | 3.5d → 0d |
| 60 | 6. Elaboración de los Manuales de Usuario | 2008-07-21 → 2008-08-01 (+11d) | 2008-07-28 → 2008-08-11 (+14d) | 41h → 41.66h | 0d → 0.94d |
| 61 | **7. Definición de la Formación de Usuarios Finales** | 2008-06-30 → 2008-07-10 (+10d) | 2008-07-07 → 2008-07-22 (+15d) | 5.38d → 7.42d | 15.12d → 14.71d |
| 62 | 7.1 Definición del esquema de formación | 2008-06-30 → 2008-07-10 (+10d) | 2008-07-03 → 2008-07-18 (+15d) |  | 15.12d → 14.71d |
| 63 | 7.2 Especificación de los recursos y entornos de formación | 2008-07-03 → 2008-07-18 (+15d) | 2008-07-07 → 2008-07-22 (+15d) |  | 15.12d → 14.71d |
| 64 | **8. Construcción de los Componentes y Procedimientos de la Carga Inicial de Datos** | 2008-06-30 → 2008-07-10 (+10d) | 2008-07-07 → 2008-07-24 (+17d) | 5.25d → 9.75d | 15.25d → 12.38d |
| 65 | 8.1 Preparación y generación de código de los componentes y procedimientos de carga inicial de datos | 2008-06-30 → 2008-07-10 (+10d) | 2008-07-02 → 2008-07-21 (+19d) | 17h → 34h | 15.25d → 12.38d |
| 66 | 8.2 Realización y evaluación de las pruebas de carga inicial de datos | 2008-07-02 → 2008-07-21 (+19d) | 2008-07-07 → 2008-07-24 (+17d) |  | 15.25d → 12.38d |
| 67 | 9. Aprobación del Sistema de Información | 2008-07-28 → 2008-08-12 (+15d) | 2008-07-30 → 2008-08-13 (+14d) |  |  |
| 68 | Fin Proyecto | 2008-07-30 → 2008-08-13 (+14d) | 2008-07-30 → 2008-08-13 (+14d) |  |  |

## Version 5 (saved 2008-04-14, file P1 - PGSI - version 7-Delimitaciones.mpp)

Note of the change: Añadido p1 gestoria

Last finish 2008-08-13 → 2008-08-18 (+5d).

Changed:

| ID | Task | Start | Finish | Duration | Total float | Other |
| --- | --- | --- | --- | --- | --- | --- |
| 28 | **3. Diseño de arquitectura de módulos del sistema** |  |  | 8.33d → 8.39d | 0.1d → -0.5d |  |
| 30 | 3.2 Diseño de la comunicación entre módulos | 2008-06-09 → 2008-06-10 (+1d) |  |  | 0.1d → -0.5d | constraint none → start no earlier than 2008-06-10 |
| 48 | **Construcción** |  | 2008-08-13 → 2008-08-18 (+5d) | 23.38d → 26.31d | 0d → -0.54d |  |
| 51 | **3. Ejecución de las Pruebas Unitarias** |  | 2008-08-12 → 2008-08-14 (+2d) | 6.75d → 9.69d |  |  |
| 53 | 3.2 Realización y evaluación de las pruebas unitarias | 2008-08-07 → 2008-08-12 (+5d) | 2008-08-12 → 2008-08-14 (+2d) |  |  |  |
| 54 | **4. Ejecución de las Pruebas de Integración** |  | 2008-08-12 → 2008-08-14 (+2d) | 6.75d → 9.69d |  |  |
| 55 | 4.1 Preparación del entorno de las pruebas de integración |  | 2008-08-04 → 2008-08-05 (+1d) | 10h → 20h |  | resources Analista → Analista [50%] |
| 56 | 4.2 Realización y evaluación del resultado de las pruebas de integración | 2008-08-07 → 2008-08-12 (+5d) | 2008-08-12 → 2008-08-14 (+2d) |  |  |  |
| 57 | **5. Ejecución de las Pruebas del Sistema** |  | 2008-08-12 → 2008-08-14 (+2d) | 6.75d → 9.69d |  |  |
| 58 | 5.1 Preparación del entorno de las pruebas del sistema |  | 2008-08-01 → 2008-08-04 (+3d) | 5.5h → 11h |  | resources Analista; Jefe de Proyecto → Analista [50%]; Jefe de Proyecto |
| 59 | 5.2 Realización y evaluación de las pruebas del sistema | 2008-08-04 → 2008-08-07 (+3d) | 2008-08-12 → 2008-08-14 (+2d) |  |  |  |
| 61 | **7. Definición de la Formación de Usuarios Finales** |  | 2008-07-22 → 2008-07-25 (+3d) | 7.42d → 10.67d | 14.71d → 14.39d |  |
| 62 | 7.1 Definición del esquema de formación |  | 2008-07-18 → 2008-07-23 (+5d) | 26h → 52h | 14.71d → 14.39d | resources Analista → Analista [50%] |
| 63 | 7.2 Especificación de los recursos y entornos de formación | 2008-07-18 → 2008-07-23 (+5d) | 2008-07-22 → 2008-07-25 (+3d) |  | 14.71d → 14.39d |  |
| 64 | **8. Construcción de los Componentes y Procedimientos de la Carga Inicial de Datos** |  |  | 9.75d → 9.21d | 12.38d → -0.54d |  |
| 65 | 8.1 Preparación y generación de código de los componentes y procedimientos de carga inicial de datos |  |  | 34h → 51h | 12.38d → -0.54d | resources Jefe de Proyecto; Analista; Programador [300%] → Jefe de Proyecto; Analista [50%]; Programador [300%] |
| 66 | 8.2 Realización y evaluación de las pruebas de carga inicial de datos | 2008-07-21 → 2008-07-20 (-1d) |  |  | 12.38d → -0.54d | constraint none → must start on 2008-07-20 |
| 67 | 9. Aprobación del Sistema de Información | 2008-08-12 → 2008-08-14 (+2d) | 2008-08-13 → 2008-08-18 (+5d) |  |  |  |
| 68 | Fin Proyecto | 2008-08-13 → 2008-08-18 (+5d) | 2008-08-13 → 2008-08-18 (+5d) |  |  |  |

## Version 6 (data date 2008-06-02, saved 2008-04-15, file P1 - PGSI con linea base (seguimiento).mpp)

Note of the change: Añadido p1 gestoria

Last finish 2008-08-18 → 2008-08-22 (+4d). Complete tasks 0 → 17.

Changed:

| ID | Task | Start | Finish | Duration | Complete | Total float | Other |
| --- | --- | --- | --- | --- | --- | --- | --- |
| 1 | **Análisis** | 2008-04-14 A | 2008-05-29 A | 33.85d → 32.6d | 0% → 100% | 0d → none | baseline start none → 2008-04-14; baseline finish none → 2008-05-29 |
| 2 | **1. Definición del sistema** | 2008-04-14 A | 2008-04-22 A |  | 0% → 100% | 0d → none | baseline start none → 2008-04-14; baseline finish none → 2008-04-22 |
| 3 | 1.1 Determinación del alcance del sistema | 2008-04-14 A | 2008-04-18 A | 33h → 34h | 0% → 100% | 0d → none | baseline start none → 2008-04-14; baseline finish none → 2008-04-18 |
| 4 | 1.2 Identificación del entorno tecnológico | 2008-04-21 A | 2008-04-22 A |  | 0% → 100% | 0d → none | baseline start none → 2008-04-21; baseline finish none → 2008-04-22 |
| 5 | **2. Establecimiento de requisitos** | 2008-04-22 A | 2008-05-06 A | 10.38d → 9.38d | 0% → 100% | 0d → none | baseline start none → 2008-04-22; baseline finish none → 2008-05-06 |
| 6 | 2.1 Obtención y análisis de requisitos | 2008-04-22 A | 2008-05-05 → 2008-05-06 A (+1d) | 75h → 74h | 0% → 100% | 0d → none | resources Analista → Analista [114.3%]; baseline start none → 2008-04-22; baseline finish none → 2008-05-06 |
| 7 | 2.2 Validación de los requisitos | 2008-05-05 A | 2008-05-06 A |  | 0% → 100% | 0d → none | baseline start none → 2008-05-05; baseline finish none → 2008-05-06 |
| 8 | **3. Identificación de Subsistemas de análisis** | 2008-05-06 A | 2008-05-15 A | 7.18d → 7.3d | 0% → 100% | 3.3d → none | baseline start none → 2008-05-06; baseline finish none → 2008-05-15 |
| 9 | 3.1 Determinación de subsistemas de análisis | 2008-05-06 A | 2008-05-13 A |  | 0% → 100% | 3.3d → none | baseline start none → 2008-05-06; baseline finish none → 2008-05-13 |
| 10 | 3.2 Integración de subsistemas de análisis | 2008-05-13 A | 2008-05-15 A |  | 0% → 100% | 3.3d → none | baseline start none → 2008-05-13; baseline finish none → 2008-05-15 |
| 11 | **4. Elaboración del Modelo de Datos** | 2008-05-06 A | 2008-05-20 A | 10.48d → 10.23d | 0% → 100% | 0d → none | baseline start none → 2008-05-06; baseline finish none → 2008-05-20 |
| 12 | 4.1 Elaboración del modelo conceptual y lógico de datos | 2008-05-06 A | 2008-05-16 A |  | 0% → 100% | 0d → none | baseline start none → 2008-05-06; baseline finish none → 2008-05-16 |
| 13 | 4.2 Normalización | 2008-05-16 A | 2008-05-19 A | 10h → 8h | 0% → 100% | 0d → none | baseline start none → 2008-05-16; baseline finish none → 2008-05-19 |
| 14 | 4.3 Especificación de necesidades de carga inicial | 2008-05-19 A | 2008-05-20 A |  | 0% → 100% | 0d → none | baseline start none → 2008-05-19; baseline finish none → 2008-05-20 |
| 15 | 5. Elaboración del Modelo de Procesos | 2008-05-06 A | 2008-05-09 A |  | 0% → 100% | 7.84d → none | baseline start none → 2008-05-06; baseline finish none → 2008-05-09 |
| 16 | **6. Definición de Interfaces de Usuario** | 2008-05-06 A | 2008-05-09 A | 3.33d → 2.6d | 0% → 100% | 7.15d → none | baseline start none → 2008-05-06; baseline finish none → 2008-05-09 |
| 17 | 6.1 Especificación de principios generales de la interfaz | 2008-05-06 A | 2008-05-08 A |  | 0% → 100% | 7.15d → none | baseline start none → 2008-05-06; baseline finish none → 2008-05-08 |
| 18 | 6.2 Identificación de perfiles y diálogos | 2008-05-08 A | 2008-05-09 A |  | 0% → 100% | 7.15d → none | baseline start none → 2008-05-08; baseline finish none → 2008-05-09 |
| 19 | 7. Análisis de consistencia y especificación de requisitos | 2008-05-20 A | 2008-05-28 A |  | 0% → 100% | -0.29d → none | baseline start none → 2008-05-20; baseline finish none → 2008-05-28 |
| 20 | **8. Especificación del Plan de Pruebas** | 2008-05-20 A | 2008-05-28 A |  | 0% → 100% | 0d → none | baseline start none → 2008-05-20; baseline finish none → 2008-05-28 |
| 21 | 8.1 Definición del alcance y requisitos de las pruebas | 2008-05-20 A | 2008-05-26 A |  | 0% → 100% | 0d → none | baseline start none → 2008-05-20; baseline finish none → 2008-05-26 |
| 22 | 8.2 Definición de las pruebas de aceptación del sistema | 2008-05-26 A | 2008-05-28 A |  | 0% → 100% | 0d → none | baseline start none → 2008-05-26; baseline finish none → 2008-05-28 |
| 23 | 9. Aprobación del análisis del Sistema de Información | 2008-05-28 A | 2008-05-29 A |  | 0% → 100% | 0d → none | baseline start none → 2008-05-28; baseline finish none → 2008-05-29 |
| 24 | Fin Análisis | 2008-05-29 A | 2008-05-29 A |  | 0% → 100% | 0d → none | baseline start none → 2008-05-29; baseline finish none → 2008-05-29 |
| 25 | **Diseño** | 2008-05-29 A | 2008-07-10 → 2008-07-15 (+5d) | 30.06d → 32.46d | 0% → 2% | -0.54d → 0d | baseline start none → 2008-05-29; baseline finish none → 2008-07-11 |
| 26 | 1. Definición de la Arquitectura del Sistema | 2008-05-29 A | 2008-06-04 → 2008-06-05 (+1d) | 26h → 40h | 0% → 28% | 0d → 2.12d | baseline start none → 2008-05-29; baseline finish none → 2008-06-04 |
| 27 | 2. Diseño de arquitectura de soporte | 2008-06-04 → 2008-06-05 (+1d) | 2008-06-10 → 2008-06-12 (+2d) |  |  | 3.69d → 5.83d | baseline start none → 2008-06-04; baseline finish none → 2008-06-10 |
| 28 | **3. Diseño de arquitectura de módulos del sistema** | 2008-06-04 → 2008-06-05 (+1d) | 2008-06-16 → 2008-06-18 (+2d) | 8.39d → 8.58d |  | -0.5d → 2d | baseline start none → 2008-06-04; baseline finish none → 2008-06-16 |
| 29 | 3.1 Diseño de módulos del sistema | 2008-06-04 → 2008-06-05 (+1d) | 2008-06-09 → 2008-06-11 (+2d) | 30.67h → 34.67h |  | -0.44d → 1.88d | baseline start none → 2008-06-04; baseline finish none → 2008-06-10 |
| 30 | 3.2 Diseño de la comunicación entre módulos | 2008-06-10 → 2008-06-11 (+1d) | 2008-06-13 → 2008-06-17 (+4d) | 28h → 32h |  | -0.5d → 1.88d | constraint start no earlier than 2008-06-10 → none; baseline start none → 2008-06-10; baseline finish none → 2008-06-13 |
| 31 | 3.3 Revisión de la interfaz de usuario | 2008-06-13 → 2008-06-17 (+4d) | 2008-06-16 → 2008-06-18 (+2d) |  |  | -0.5d → 2d | baseline start none → 2008-06-13; baseline finish none → 2008-06-16 |
| 32 | **4. Diseño físico de datos** | 2008-06-04 → 2008-06-05 (+1d) | 2008-06-16 → 2008-06-17 (+1d) | 8.44d → 7.69d |  | 0d → 2.9d | baseline start none → 2008-06-04; baseline finish none → 2008-06-13 |
| 33 | 4.1 Diseño del modelo físico de datos | 2008-06-04 → 2008-06-05 (+1d) | 2008-06-06 → 2008-06-09 (+3d) | 17.5h → 21.5h |  | 0d → 2.9d | baseline start none → 2008-06-04; baseline finish none → 2008-06-06 |
| 34 | 4.2 Especificación de los caminos de acceso a los datos | 2008-06-06 → 2008-06-09 (+3d) | 2008-06-10 → 2008-06-11 (+1d) |  |  | 0d → 2.9d | baseline start none → 2008-06-06; baseline finish none → 2008-06-10 |
| 35 | 4.3 Especificación de la distribución de datos | 2008-06-10 → 2008-06-11 (+1d) | 2008-06-16 → 2008-06-17 (+1d) | 26.83h → 30h |  | 0d → 2.9d | baseline start none → 2008-06-10; baseline finish none → 2008-06-13 |
| 36 | 5. Verificación y aceptación de la arquitectura del sistema | 2008-06-16 → 2008-06-18 (+2d) | 2008-06-17 → 2008-06-19 (+2d) |  |  | 0d → 2d | baseline start none → 2008-06-17; baseline finish none → 2008-06-17 |
| 37 | 6. Generación de especificaciones de construcción | 2008-06-17 → 2008-06-19 (+2d) | 2008-06-27 → 2008-07-04 (+7d) | 57h → 72h |  | 7.83d → 5.5d | baseline start none → 2008-06-18; baseline finish none → 2008-07-03 |
| 38 | **7. Diseño de la migración y carga inicial de datos** | 2008-06-17 → 2008-06-19 (+2d) | 2008-07-07 → 2008-07-09 (+2d) | 14.38d → 14.5d |  | 2d → 2.25d | baseline start none → 2008-06-18; baseline finish none → 2008-07-08 |
| 39 | 7.1 Especificación del entorno de carga inicial | 2008-06-17 → 2008-06-19 (+2d) | 2008-06-19 → 2008-06-23 (+4d) |  |  | 2d → 2.25d | baseline start none → 2008-06-18; baseline finish none → 2008-06-20 |
| 40 | 7.2 Diseño de procedimientos de carga inicial | 2008-06-19 → 2008-06-23 (+4d) | 2008-07-02 → 2008-06-26 (-6d) | 34h → 27h |  | 2d → 2.25d | baseline start none → 2008-06-20; baseline finish none → 2008-06-25 |
| 41 | 7.3 Diseño detallado de componentes de carga inicial | 2008-07-02 → 2008-06-26 (-6d) | 2008-07-07 → 2008-07-09 (+2d) | 27h → 54h |  | 2d → 2.38d | baseline start none → 2008-06-25; baseline finish none → 2008-07-08 |
| 42 | 8. Especificación técnica del plan de pruebas | 2008-06-17 → 2008-06-19 (+2d) | 2008-06-30 → 2008-06-23 (-7d) | 32h → 20h |  | 7.25d → 14.75d | baseline start none → 2008-06-18; baseline finish none → 2008-06-19 |
| 43 | **9. Establecimiento de los requisitos de implantación** | 2008-06-19 A | 2008-07-09 → 2008-07-14 (+5d) | 14.38d → 16.88d |  |  | baseline start none → 2008-06-18; baseline finish none → 2008-07-10 |
| 44 | 9.1 Especificación de requisitos de documentación de usuario |  |  |  |  | 6.25d → 9d | baseline start none → 2008-06-18; baseline finish none → 2008-06-27 |
| 45 | 9.2 Especificación de requisitos de implantación | 2008-07-07 → 2008-07-09 A (+2d) | 2008-07-09 → 2008-07-14 (+5d) |  |  |  | baseline start none → 2008-07-08; baseline finish none → 2008-07-10 |
| 46 | 10. Aprobación del diseño del Sistema de Información | 2008-07-09 → 2008-07-14 (+5d) | 2008-07-10 → 2008-07-15 (+5d) |  |  |  | baseline start none → 2008-07-10; baseline finish none → 2008-07-11 |
| 47 | Fin Diseño | 2008-07-10 → 2008-07-15 (+5d) | 2008-07-10 → 2008-07-15 (+5d) |  |  |  | baseline start none → 2008-07-11; baseline finish none → 2008-07-11 |
| 48 | **Construcción** | 2008-07-10 → 2008-07-15 (+5d) | 2008-08-18 → 2008-08-22 (+4d) | 26.31d → 22.94d |  | -0.54d → 0d | baseline start none → 2008-07-11; baseline finish none → 2008-08-14 |
| 49 | 1. Preparación del entorno de generación y construcción | 2008-07-10 → 2008-07-15 (+5d) | 2008-07-17 → 2008-07-21 (+4d) | 36h → 40h |  |  | baseline start none → 2008-07-11; baseline finish none → 2008-07-18 |
| 50 | 2. Generación del código de los componentes y procedimientos | 2008-07-17 → 2008-07-21 (+4d) | 2008-08-01 → 2008-08-05 (+4d) |  |  |  | baseline start none → 2008-07-18; baseline finish none → 2008-08-04 |
| 51 | **3. Ejecución de las Pruebas Unitarias** | 2008-08-01 → 2008-08-05 (+4d) |  | 9.69d → 6.88d |  |  | baseline start none → 2008-08-04; baseline finish none → 2008-08-12 |
| 52 | 3.1 Preparación del entorno de pruebas unitarias | 2008-08-01 → 2008-08-05 (+4d) | 2008-08-01 → 2008-08-06 (+5d) |  |  |  | baseline start none → 2008-08-04; baseline finish none → 2008-08-04 |
| 53 | 3.2 Realización y evaluación de las pruebas unitarias |  |  |  |  |  | baseline start none → 2008-08-08; baseline finish none → 2008-08-12 |
| 54 | **4. Ejecución de las Pruebas de Integración** | 2008-08-01 → 2008-08-05 (+4d) |  | 9.69d → 6.88d |  |  | baseline start none → 2008-08-04; baseline finish none → 2008-08-12 |
| 55 | 4.1 Preparación del entorno de las pruebas de integración | 2008-08-01 → 2008-08-05 (+4d) | 2008-08-05 → 2008-08-06 (+1d) | 20h → 10h |  |  | resources Analista [50%] → Analista; baseline start none → 2008-08-04; baseline finish none → 2008-08-05 |
| 56 | 4.2 Realización y evaluación del resultado de las pruebas de integración |  |  |  |  |  | baseline start none → 2008-08-08; baseline finish none → 2008-08-12 |
| 57 | **5. Ejecución de las Pruebas del Sistema** | 2008-08-01 → 2008-08-05 (+4d) |  | 9.69d → 6.88d |  |  | baseline start none → 2008-08-04; baseline finish none → 2008-08-12 |
| 58 | 5.1 Preparación del entorno de las pruebas del sistema | 2008-08-01 → 2008-08-05 (+4d) | 2008-08-04 → 2008-08-06 (+2d) | 11h → 5.5h |  |  | resources Analista [50%]; Jefe de Proyecto → Analista; Jefe de Proyecto; baseline start none → 2008-08-04; baseline finish none → 2008-08-04 |
| 59 | 5.2 Realización y evaluación de las pruebas del sistema | 2008-08-07 → 2008-08-06 (-1d) |  |  |  |  | baseline start none → 2008-08-04; baseline finish none → 2008-08-12 |
| 60 | 6. Elaboración de los Manuales de Usuario | 2008-08-01 → 2008-08-05 (+4d) | 2008-08-11 → 2008-08-13 (+2d) | 41.66h → 50.5h |  |  | baseline start none → 2008-08-04; baseline finish none → 2008-08-12 |
| 61 | **7. Definición de la Formación de Usuarios Finales** | 2008-07-10 → 2008-07-15 (+5d) | 2008-07-25 → 2008-07-22 (-3d) | 10.67d → 5.38d |  | 14.39d → 17d | baseline start none → 2008-07-11; baseline finish none → 2008-07-18 |
| 62 | 7.1 Definición del esquema de formación | 2008-07-10 → 2008-07-15 (+5d) | 2008-07-23 → 2008-07-18 (-5d) | 52h → 26h |  | 14.39d → 17d | resources Analista [50%] → Analista; baseline start none → 2008-07-11; baseline finish none → 2008-07-16 |
| 63 | 7.2 Especificación de los recursos y entornos de formación | 2008-07-23 → 2008-07-18 (-5d) | 2008-07-25 → 2008-07-22 (-3d) |  |  | 14.39d → 17d | baseline start none → 2008-07-16; baseline finish none → 2008-07-18 |
| 64 | **8. Construcción de los Componentes y Procedimientos de la Carga Inicial de Datos** | 2008-07-10 → 2008-07-15 (+5d) | 2008-07-24 → 2008-07-29 (+5d) | 9.21d → 9.88d |  | -0.54d → 12.38d | baseline start none → 2008-07-11; baseline finish none → 2008-07-25 |
| 65 | 8.1 Preparación y generación de código de los componentes y procedimientos de carga inicial de datos | 2008-07-10 → 2008-07-15 (+5d) | 2008-07-21 → 2008-07-23 (+2d) | 51h → 34h |  | -0.54d → 12.38d | resources Jefe de Proyecto; Analista [50%]; Programador [300%] → Jefe de Proyecto; Analista; Programador [300%]; baseline start none → 2008-07-11; baseline finish none → 2008-07-22 |
| 66 | 8.2 Realización y evaluación de las pruebas de carga inicial de datos | 2008-07-20 → 2008-07-23 (+3d) | 2008-07-24 → 2008-07-29 (+5d) | 25h → 29h |  | -0.54d → 12.38d | constraint must start on 2008-07-20 → none; baseline start none → 2008-07-22; baseline finish none → 2008-07-25 |
| 67 | 9. Aprobación del Sistema de Información |  | 2008-08-18 → 2008-08-22 (+4d) |  |  |  | baseline start none → 2008-08-13; baseline finish none → 2008-08-14 |
| 68 | Fin Proyecto | 2008-08-18 → 2008-08-22 (+4d) | 2008-08-18 → 2008-08-22 (+4d) |  |  |  | baseline start none → 2008-08-14; baseline finish none → 2008-08-14 |
