# p1

How a schedule from MS Project changed from version to version. A marks actual dates.

## Version 1 (saved 2010-04-23, file p1.mpp)

Note of the change: Extraido contenido del rar para grafos y modificado el p1.mpp

| ID | WBS | Task | Duration | Start | Finish | Predecessors | Total float | Constraint |
| --- | --- | --- | --- | --- | --- | --- | --- | --- |
| 1 | 1 | **Análisis** | 6d? | 2010-05-03 | 2010-05-10 |  | 0d |  |
| 2 |  | Definición del sistema | 1d? | 2010-05-03 | 2010-05-03 |  | 0d |  |
| 3 |  | Establecimiento de requisitos | 1d? | 2010-05-04 | 2010-05-04 | 2 | 0d |  |
| 4 |  | Identificación de subsistemas | 1d? | 2010-05-05 | 2010-05-05 | 3 | 0d |  |
| 5 | 1.4 | **Elaboración del modelo de datos** | 3d? | 2010-05-05 | 2010-05-07 | 4SS | 0d |  |
| 6 |  | Elaboración de modelo conceptual y lógica de datos | 1d? | 2010-05-05 | 2010-05-05 |  | 0d |  |
| 7 |  | Normalización | 1d? | 2010-05-06 | 2010-05-06 | 6 | 0d |  |
| 8 |  | Especificación de necesidades de carga inicial | 1d? | 2010-05-07 | 2010-05-07 | 7 | 0d |  |
| 9 |  | Elaboración del modelo de procesos | 1d? | 2010-05-05 | 2010-05-05 | 5SS | 2d |  |
| 10 |  | Definición de interfaz de usuario | 1d? | 2010-05-05 | 2010-05-05 | 9SS | 2d |  |
| 11 |  | Análisis de consistencia y especificación de requisitos | 1d? | 2010-05-10 | 2010-05-10 | 10, 9, 5, 4 | 0d |  |
| 12 |  | Especificación de plan de pruebas | 1d? | 2010-05-10 | 2010-05-10 | 5, 10, 9, 4 | 0d |  |
| 13 |  | Aprobación del análisis del SI | 0d | 2010-05-10 | 2010-05-10 | 12, 11 | 0d |  |
| 14 | 2 | **Diseño** | 6d? | 2010-05-11 | 2010-05-18 | 1 | 0d |  |
| 15 |  | Definición de la arquitectura del sistema | 1d? | 2010-05-11 | 2010-05-11 |  | 0d |  |
| 16 |  | Diseño de la arquitectura de soporte | 1d? | 2010-05-12 | 2010-05-12 | 15 | 0d |  |
| 17 | 2.3 | **Diseño de la arquitectura de módulos de sistema** | 3d? | 2010-05-12 | 2010-05-14 | 16SS | 0d |  |
| 18 |  | Diseño de módulos del sistema | 1d? | 2010-05-12 | 2010-05-12 |  | 0d |  |
| 19 |  | Diseño de comucación entre módulos | 1d? | 2010-05-13 | 2010-05-13 | 18 | 0d |  |
| 20 |  | Revisión de la interfaz de usuario | 1d? | 2010-05-14 | 2010-05-14 | 19 | 0d |  |
| 21 | 2.4 | **Diseño físico de datos** | 3d? | 2010-05-12 | 2010-05-14 | 17SS | 0d |  |
| 22 |  | Diseño del modelo físico de datos | 1d? | 2010-05-12 | 2010-05-12 |  | 0d |  |
| 23 |  | Especificación de los caminos de acceso a los datos | 1d? | 2010-05-13 | 2010-05-13 | 22 | 0d |  |
| 24 |  | Especificación de la distribución de datos | 1d? | 2010-05-14 | 2010-05-14 | 23 | 0d |  |
| 25 |  | Verificación y aceptación de la arquitectura del sistema | 1d? | 2010-05-17 | 2010-05-17 | 21, 17, 16 | 0d |  |
| 26 |  | Generación y especificación de construcción | 1d? | 2010-05-18 | 2010-05-18 | 25 | 0d |  |
| 27 |  | Diseño de migración y carga inicial de datos | 1d? | 2010-05-18 | 2010-05-18 | 26SS | 0d |  |
| 28 |  | Especificación técnica del plan de prueba | 1d? | 2010-05-18 | 2010-05-18 | 27SS | 0d |  |
| 29 |  | Establecimiento de requisitos de implantación | 1d? | 2010-05-18 | 2010-05-18 | 28SS | 0d |  |
| 30 |  | Aprobación del diseño y SI | 0d | 2010-05-18 | 2010-05-18 | 29, 28, 27, 26 | 0d |  |
| 31 | 3 | **Implementación** | 2d? | 2010-05-19 | 2010-05-20 | 14 | 0d |  |
| 32 |  | Preparación del entorno de generación y contrucción | 1d? | 2010-05-19 | 2010-05-19 |  | 0d |  |
| 33 |  | Generación del código de los componentes y procedimientos | 1d? | 2010-05-20 | 2010-05-20 | 32 | 0d |  |
| 34 |  | Elaboración del manual de usuario | 1d? | 2010-05-19 | 2010-05-19 | 32SS | 1d |  |
| 35 |  | Definición de la formación de usuarios finales | 1d? | 2010-05-19 | 2010-05-19 | 34SS | 1d |  |
| 36 |  | Construcción de los componentes y procedimientos de carga inicial de datos | 1d? | 2010-05-19 | 2010-05-19 | 35SS | 1d |  |
| 37 | 4 | **Pruebas** | 1d? | 2010-05-21 | 2010-05-21 | 31 | 0d |  |
| 38 |  | Ejecución de las pruebas unitarias | 1d? | 2010-05-21 | 2010-05-21 |  | 0d |  |
| 39 |  | Ejecución de las pruebas de integración | 1d? | 2010-05-21 | 2010-05-21 | 38SS | 0d |  |
| 40 |  | Ejecución de las pruebas del sistema | 1d? | 2010-05-21 | 2010-05-21 | 39SS | 0d |  |
| 41 |  | Aprobación del SI | 0d | 2010-05-21 | 2010-05-21 | 40, 38, 39 | 0d |  |
| 42 | 5 | **Reunión del grupo de trabajo** | 11d | 2010-05-03 | 2010-05-17 |  | 4d |  |
| 43 |  | Reunión del grupo de trabajo 1 | 1d | 2010-05-03 | 2010-05-03 |  | 14d | start no earlier than 2010-05-03 |
| 44 |  | Reunión del grupo de trabajo 2 | 1d | 2010-05-10 | 2010-05-10 |  | 9d | start no earlier than 2010-05-10 |
| 45 |  | Reunión del grupo de trabajo 3 | 1d | 2010-05-17 | 2010-05-17 |  | 4d | start no earlier than 2010-05-17 |

## Version 2 (saved 2010-04-24, file p1.mpp)

Note of the change: recursos materiales y tiempos Pert

Last finish 2010-05-21 → 2010-08-17 (+88d).

Changed:

| ID | Task | Start | Finish | Duration | Total float | Other |
| --- | --- | --- | --- | --- | --- | --- |
| 1 | **Análisis** |  | 2010-05-10 → 2010-06-04 (+25d) | 6d? → 24.34d |  |  |
| 2 | Definición del sistema |  | 2010-05-03 → 2010-05-07 (+4d) | 1d? → 4.57d |  | resources none → Coordinador; Miembro del grupo de trabajo [400%]; Ordenador [500%] |
| 3 | Establecimiento de requisitos | 2010-05-04 → 2010-05-07 (+3d) | 2010-05-04 → 2010-05-14 (+10d) | 1d? → 5d |  |  |
| 4 | Identificación de subsistemas | 2010-05-05 → 2010-05-14 (+9d) | 2010-05-05 → 2010-05-20 (+15d) | 1d? → 4d |  |  |
| 5 | **Elaboración del modelo de datos** | 2010-05-05 → 2010-05-14 (+9d) | 2010-05-07 → 2010-05-28 (+21d) | 3d? → 9.43d |  |  |
| 6 | Elaboración de modelo conceptual y lógica de datos | 2010-05-05 → 2010-05-14 (+9d) | 2010-05-05 → 2010-05-21 (+16d) | 1d? → 5d |  |  |
| 7 | Normalización | 2010-05-06 → 2010-05-21 (+15d) | 2010-05-06 → 2010-05-26 (+20d) | 1d? → 2.43d |  |  |
| 8 | Especificación de necesidades de carga inicial | 2010-05-07 → 2010-05-26 (+19d) | 2010-05-07 → 2010-05-28 (+21d) | 1d? → 2d |  |  |
| 9 | Elaboración del modelo de procesos | 2010-05-05 → 2010-05-14 (+9d) | 2010-05-05 → 2010-05-24 (+19d) | 1d? → 5.78d | 2d → 3.65d |  |
| 10 | Definición de interfaz de usuario | 2010-05-05 → 2010-05-14 (+9d) | 2010-05-05 → 2010-05-24 (+19d) | 1d? → 5.5d | 2d → 3.93d |  |
| 11 | Análisis de consistencia y especificación de requisitos | 2010-05-10 → 2010-05-28 (+18d) | 2010-05-10 → 2010-06-02 (+23d) | 1d? → 3.28d | 0d → 0.94d |  |
| 12 | Especificación de plan de pruebas | 2010-05-10 → 2010-05-28 (+18d) | 2010-05-10 → 2010-06-03 (+24d) | 1d? → 4.22d |  |  |
| 13 | Aprobación del análisis del SI | 2010-05-10 → 2010-06-03 (+24d) | 2010-05-10 → 2010-06-04 (+25d) | 0d → 1d |  |  |
| 14 | **Diseño** | 2010-05-11 → 2010-06-04 (+24d) | 2010-05-18 → 2010-07-20 (+63d) | 6d? → 32.01d |  |  |
| 15 | Definición de la arquitectura del sistema | 2010-05-11 → 2010-06-04 (+24d) | 2010-05-11 → 2010-06-11 (+31d) | 1d? → 4.57d |  |  |
| 16 | Diseño de la arquitectura de soporte | 2010-05-12 → 2010-06-11 (+30d) | 2010-05-12 → 2010-06-17 (+36d) | 1d? → 4.57d |  |  |
| 17 | **Diseño de la arquitectura de módulos de sistema** | 2010-05-12 → 2010-06-11 (+30d) | 2010-05-14 → 2010-07-05 (+52d) | 3d? → 16.55d |  |  |
| 18 | Diseño de módulos del sistema | 2010-05-12 → 2010-06-11 (+30d) | 2010-05-12 → 2010-06-23 (+42d) | 1d? → 8.43d |  |  |
| 19 | Diseño de comucación entre módulos | 2010-05-13 → 2010-06-23 (+41d) | 2010-05-13 → 2010-06-29 (+47d) | 1d? → 4.27d |  |  |
| 20 | Revisión de la interfaz de usuario | 2010-05-14 → 2010-06-29 (+46d) | 2010-05-14 → 2010-07-05 (+52d) | 1d? → 3.85d |  |  |
| 21 | **Diseño físico de datos** | 2010-05-12 → 2010-06-11 (+30d) | 2010-05-14 → 2010-06-28 (+45d) | 3d? → 11.72d | 0d → 4.83d |  |
| 22 | Diseño del modelo físico de datos | 2010-05-12 → 2010-06-11 (+30d) | 2010-05-12 → 2010-06-16 (+35d) | 1d? → 3.57d | 0d → 4.83d |  |
| 23 | Especificación de los caminos de acceso a los datos | 2010-05-13 → 2010-06-16 (+34d) | 2010-05-13 → 2010-06-23 (+41d) | 1d? → 4.43d | 0d → 4.83d |  |
| 24 | Especificación de la distribución de datos | 2010-05-14 → 2010-06-23 (+40d) | 2010-05-14 → 2010-06-28 (+45d) | 1d? → 3.72d | 0d → 4.83d |  |
| 25 | Verificación y aceptación de la arquitectura del sistema | 2010-05-17 → 2010-07-05 (+49d) | 2010-05-17 → 2010-07-07 (+51d) | 1d? → 1.43d |  |  |
| 26 | Generación y especificación de construcción | 2010-05-18 → 2010-07-07 (+50d) | 2010-05-18 → 2010-07-14 (+57d) | 1d? → 5.73d |  |  |
| 27 | Diseño de migración y carga inicial de datos | 2010-05-18 → 2010-07-07 (+50d) | 2010-05-18 → 2010-07-09 (+52d) | 1d? → 2.87d |  |  |
| 28 | Especificación técnica del plan de prueba | 2010-05-18 → 2010-07-07 (+50d) | 2010-05-18 → 2010-07-12 (+55d) | 1d? → 3.73d |  |  |
| 29 | Establecimiento de requisitos de implantación | 2010-05-18 → 2010-07-07 (+50d) | 2010-05-18 → 2010-07-19 (+62d) | 1d? → 8.03d |  |  |
| 30 | Aprobación del diseño y SI | 2010-05-18 → 2010-07-19 (+62d) | 2010-05-18 → 2010-07-20 (+63d) | 0d → 1.43d |  |  |
| 31 | **Implementación** | 2010-05-19 → 2010-07-20 (+62d) | 2010-05-20 → 2010-08-05 (+77d) | 2d? → 12.43d |  |  |
| 32 | Preparación del entorno de generación y contrucción | 2010-05-19 → 2010-07-20 (+62d) | 2010-05-19 → 2010-07-23 (+65d) | 1d? → 3.13d |  |  |
| 33 | Generación del código de los componentes y procedimientos | 2010-05-20 → 2010-07-23 (+64d) | 2010-05-20 → 2010-08-05 (+77d) | 1d? → 9.3d |  |  |
| 34 | Elaboración del manual de usuario | 2010-05-19 → 2010-07-20 (+62d) | 2010-05-19 → 2010-08-04 (+77d) | 1d? → 10.6d | 1d → 1.83d |  |
| 35 | Definición de la formación de usuarios finales | 2010-05-19 → 2010-07-20 (+62d) | 2010-05-19 → 2010-07-26 (+68d) | 1d? → 3.57d | 1d → 7.43d |  |
| 36 | Construcción de los componentes y procedimientos de carga inicial de datos | 2010-05-19 → 2010-07-20 (+62d) | 2010-05-19 → 2010-07-27 (+69d) | 1d? → 5d | 1d → 7.43d |  |
| 37 | **Pruebas** | 2010-05-21 → 2010-08-05 (+76d) | 2010-05-21 → 2010-08-17 (+88d) | 1d? → 7.3d |  |  |
| 38 | Ejecución de las pruebas unitarias | 2010-05-21 → 2010-08-05 (+76d) | 2010-05-21 → 2010-08-11 (+82d) | 1d? → 4d |  |  |
| 39 | Ejecución de las pruebas de integración | 2010-05-21 → 2010-08-05 (+76d) | 2010-05-21 → 2010-08-12 (+83d) | 1d? → 4.57d |  |  |
| 40 | Ejecución de las pruebas del sistema | 2010-05-21 → 2010-08-05 (+76d) | 2010-05-21 → 2010-08-13 (+84d) | 1d? → 5.3d |  |  |
| 41 | Aprobación del SI | 2010-05-21 → 2010-08-13 (+84d) | 2010-05-21 → 2010-08-17 (+88d) | 0d → 2d |  |  |
| 42 | **Reunión del grupo de trabajo** |  |  | 11d → 10.38d | 4d → 65.71d |  |
| 43 | Reunión del grupo de trabajo 1 |  |  | 1d → 3h | 14d → 75.71d |  |
| 44 | Reunión del grupo de trabajo 2 |  |  | 1d → 3h | 9d → 70.71d |  |
| 45 | Reunión del grupo de trabajo 3 |  |  | 1d → 3h | 4d → 65.71d |  |

## Version 3 (saved 2010-04-25, file p1.mpp)

Note of the change: asignados recursos y y otros retokes

Last finish 2010-08-17 → 2010-08-09 (-8d).

Added:

| ID | Task | Duration | Start | Finish | Predecessors | Constraint | Resources |
| --- | --- | --- | --- | --- | --- | --- | --- |
| 14 | Análisis aprobado | 0d | 2010-06-02 | 2010-06-02 | 13 |  |  |
| 32 | Diseño Aprobado | 0d | 2010-07-16 | 2010-07-16 | 31 |  |  |
| 39 | Implementación aprobada | 0d | 2010-07-16 | 2010-07-16 |  |  |  |
| 45 | Proyecto Finalizado | 0d | 2010-08-02 | 2010-08-02 |  |  |  |
| 50 | Reunión del grupo de trabajo 4 | 3h | 2010-05-24 | 2010-05-24 |  | start no earlier than 2010-05-24 | Miembro del grupo de trabajo [400%]; Coordinador; Ordenador; Pizarra interactiva; Proyector |
| 51 | Reunión del grupo de trabajo 5 | 3h | 2010-05-31 | 2010-05-31 |  | start no earlier than 2010-05-31 | Miembro del grupo de trabajo [400%]; Coordinador; Ordenador; Pizarra interactiva; Proyector |
| 52 | Reunión del grupo de trabajo 6 | 3h | 2010-06-07 | 2010-06-07 |  | start no earlier than 2010-06-07 | Miembro del grupo de trabajo [400%]; Coordinador; Ordenador; Pizarra interactiva; Proyector |
| 53 | Reunión del grupo de trabajo 7 | 3h | 2010-06-14 | 2010-06-14 |  | start no earlier than 2010-06-14 | Miembro del grupo de trabajo [400%]; Coordinador; Ordenador; Pizarra interactiva; Proyector |
| 54 | Reunión del grupo de trabajo 8 | 3h | 2010-06-21 | 2010-06-21 |  | start no earlier than 2010-06-21 | Miembro del grupo de trabajo [400%]; Coordinador; Ordenador; Pizarra interactiva; Proyector |
| 55 | Reunión del grupo de trabajo 9 | 3h | 2010-06-28 | 2010-06-28 |  | start no earlier than 2010-06-28 | Miembro del grupo de trabajo [400%]; Coordinador; Ordenador; Pizarra interactiva; Proyector |
| 56 | Reunión del grupo de trabajo 10 | 3h | 2010-07-05 | 2010-07-05 |  | start no earlier than 2010-07-05 | Miembro del grupo de trabajo [400%]; Coordinador; Ordenador; Pizarra interactiva; Proyector |
| 57 | Reunión del grupo de trabajo 11 | 3h | 2010-07-12 | 2010-07-12 |  | start no earlier than 2010-07-12 | Miembro del grupo de trabajo [400%]; Coordinador; Ordenador; Pizarra interactiva; Proyector |
| 58 | Reunión del grupo de trabajo 12 | 3h | 2010-07-19 | 2010-07-19 |  | start no earlier than 2010-07-19 | Miembro del grupo de trabajo [400%]; Coordinador; Ordenador; Pizarra interactiva; Proyector |
| 59 | Reunión del grupo de trabajo 13 | 3h | 2010-07-26 | 2010-07-26 |  | start no earlier than 2010-07-26 | Miembro del grupo de trabajo [400%]; Coordinador; Ordenador; Pizarra interactiva; Proyector |
| 60 | Reunión del grupo de trabajo 14 | 3h | 2010-08-02 | 2010-08-02 |  | start no earlier than 2010-08-02 | Miembro del grupo de trabajo [400%]; Coordinador; Ordenador; Pizarra interactiva; Proyector |

Changed:

| ID | Task | Start | Finish | Duration | Total float | Predecessors | Other |
| --- | --- | --- | --- | --- | --- | --- | --- |
| 1 | **Análisis** |  | 2010-06-04 → 2010-06-02 (-2d) | 24.34d → 22.03d |  |  |  |
| 2 | Definición del sistema |  | 2010-05-07 → 2010-05-06 (-1d) | 4.57d → 3.83d |  |  | resources Coordinador; Miembro del grupo de trabajo [400%]; Ordenador [500%] → Coordinador; Miembro del grupo de trabajo [400%]; Ordenador [600%]; Analista; Pizarra interactiva |
| 3 | Establecimiento de requisitos | 2010-05-07 → 2010-05-06 (-1d) | 2010-05-14 → 2010-05-12 (-2d) | 5d → 3.75d |  |  | resources none → Miembro del grupo de trabajo [200%]; Coordinador; Ordenador [300%] |
| 4 | Identificación de subsistemas | 2010-05-14 → 2010-05-12 (-2d) | 2010-05-20 → 2010-05-14 (-6d) | 4d → 2d |  |  | resources none → Miembro del grupo de trabajo [200%]; Analista; Ordenador [300%] |
| 5 | **Elaboración del modelo de datos** | 2010-05-14 → 2010-05-12 (-2d) | 2010-05-28 → 2010-05-26 (-2d) |  |  |  |  |
| 6 | Elaboración de modelo conceptual y lógica de datos | 2010-05-14 → 2010-05-12 (-2d) | 2010-05-21 → 2010-05-19 (-2d) |  |  |  | resources none → Coordinador; Analista; Ordenador [200%]; Pizarra interactiva |
| 7 | Normalización | 2010-05-21 → 2010-05-19 (-2d) | 2010-05-26 → 2010-05-24 (-2d) |  |  |  | resources none → Miembro del grupo de trabajo [400%]; Ordenador [400%] |
| 8 | Especificación de necesidades de carga inicial | 2010-05-26 → 2010-05-24 (-2d) | 2010-05-28 → 2010-05-26 (-2d) |  |  |  | resources none → Secretario; Miembro del grupo de trabajo [300%]; Ordenador [400%] |
| 9 | Elaboración del modelo de procesos | 2010-05-14 → 2010-05-12 (-2d) | 2010-05-24 → 2010-05-20 (-4d) |  |  |  | resources none → Coordinador; Analista; Ordenador [400%]; Miembro del grupo de trabajo [200%] |
| 10 | Definición de interfaz de usuario | 2010-05-14 → 2010-05-12 (-2d) | 2010-05-24 → 2010-05-20 (-4d) |  |  |  | resources none → Usuario experto; Miembro del grupo de trabajo [300%]; Secretario; Ordenador [500%]; Pizarra interactiva |
| 11 | Análisis de consistencia y especificación de requisitos | 2010-05-28 → 2010-05-26 (-2d) | 2010-06-02 → 2010-05-31 (-2d) |  |  |  | resources none → Analista; Coordinador; Miembro del grupo de trabajo [400%]; Pizarra interactiva; Ordenador [600%] |
| 12 | Especificación de plan de pruebas | 2010-05-28 → 2010-05-26 (-2d) | 2010-06-03 → 2010-06-01 (-2d) |  |  |  | resources none → Usuario experto; Analista; Coordinador; Ordenador [300%] |
| 13 | Aprobación del análisis del SI | 2010-06-03 → 2010-06-01 (-2d) | 2010-06-04 → 2010-06-02 (-2d) | 1d → 0.8d |  |  | resources none → Ordenador; Coordinador; Analista; Pizarra interactiva; Programador; Secretario |
| 15 | **Diseño** | 2010-06-04 → 2010-06-02 (-2d) | 2010-07-20 → 2010-07-16 (-4d) |  |  |  |  |
| 16 | Definición de la arquitectura del sistema | 2010-06-04 → 2010-06-02 (-2d) | 2010-06-11 → 2010-06-08 (-3d) |  |  | none → 14 | resources none → Coordinador; Analista; Ordenador [200%]; Pizarra interactiva; Miembro del grupo de trabajo [400%] |
| 17 | Diseño de la arquitectura de soporte | 2010-06-11 → 2010-06-08 (-3d) | 2010-06-17 → 2010-06-15 (-2d) |  |  |  | resources none → Analista; Coordinador; Miembro del grupo de trabajo [200%]; Ordenador [400%]; Pizarra interactiva |
| 18 | **Diseño de la arquitectura de módulos de sistema** | 2010-06-11 → 2010-06-08 (-3d) | 2010-07-05 → 2010-07-01 (-4d) |  |  |  |  |
| 19 | Diseño de módulos del sistema | 2010-06-11 → 2010-06-08 (-3d) | 2010-06-23 → 2010-06-21 (-2d) |  |  |  | resources none → Miembro del grupo de trabajo [200%]; Ordenador [200%] |
| 20 | Diseño de comucación entre módulos | 2010-06-23 → 2010-06-21 (-2d) | 2010-06-29 → 2010-06-25 (-4d) |  |  |  | resources none → Miembro del grupo de trabajo [200%]; Coordinador [200%] |
| 21 | Revisión de la interfaz de usuario | 2010-06-29 → 2010-06-25 (-4d) | 2010-07-05 → 2010-07-01 (-4d) |  |  |  | resources none → Coordinador; Analista; Usuario experto; Ordenador [300%]; Pizarra interactiva |
| 22 | **Diseño físico de datos** | 2010-06-11 → 2010-06-08 (-3d) | 2010-06-28 → 2010-06-24 (-4d) |  |  |  |  |
| 23 | Diseño del modelo físico de datos | 2010-06-11 → 2010-06-08 (-3d) | 2010-06-16 → 2010-06-14 (-2d) |  |  |  | resources none → Coordinador; Analista; Ordenador [300%]; Miembro del grupo de trabajo |
| 24 | Especificación de los caminos de acceso a los datos | 2010-06-16 → 2010-06-14 (-2d) | 2010-06-23 → 2010-06-18 (-5d) |  |  |  | resources none → Miembro del grupo de trabajo [300%]; Ordenador [300%] |
| 25 | Especificación de la distribución de datos | 2010-06-23 → 2010-06-18 (-5d) | 2010-06-28 → 2010-06-24 (-4d) |  |  |  | resources none → Miembro del grupo de trabajo [200%]; Ordenador [200%] |
| 26 | Verificación y aceptación de la arquitectura del sistema | 2010-07-05 → 2010-07-01 (-4d) | 2010-07-07 → 2010-07-02 (-5d) |  |  |  | resources none → Coordinador; Miembro del grupo de trabajo [400%]; Ordenador [500%] |
| 27 | Generación y especificación de construcción | 2010-07-07 → 2010-07-02 (-5d) | 2010-07-14 → 2010-07-12 (-2d) |  |  |  | resources none → Coordinador; Analista; Ordenador [200%] |
| 28 | Diseño de migración y carga inicial de datos | 2010-07-07 → 2010-07-02 (-5d) | 2010-07-09 → 2010-07-07 (-2d) |  |  |  | resources none → Miembro del grupo de trabajo [200%]; Ordenador [200%] |
| 29 | Especificación técnica del plan de prueba | 2010-07-07 → 2010-07-02 (-5d) | 2010-07-12 → 2010-07-08 (-4d) |  |  |  | resources none → Miembro del grupo de trabajo [200%]; Ordenador [200%] |
| 30 | Establecimiento de requisitos de implantación | 2010-07-07 → 2010-07-02 (-5d) | 2010-07-19 → 2010-07-14 (-5d) |  |  |  | resources none → Miembro del grupo de trabajo; Coordinador; Ordenador [200%] |
| 31 | Aprobación del diseño y SI | 2010-07-19 → 2010-07-14 (-5d) | 2010-07-20 → 2010-07-16 (-4d) |  |  |  | resources none → Coordinador; Secretario; Pizarra interactiva; Proyector; Ordenador |
| 33 | **Implementación** | 2010-07-20 → 2010-07-16 (-4d) | 2010-08-05 → 2010-08-02 (-3d) | 12.43d → 11.39d |  |  |  |
| 34 | Preparación del entorno de generación y contrucción | 2010-07-20 → 2010-07-16 (-4d) | 2010-07-23 → 2010-07-20 (-3d) | 3.13d → 2.09d |  | none → 32, 31 | resources none → Programador; Ordenador; Miembro del grupo de trabajo |
| 35 | Generación del código de los componentes y procedimientos | 2010-07-23 → 2010-07-20 (-3d) | 2010-08-05 → 2010-08-02 (-3d) |  |  |  | resources none → Programador; Ordenador |
| 36 | Elaboración del manual de usuario | 2010-07-20 → 2010-07-16 (-4d) | 2010-08-04 → 2010-07-27 (-8d) | 10.6d → 7.07d | 1.83d → 4.32d |  | resources none → Programador; Ordenador [200%]; Secretario |
| 37 | Definición de la formación de usuarios finales | 2010-07-20 → 2010-07-16 (-4d) | 2010-07-26 → 2010-07-21 (-5d) |  | 7.43d → 6.39d |  | resources none → Programador; Ordenador |
| 38 | Construcción de los componentes y procedimientos de carga inicial de datos | 2010-07-20 → 2010-07-16 (-4d) | 2010-07-27 → 2010-07-23 (-4d) |  | 7.43d → 6.39d |  | resources none → Programador; Ordenador |
| 40 | **Pruebas** | 2010-08-05 → 2010-08-02 (-3d) | 2010-08-17 → 2010-08-09 (-8d) | 7.3d → 4.65d |  |  |  |
| 41 | Ejecución de las pruebas unitarias | 2010-08-05 → 2010-08-02 (-3d) | 2010-08-11 → 2010-08-04 (-7d) | 4d → 2d |  |  | resources none → Usuario experto; Coordinador; Pizarra interactiva; Ordenador [200%] |
| 42 | Ejecución de las pruebas de integración | 2010-08-05 → 2010-08-02 (-3d) | 2010-08-12 → 2010-08-04 (-8d) | 4.57d → 2.29d |  |  | resources none → Usuario experto; Coordinador; Pizarra interactiva; Ordenador [200%] |
| 43 | Ejecución de las pruebas del sistema | 2010-08-05 → 2010-08-02 (-3d) | 2010-08-13 → 2010-08-05 (-8d) | 5.3d → 2.65d |  |  | resources none → Usuario experto; Coordinador; Pizarra interactiva; Ordenador [200%] |
| 44 | Aprobación del SI | 2010-08-13 → 2010-08-05 (-8d) | 2010-08-17 → 2010-08-09 (-8d) |  |  |  | resources none → Secretario; Coordinador; Proyector; Ordenador |
| 46 | **Reunión del grupo de trabajo** |  | 2010-05-17 → 2010-08-02 (+77d) | 10.38d → 65.38d | 65.71d → 4.7d |  |  |
| 47 | Reunión del grupo de trabajo 1 |  |  |  | 75.71d → 69.7d |  | resources none → Miembro del grupo de trabajo [400%]; Coordinador; Ordenador; Pizarra interactiva; Proyector |
| 48 | Reunión del grupo de trabajo 2 |  |  |  | 70.71d → 64.7d |  | resources none → Miembro del grupo de trabajo [400%]; Coordinador; Ordenador; Pizarra interactiva; Proyector |
| 49 | Reunión del grupo de trabajo 3 |  |  |  | 65.71d → 59.7d |  | resources none → Miembro del grupo de trabajo [400%]; Coordinador; Ordenador; Pizarra interactiva; Proyector |

## Version 4 (saved 2010-04-27, file p1.mpp)

Note of the change: project casi terminado

Last finish 2010-08-09 → 2010-08-19 (+10d).

Changed:

| ID | Task | Start | Finish | Duration | Total float | Predecessors |
| --- | --- | --- | --- | --- | --- | --- |
| 1 | **Análisis** |  | 2010-06-02 → 2010-06-08 (+6d) | 22.03d → 24.02d | 0d → 0.42d |  |
| 3 | Establecimiento de requisitos |  | 2010-05-12 → 2010-05-13 (+1d) | 3.75d → 4.38d | 0d → 0.42d |  |
| 4 | Identificación de subsistemas | 2010-05-12 → 2010-05-13 (+1d) | 2010-05-14 → 2010-05-17 (+3d) |  | 0d → 0.42d |  |
| 5 | **Elaboración del modelo de datos** | 2010-05-12 → 2010-05-13 (+1d) | 2010-05-26 → 2010-05-28 (+2d) | 9.43d → 9.93d | 0d → 0.42d |  |
| 6 | Elaboración de modelo conceptual y lógica de datos | 2010-05-12 → 2010-05-13 (+1d) | 2010-05-19 → 2010-05-20 (+1d) | 5d → 5.62d | 0d → 0.42d |  |
| 7 | Normalización | 2010-05-19 → 2010-05-20 (+1d) | 2010-05-24 → 2010-05-26 (+2d) |  | 0d → 0.49d |  |
| 8 | Especificación de necesidades de carga inicial | 2010-05-24 → 2010-05-26 (+2d) | 2010-05-26 → 2010-05-28 (+2d) |  | 0d → 0.49d |  |
| 9 | Elaboración del modelo de procesos | 2010-05-12 → 2010-05-13 (+1d) | 2010-05-20 → 2010-05-21 (+1d) | 5.78d → 6.41d | 3.65d → 4.01d |  |
| 10 | Definición de interfaz de usuario | 2010-05-12 → 2010-05-13 (+1d) |  |  | 3.93d → 4.92d |  |
| 11 | Análisis de consistencia y especificación de requisitos | 2010-05-26 → 2010-05-28 (+2d) | 2010-05-31 → 2010-06-03 (+3d) | 3.28d → 3.89d | 0.94d → 1.91d |  |
| 12 | Especificación de plan de pruebas | 2010-05-26 → 2010-05-28 (+2d) | 2010-06-01 → 2010-06-07 (+6d) | 4.22d → 4.96d | 0d → 0.48d |  |
| 13 | Aprobación del análisis del SI | 2010-06-01 → 2010-06-07 (+6d) | 2010-06-02 → 2010-06-08 (+6d) |  | 0d → 0.48d |  |
| 14 | Análisis aprobado | 2010-06-02 → 2010-06-08 (+6d) | 2010-06-02 → 2010-06-08 (+6d) |  | 0d → 0.48d |  |
| 15 | **Diseño** | 2010-06-02 → 2010-06-08 (+6d) | 2010-07-16 → 2010-07-27 (+11d) | 32.01d → 34.99d |  |  |
| 16 | Definición de la arquitectura del sistema | 2010-06-02 → 2010-06-08 (+6d) | 2010-06-08 → 2010-06-15 (+7d) | 4.57d → 5.2d | 0d → 0.48d |  |
| 17 | Diseño de la arquitectura de soporte | 2010-06-08 → 2010-06-15 (+7d) | 2010-06-15 → 2010-06-22 (+7d) | 4.57d → 5.2d | 0d → 0.48d |  |
| 18 | **Diseño de la arquitectura de módulos de sistema** | 2010-06-08 → 2010-06-15 (+7d) | 2010-07-01 → 2010-07-08 (+7d) | 16.55d → 17.53d |  |  |
| 19 | Diseño de módulos del sistema | 2010-06-08 → 2010-06-15 (+7d) | 2010-06-21 → 2010-06-25 (+4d) |  | 0d → 0.48d |  |
| 20 | Diseño de comucación entre módulos | 2010-06-21 → 2010-06-25 (+4d) | 2010-06-25 → 2010-07-02 (+7d) | 4.27d → 4.75d |  |  |
| 21 | Revisión de la interfaz de usuario | 2010-06-25 → 2010-07-02 (+7d) | 2010-07-01 → 2010-07-08 (+7d) | 3.85d → 4.35d |  |  |
| 22 | **Diseño físico de datos** | 2010-06-08 → 2010-06-15 (+7d) | 2010-06-24 → 2010-07-02 (+8d) | 11.72d → 13.22d | 4.83d → 4.31d |  |
| 23 | Diseño del modelo físico de datos | 2010-06-08 → 2010-06-15 (+7d) | 2010-06-14 → 2010-06-21 (+7d) | 3.57d → 3.85d | 4.83d → 4.31d |  |
| 24 | Especificación de los caminos de acceso a los datos | 2010-06-14 → 2010-06-23 (+9d) | 2010-06-18 → 2010-06-29 (+11d) |  | 4.83d → 4.31d | 23 → 23FS+2d |
| 25 | Especificación de la distribución de datos | 2010-06-18 → 2010-06-28 (+10d) | 2010-06-24 → 2010-07-02 (+8d) |  | 4.83d → 4.31d | 24 → 24FS-1d |
| 26 | Verificación y aceptación de la arquitectura del sistema | 2010-07-01 → 2010-07-08 (+7d) | 2010-07-02 → 2010-07-12 (+10d) | 1.43d → 2.06d |  |  |
| 27 | Generación y especificación de construcción | 2010-07-02 → 2010-07-12 (+10d) | 2010-07-12 → 2010-07-20 (+8d) | 5.73d → 6.36d |  |  |
| 28 | Diseño de migración y carga inicial de datos | 2010-07-02 → 2010-07-12 (+10d) | 2010-07-07 → 2010-07-15 (+8d) |  |  |  |
| 29 | Especificación técnica del plan de prueba | 2010-07-02 → 2010-07-12 (+10d) | 2010-07-08 → 2010-07-16 (+8d) |  |  |  |
| 30 | Establecimiento de requisitos de implantación | 2010-07-02 → 2010-07-12 (+10d) | 2010-07-14 → 2010-07-23 (+9d) | 8.03d → 8.65d |  |  |
| 31 | Aprobación del diseño y SI | 2010-07-14 → 2010-07-23 (+9d) | 2010-07-16 → 2010-07-27 (+11d) | 1.43d → 1.93d |  |  |
| 32 | Diseño Aprobado | 2010-07-16 → 2010-07-27 (+11d) | 2010-07-16 → 2010-07-27 (+11d) |  |  |  |
| 33 | **Implementación** | 2010-07-16 → 2010-07-27 (+11d) | 2010-08-02 → 2010-08-11 (+9d) |  |  |  |
| 34 | Preparación del entorno de generación y contrucción | 2010-07-16 → 2010-07-27 (+11d) | 2010-07-20 → 2010-07-29 (+9d) |  |  |  |
| 35 | Generación del código de los componentes y procedimientos | 2010-07-20 → 2010-07-29 (+9d) | 2010-08-02 → 2010-08-11 (+9d) |  |  |  |
| 36 | Elaboración del manual de usuario | 2010-07-16 → 2010-07-27 (+11d) | 2010-07-27 → 2010-08-05 (+9d) |  |  |  |
| 37 | Definición de la formación de usuarios finales | 2010-07-16 → 2010-07-27 (+11d) | 2010-07-21 → 2010-07-30 (+9d) |  |  |  |
| 38 | Construcción de los componentes y procedimientos de carga inicial de datos | 2010-07-16 → 2010-07-27 (+11d) | 2010-07-23 → 2010-08-03 (+11d) |  |  |  |
| 39 | Implementación aprobada | 2010-07-16 → 2010-07-27 (+11d) | 2010-07-16 → 2010-07-27 (+11d) |  |  |  |
| 40 | **Pruebas** | 2010-08-02 → 2010-08-11 (+9d) | 2010-08-09 → 2010-08-19 (+10d) | 4.65d → 5.15d |  |  |
| 41 | Ejecución de las pruebas unitarias | 2010-08-02 → 2010-08-11 (+9d) | 2010-08-04 → 2010-08-13 (+9d) | 2d → 2.12d |  |  |
| 42 | Ejecución de las pruebas de integración | 2010-08-02 → 2010-08-11 (+9d) | 2010-08-04 → 2010-08-17 (+13d) | 2.29d → 2.59d |  |  |
| 43 | Ejecución de las pruebas del sistema | 2010-08-02 → 2010-08-11 (+9d) | 2010-08-05 → 2010-08-17 (+12d) | 2.65d → 3.27d |  |  |
| 44 | Aprobación del SI | 2010-08-05 → 2010-08-17 (+12d) | 2010-08-09 → 2010-08-19 (+10d) |  |  |  |
| 45 | Proyecto Finalizado | 2010-08-02 → 2010-08-11 (+9d) | 2010-08-02 → 2010-08-11 (+9d) |  | 4.65d → 5.15d |  |
| 46 | **Reunión del grupo de trabajo** |  |  | 65.38d → 63.38d | 4.7d → 12.17d |  |
| 50 | Reunión del grupo de trabajo 4 | 2010-05-24 → 2010-05-25 (+1d) | 2010-05-24 → 2010-05-25 (+1d) |  | 54.7d → 60.17d |  |
| 51 | Reunión del grupo de trabajo 5 | 2010-05-31 → 2010-06-01 (+1d) | 2010-05-31 → 2010-06-01 (+1d) |  | 49.7d → 56.17d |  |

## Version 5 (saved 2010-04-27, file p1.mpp)

Note of the change: project casi terminado 2

Last finish stays 2010-08-19.

Changed:

| ID | Task | Predecessors |
| --- | --- | --- |
| 34 | Preparación del entorno de generación y contrucción | 32, 31 → 32 |

## Version 6 (saved 2010-04-27, file p1.mpp)

Note of the change: Realizado project hasta las delimitaciones de tareas, el proximo paso será el seguimiento

Last finish 2010-08-19 → 2010-10-20 (+62d).

Changed:

| ID | Task | Start | Finish | Duration | Total float | Predecessors | Other |
| --- | --- | --- | --- | --- | --- | --- | --- |
| 1 | **Análisis** |  | 2010-06-08 → 2010-06-24 (+16d) | 24.02d → 36.34d | 0.42d → 2.62d |  |  |
| 2 | Definición del sistema |  | 2010-05-06 → 2010-05-07 (+1d) | 3.83d → 4.21d | 0.42d → 2.62d |  |  |
| 3 | Establecimiento de requisitos | 2010-05-06 → 2010-05-07 (+1d) |  | 4.38d → 4.62d | 0.42d → 2.99d |  |  |
| 4 | Identificación de subsistemas |  |  | 2d → 2.09d | 0.42d → 3.12d |  |  |
| 5 | **Elaboración del modelo de datos** |  | 2010-05-28 → 2010-06-10 (+13d) | 9.93d → 17.46d | 0.42d → 3.12d |  |  |
| 6 | Elaboración de modelo conceptual y lógica de datos |  | 2010-05-20 → 2010-06-03 (+14d) | 5.62d → 7.33d | 0.42d → 3.12d |  |  |
| 7 | Normalización | 2010-05-20 → 2010-06-03 (+14d) | 2010-05-26 → 2010-06-08 (+13d) | 2.43d → 2.81d | 0.49d → 3.12d |  |  |
| 8 | Especificación de necesidades de carga inicial | 2010-05-26 → 2010-06-08 (+13d) | 2010-05-28 → 2010-06-10 (+13d) |  | 0.49d → 3.12d |  |  |
| 9 | Elaboración del modelo de procesos |  | 2010-05-21 → 2010-06-04 (+14d) | 6.41d → 13.35d | 4.01d → 7.05d |  |  |
| 10 | Definición de interfaz de usuario |  | 2010-05-20 → 2010-06-03 (+14d) | 5.5d → 12.19d | 4.92d → 7.63d |  |  |
| 11 | Análisis de consistencia y especificación de requisitos | 2010-05-28 → 2010-06-10 (+13d) | 2010-06-03 → 2010-06-23 (+20d) | 3.89d → 8.06d | 1.91d → 3.49d |  |  |
| 12 | Especificación de plan de pruebas | 2010-05-28 → 2010-06-10 (+13d) | 2010-06-07 → 2010-06-23 (+16d) | 4.96d → 5.22d | 0.48d → 3.12d |  |  |
| 13 | Aprobación del análisis del SI | 2010-06-07 → 2010-06-23 (+16d) | 2010-06-08 → 2010-06-24 (+16d) |  | 0.48d → 3.12d |  |  |
| 14 | Análisis aprobado | 2010-06-08 → 2010-06-24 (+16d) | 2010-06-08 → 2010-06-24 (+16d) |  | 0.48d → 3.12d |  |  |
| 15 | **Diseño** | 2010-06-08 → 2010-06-24 (+16d) | 2010-07-27 → 2010-08-30 (+34d) | 34.99d → 46.19d |  |  |  |
| 16 | Definición de la arquitectura del sistema | 2010-06-08 → 2010-06-24 (+16d) | 2010-06-15 → 2010-07-01 (+16d) | 5.2d → 5.57d | 0.48d → 3.12d |  |  |
| 17 | Diseño de la arquitectura de soporte | 2010-06-15 → 2010-07-01 (+16d) | 2010-06-22 → 2010-07-15 (+23d) | 5.2d → 5.95d | 0.48d → 3.12d |  |  |
| 18 | **Diseño de la arquitectura de módulos de sistema** | 2010-06-15 → 2010-07-01 (+16d) | 2010-07-08 → 2010-07-28 (+20d) | 17.53d → 19.01d | 0d → 3.12d |  |  |
| 19 | Diseño de módulos del sistema | 2010-06-15 → 2010-07-01 (+16d) | 2010-06-25 → 2010-07-14 (+19d) | 8.43d → 8.8d | 0.48d → 3.12d |  |  |
| 20 | Diseño de comucación entre módulos | 2010-06-25 → 2010-07-14 (+19d) | 2010-07-02 → 2010-07-22 (+20d) | 4.75d → 4.64d | 0d → 3.12d |  | resources Miembro del grupo de trabajo [200%]; Coordinador [200%] → Miembro del grupo de trabajo [200%]; Ordenador [200%] |
| 21 | Revisión de la interfaz de usuario | 2010-07-02 → 2010-07-22 (+20d) | 2010-07-08 → 2010-07-28 (+20d) | 4.35d → 4.85d | 0d → 3.12d |  | constraint none → finish no earlier than 2010-07-20 |
| 22 | **Diseño físico de datos** | 2010-06-15 → 2010-07-01 (+16d) | 2010-07-02 → 2010-08-02 (+31d) | 13.22d → 22.12d | 4.31d → 0d |  |  |
| 23 | Diseño del modelo físico de datos | 2010-06-15 → 2010-07-01 (+16d) | 2010-06-21 → 2010-07-15 (+24d) | 3.85d → 5.28d | 4.31d → 0d |  |  |
| 24 | Especificación de los caminos de acceso a los datos | 2010-06-23 → 2010-07-19 (+26d) | 2010-06-29 → 2010-07-28 (+29d) | 4.43d → 6.51d | 4.31d → 0d |  |  |
| 25 | Especificación de la distribución de datos | 2010-06-28 → 2010-07-27 (+29d) | 2010-07-02 → 2010-08-02 (+31d) | 3.72d → 4.72d | 4.31d → 0d |  |  |
| 26 | Verificación y aceptación de la arquitectura del sistema | 2010-07-08 → 2010-08-02 (+25d) | 2010-07-12 → 2010-08-04 (+23d) | 2.06d → 1.43d |  |  |  |
| 27 | Generación y especificación de construcción | 2010-07-12 → 2010-08-04 (+23d) | 2010-07-20 → 2010-08-12 (+23d) |  |  |  |  |
| 28 | Diseño de migración y carga inicial de datos | 2010-07-12 → 2010-08-04 (+23d) | 2010-07-15 → 2010-08-09 (+25d) |  |  |  |  |
| 29 | Especificación técnica del plan de prueba | 2010-07-12 → 2010-08-04 (+23d) | 2010-07-16 → 2010-08-10 (+25d) |  |  |  |  |
| 30 | Establecimiento de requisitos de implantación | 2010-07-12 → 2010-08-09 (+28d) | 2010-07-23 → 2010-08-26 (+34d) | 8.65d → 12.14d |  |  |  |
| 31 | Aprobación del diseño y SI | 2010-07-23 → 2010-08-26 (+34d) | 2010-07-27 → 2010-08-30 (+34d) | 1.93d → 2.06d |  |  |  |
| 32 | Diseño Aprobado | 2010-07-27 → 2010-08-30 (+34d) | 2010-07-27 → 2010-08-30 (+34d) |  |  |  |  |
| 33 | **Implementación** | 2010-07-27 → 2010-08-30 (+34d) | 2010-08-11 → 2010-10-06 (+56d) | 11.39d → 27.02d |  |  |  |
| 34 | Preparación del entorno de generación y contrucción | 2010-07-27 → 2010-08-30 (+34d) | 2010-07-29 → 2010-09-01 (+34d) |  |  |  |  |
| 35 | Generación del código de los componentes y procedimientos | 2010-07-29 → 2010-09-01 (+34d) | 2010-08-11 → 2010-10-06 (+56d) | 9.3d → 18.6d |  |  |  |
| 36 | Elaboración del manual de usuario | 2010-07-27 → 2010-08-30 (+34d) | 2010-08-05 → 2010-09-10 (+36d) | 7.07d → 9.15d | 4.32d → 9.3d |  |  |
| 37 | Definición de la formación de usuarios finales | 2010-07-27 → 2010-08-30 (+34d) | 2010-07-30 → 2010-09-16 (+48d) | 3.57d → 7.14d | 6.39d → 9.3d |  |  |
| 38 | Construcción de los componentes y procedimientos de carga inicial de datos | 2010-07-27 → 2010-08-30 (+34d) | 2010-08-03 → 2010-09-23 (+51d) | 5d → 10d | 6.39d → 9.3d |  |  |
| 39 | Implementación aprobada | 2010-07-27 → 2010-09-23 (+58d) | 2010-07-27 → 2010-09-23 (+58d) |  | 11.39d → 9.3d | none → 38 |  |
| 40 | **Pruebas** | 2010-08-11 → 2010-10-06 (+56d) | 2010-08-19 → 2010-10-20 (+62d) | 5.15d → 9.94d |  |  |  |
| 41 | Ejecución de las pruebas unitarias | 2010-08-11 → 2010-10-06 (+56d) | 2010-08-13 → 2010-10-11 (+59d) | 2.12d → 2.18d |  |  |  |
| 42 | Ejecución de las pruebas de integración | 2010-08-11 → 2010-10-06 (+56d) | 2010-08-17 → 2010-10-13 (+57d) | 2.59d → 4.79d |  |  |  |
| 43 | Ejecución de las pruebas del sistema | 2010-08-11 → 2010-10-06 (+56d) | 2010-08-17 → 2010-10-18 (+62d) | 3.27d → 5.92d |  |  |  |
| 44 | Aprobación del SI | 2010-08-17 → 2010-10-18 (+62d) | 2010-08-19 → 2010-10-20 (+62d) |  |  |  |  |
| 45 | Proyecto Finalizado | 2010-08-11 → 2010-10-20 (+70d) | 2010-08-11 → 2010-10-20 (+70d) |  | 5.15d → 0d | none → 44 |  |

## Version 7 (saved 2010-04-28, file p1.1.mpp)

Note of the change: mpp version antigua revision 161, besos a patricia!!

Last finish 2010-10-20 → 2010-08-19 (-62d).

Changed:

| ID | Task | Start | Finish | Duration | Total float | Predecessors | Other |
| --- | --- | --- | --- | --- | --- | --- | --- |
| 1 | **Análisis** |  | 2010-06-24 → 2010-06-08 (-16d) | 36.34d → 24.02d | 2.62d → 0.42d |  |  |
| 2 | Definición del sistema |  | 2010-05-07 → 2010-05-06 (-1d) | 4.21d → 3.83d | 2.62d → 0.42d |  |  |
| 3 | Establecimiento de requisitos | 2010-05-07 → 2010-05-06 (-1d) |  | 4.62d → 4.38d | 2.99d → 0.42d |  |  |
| 4 | Identificación de subsistemas |  |  | 2.09d → 2d | 3.12d → 0.42d |  |  |
| 5 | **Elaboración del modelo de datos** |  | 2010-06-10 → 2010-05-28 (-13d) | 17.46d → 9.93d | 3.12d → 0.42d |  |  |
| 6 | Elaboración de modelo conceptual y lógica de datos |  | 2010-06-03 → 2010-05-20 (-14d) | 7.33d → 5.62d | 3.12d → 0.42d |  |  |
| 7 | Normalización | 2010-06-03 → 2010-05-20 (-14d) | 2010-06-08 → 2010-05-26 (-13d) | 2.81d → 2.43d | 3.12d → 0.49d |  |  |
| 8 | Especificación de necesidades de carga inicial | 2010-06-08 → 2010-05-26 (-13d) | 2010-06-10 → 2010-05-28 (-13d) |  | 3.12d → 0.49d |  |  |
| 9 | Elaboración del modelo de procesos |  | 2010-06-04 → 2010-05-21 (-14d) | 13.35d → 6.41d | 7.05d → 4.01d |  |  |
| 10 | Definición de interfaz de usuario |  | 2010-06-03 → 2010-05-20 (-14d) | 12.19d → 5.5d | 7.63d → 4.92d |  |  |
| 11 | Análisis de consistencia y especificación de requisitos | 2010-06-10 → 2010-05-28 (-13d) | 2010-06-23 → 2010-06-03 (-20d) | 8.06d → 3.89d | 3.49d → 1.91d |  |  |
| 12 | Especificación de plan de pruebas | 2010-06-10 → 2010-05-28 (-13d) | 2010-06-23 → 2010-06-07 (-16d) | 5.22d → 4.96d | 3.12d → 0.48d |  |  |
| 13 | Aprobación del análisis del SI | 2010-06-23 → 2010-06-07 (-16d) | 2010-06-24 → 2010-06-08 (-16d) |  | 3.12d → 0.48d |  |  |
| 14 | Análisis aprobado | 2010-06-24 → 2010-06-08 (-16d) | 2010-06-24 → 2010-06-08 (-16d) |  | 3.12d → 0.48d |  |  |
| 15 | **Diseño** | 2010-06-24 → 2010-06-08 (-16d) | 2010-08-30 → 2010-07-27 (-34d) | 46.19d → 34.99d |  |  |  |
| 16 | Definición de la arquitectura del sistema | 2010-06-24 → 2010-06-08 (-16d) | 2010-07-01 → 2010-06-15 (-16d) | 5.57d → 5.2d | 3.12d → 0.48d |  |  |
| 17 | Diseño de la arquitectura de soporte | 2010-07-01 → 2010-06-15 (-16d) | 2010-07-15 → 2010-06-22 (-23d) | 5.95d → 5.2d | 3.12d → 0.48d |  |  |
| 18 | **Diseño de la arquitectura de módulos de sistema** | 2010-07-01 → 2010-06-15 (-16d) | 2010-07-28 → 2010-07-08 (-20d) | 19.01d → 17.53d | 3.12d → 0d |  |  |
| 19 | Diseño de módulos del sistema | 2010-07-01 → 2010-06-15 (-16d) | 2010-07-14 → 2010-06-25 (-19d) | 8.8d → 8.43d | 3.12d → 0.48d |  |  |
| 20 | Diseño de comucación entre módulos | 2010-07-14 → 2010-06-25 (-19d) | 2010-07-22 → 2010-07-02 (-20d) | 4.64d → 4.75d | 3.12d → 0d |  | resources Miembro del grupo de trabajo [200%]; Ordenador [200%] → Miembro del grupo de trabajo [200%]; Coordinador [200%] |
| 21 | Revisión de la interfaz de usuario | 2010-07-22 → 2010-07-02 (-20d) | 2010-07-28 → 2010-07-08 (-20d) | 4.85d → 4.35d | 3.12d → 0d |  | constraint finish no earlier than 2010-07-20 → none |
| 22 | **Diseño físico de datos** | 2010-07-01 → 2010-06-15 (-16d) | 2010-08-02 → 2010-07-02 (-31d) | 22.12d → 13.22d | 0d → 4.31d |  |  |
| 23 | Diseño del modelo físico de datos | 2010-07-01 → 2010-06-15 (-16d) | 2010-07-15 → 2010-06-21 (-24d) | 5.28d → 3.85d | 0d → 4.31d |  |  |
| 24 | Especificación de los caminos de acceso a los datos | 2010-07-19 → 2010-06-23 (-26d) | 2010-07-28 → 2010-06-29 (-29d) | 6.51d → 4.43d | 0d → 4.31d |  |  |
| 25 | Especificación de la distribución de datos | 2010-07-27 → 2010-06-28 (-29d) | 2010-08-02 → 2010-07-02 (-31d) | 4.72d → 3.72d | 0d → 4.31d |  |  |
| 26 | Verificación y aceptación de la arquitectura del sistema | 2010-08-02 → 2010-07-08 (-25d) | 2010-08-04 → 2010-07-12 (-23d) | 1.43d → 2.06d |  |  |  |
| 27 | Generación y especificación de construcción | 2010-08-04 → 2010-07-12 (-23d) | 2010-08-12 → 2010-07-20 (-23d) |  |  |  |  |
| 28 | Diseño de migración y carga inicial de datos | 2010-08-04 → 2010-07-12 (-23d) | 2010-08-09 → 2010-07-15 (-25d) |  |  |  |  |
| 29 | Especificación técnica del plan de prueba | 2010-08-04 → 2010-07-12 (-23d) | 2010-08-10 → 2010-07-16 (-25d) |  |  |  |  |
| 30 | Establecimiento de requisitos de implantación | 2010-08-09 → 2010-07-12 (-28d) | 2010-08-26 → 2010-07-23 (-34d) | 12.14d → 8.65d |  |  |  |
| 31 | Aprobación del diseño y SI | 2010-08-26 → 2010-07-23 (-34d) | 2010-08-30 → 2010-07-27 (-34d) | 2.06d → 1.93d |  |  |  |
| 32 | Diseño Aprobado | 2010-08-30 → 2010-07-27 (-34d) | 2010-08-30 → 2010-07-27 (-34d) |  |  |  |  |
| 33 | **Implementación** | 2010-08-30 → 2010-07-27 (-34d) | 2010-10-06 → 2010-08-11 (-56d) | 27.02d → 11.39d |  |  |  |
| 34 | Preparación del entorno de generación y contrucción | 2010-08-30 → 2010-07-27 (-34d) | 2010-09-01 → 2010-07-29 (-34d) |  |  |  |  |
| 35 | Generación del código de los componentes y procedimientos | 2010-09-01 → 2010-07-29 (-34d) | 2010-10-06 → 2010-08-11 (-56d) | 18.6d → 9.3d |  |  |  |
| 36 | Elaboración del manual de usuario | 2010-08-30 → 2010-07-27 (-34d) | 2010-09-10 → 2010-08-05 (-36d) | 9.15d → 7.07d | 9.3d → 4.32d |  |  |
| 37 | Definición de la formación de usuarios finales | 2010-08-30 → 2010-07-27 (-34d) | 2010-09-16 → 2010-07-30 (-48d) | 7.14d → 3.57d | 9.3d → 6.39d |  |  |
| 38 | Construcción de los componentes y procedimientos de carga inicial de datos | 2010-08-30 → 2010-07-27 (-34d) | 2010-09-23 → 2010-08-03 (-51d) | 10d → 5d | 9.3d → 6.39d |  |  |
| 39 | Implementación aprobada | 2010-09-23 → 2010-07-27 (-58d) | 2010-09-23 → 2010-07-27 (-58d) |  | 9.3d → 11.39d | 38 → none |  |
| 40 | **Pruebas** | 2010-10-06 → 2010-08-11 (-56d) | 2010-10-20 → 2010-08-19 (-62d) | 9.94d → 5.15d |  |  |  |
| 41 | Ejecución de las pruebas unitarias | 2010-10-06 → 2010-08-11 (-56d) | 2010-10-11 → 2010-08-13 (-59d) | 2.18d → 2.12d |  |  |  |
| 42 | Ejecución de las pruebas de integración | 2010-10-06 → 2010-08-11 (-56d) | 2010-10-13 → 2010-08-17 (-57d) | 4.79d → 2.59d |  |  |  |
| 43 | Ejecución de las pruebas del sistema | 2010-10-06 → 2010-08-11 (-56d) | 2010-10-18 → 2010-08-17 (-62d) | 5.92d → 3.27d |  |  |  |
| 44 | Aprobación del SI | 2010-10-18 → 2010-08-17 (-62d) | 2010-10-20 → 2010-08-19 (-62d) |  |  |  |  |
| 45 | Proyecto Finalizado | 2010-10-20 → 2010-08-11 (-70d) | 2010-10-20 → 2010-08-11 (-70d) |  | 0d → 5.15d | 44 → none |  |

## Version 8 (saved 2010-04-28, file p1.mpp)

Note of the change: version r160 a project 2003

Last finish 2010-08-19 → 2010-08-09 (-10d).

Changed:

| ID | Task | Start | Finish | Duration | Total float | Predecessors |
| --- | --- | --- | --- | --- | --- | --- |
| 1 | **Análisis** |  | 2010-06-08 → 2010-06-02 (-6d) | 24.02d → 22.03d | 0.42d → 0d |  |
| 3 | Establecimiento de requisitos |  | 2010-05-13 → 2010-05-12 (-1d) | 4.38d → 3.75d | 0.42d → 0d |  |
| 4 | Identificación de subsistemas | 2010-05-13 → 2010-05-12 (-1d) | 2010-05-17 → 2010-05-14 (-3d) |  | 0.42d → 0d |  |
| 5 | **Elaboración del modelo de datos** | 2010-05-13 → 2010-05-12 (-1d) | 2010-05-28 → 2010-05-26 (-2d) | 9.93d → 9.43d | 0.42d → 0d |  |
| 6 | Elaboración de modelo conceptual y lógica de datos | 2010-05-13 → 2010-05-12 (-1d) | 2010-05-20 → 2010-05-19 (-1d) | 5.62d → 5d | 0.42d → 0d |  |
| 7 | Normalización | 2010-05-20 → 2010-05-19 (-1d) | 2010-05-26 → 2010-05-24 (-2d) |  | 0.49d → 0d |  |
| 8 | Especificación de necesidades de carga inicial | 2010-05-26 → 2010-05-24 (-2d) | 2010-05-28 → 2010-05-26 (-2d) |  | 0.49d → 0d |  |
| 9 | Elaboración del modelo de procesos | 2010-05-13 → 2010-05-12 (-1d) | 2010-05-21 → 2010-05-20 (-1d) | 6.41d → 5.78d | 4.01d → 3.65d |  |
| 10 | Definición de interfaz de usuario | 2010-05-13 → 2010-05-12 (-1d) |  |  | 4.92d → 3.93d |  |
| 11 | Análisis de consistencia y especificación de requisitos | 2010-05-28 → 2010-05-26 (-2d) | 2010-06-03 → 2010-05-31 (-3d) | 3.89d → 3.28d | 1.91d → 0.94d |  |
| 12 | Especificación de plan de pruebas | 2010-05-28 → 2010-05-26 (-2d) | 2010-06-07 → 2010-06-01 (-6d) | 4.96d → 4.22d | 0.48d → 0d |  |
| 13 | Aprobación del análisis del SI | 2010-06-07 → 2010-06-01 (-6d) | 2010-06-08 → 2010-06-02 (-6d) |  | 0.48d → 0d |  |
| 14 | Análisis aprobado | 2010-06-08 → 2010-06-02 (-6d) | 2010-06-08 → 2010-06-02 (-6d) |  | 0.48d → 0d |  |
| 15 | **Diseño** | 2010-06-08 → 2010-06-02 (-6d) | 2010-07-27 → 2010-07-16 (-11d) | 34.99d → 32.01d |  |  |
| 16 | Definición de la arquitectura del sistema | 2010-06-08 → 2010-06-02 (-6d) | 2010-06-15 → 2010-06-08 (-7d) | 5.2d → 4.57d | 0.48d → 0d |  |
| 17 | Diseño de la arquitectura de soporte | 2010-06-15 → 2010-06-08 (-7d) | 2010-06-22 → 2010-06-15 (-7d) | 5.2d → 4.57d | 0.48d → 0d |  |
| 18 | **Diseño de la arquitectura de módulos de sistema** | 2010-06-15 → 2010-06-08 (-7d) | 2010-07-08 → 2010-07-01 (-7d) | 17.53d → 16.55d |  |  |
| 19 | Diseño de módulos del sistema | 2010-06-15 → 2010-06-08 (-7d) | 2010-06-25 → 2010-06-21 (-4d) |  | 0.48d → 0d |  |
| 20 | Diseño de comucación entre módulos | 2010-06-25 → 2010-06-21 (-4d) | 2010-07-02 → 2010-06-25 (-7d) | 4.75d → 4.27d |  |  |
| 21 | Revisión de la interfaz de usuario | 2010-07-02 → 2010-06-25 (-7d) | 2010-07-08 → 2010-07-01 (-7d) | 4.35d → 3.85d |  |  |
| 22 | **Diseño físico de datos** | 2010-06-15 → 2010-06-08 (-7d) | 2010-07-02 → 2010-06-24 (-8d) | 13.22d → 11.72d | 4.31d → 4.83d |  |
| 23 | Diseño del modelo físico de datos | 2010-06-15 → 2010-06-08 (-7d) | 2010-06-21 → 2010-06-14 (-7d) | 3.85d → 3.57d | 4.31d → 4.83d |  |
| 24 | Especificación de los caminos de acceso a los datos | 2010-06-23 → 2010-06-14 (-9d) | 2010-06-29 → 2010-06-18 (-11d) |  | 4.31d → 4.83d | 23FS+2d → 23 |
| 25 | Especificación de la distribución de datos | 2010-06-28 → 2010-06-18 (-10d) | 2010-07-02 → 2010-06-24 (-8d) |  | 4.31d → 4.83d | 24FS-1d → 24 |
| 26 | Verificación y aceptación de la arquitectura del sistema | 2010-07-08 → 2010-07-01 (-7d) | 2010-07-12 → 2010-07-02 (-10d) | 2.06d → 1.43d |  |  |
| 27 | Generación y especificación de construcción | 2010-07-12 → 2010-07-02 (-10d) | 2010-07-20 → 2010-07-12 (-8d) | 6.36d → 5.73d |  |  |
| 28 | Diseño de migración y carga inicial de datos | 2010-07-12 → 2010-07-02 (-10d) | 2010-07-15 → 2010-07-07 (-8d) |  |  |  |
| 29 | Especificación técnica del plan de prueba | 2010-07-12 → 2010-07-02 (-10d) | 2010-07-16 → 2010-07-08 (-8d) |  |  |  |
| 30 | Establecimiento de requisitos de implantación | 2010-07-12 → 2010-07-02 (-10d) | 2010-07-23 → 2010-07-14 (-9d) | 8.65d → 8.03d |  |  |
| 31 | Aprobación del diseño y SI | 2010-07-23 → 2010-07-14 (-9d) | 2010-07-27 → 2010-07-16 (-11d) | 1.93d → 1.43d |  |  |
| 32 | Diseño Aprobado | 2010-07-27 → 2010-07-16 (-11d) | 2010-07-27 → 2010-07-16 (-11d) |  |  |  |
| 33 | **Implementación** | 2010-07-27 → 2010-07-16 (-11d) | 2010-08-11 → 2010-08-02 (-9d) |  |  |  |
| 34 | Preparación del entorno de generación y contrucción | 2010-07-27 → 2010-07-16 (-11d) | 2010-07-29 → 2010-07-20 (-9d) |  |  |  |
| 35 | Generación del código de los componentes y procedimientos | 2010-07-29 → 2010-07-20 (-9d) | 2010-08-11 → 2010-08-02 (-9d) |  |  |  |
| 36 | Elaboración del manual de usuario | 2010-07-27 → 2010-07-16 (-11d) | 2010-08-05 → 2010-07-27 (-9d) |  |  |  |
| 37 | Definición de la formación de usuarios finales | 2010-07-27 → 2010-07-16 (-11d) | 2010-07-30 → 2010-07-21 (-9d) |  |  |  |
| 38 | Construcción de los componentes y procedimientos de carga inicial de datos | 2010-07-27 → 2010-07-16 (-11d) | 2010-08-03 → 2010-07-23 (-11d) |  |  |  |
| 39 | Implementación aprobada | 2010-07-27 → 2010-07-16 (-11d) | 2010-07-27 → 2010-07-16 (-11d) |  |  |  |
| 40 | **Pruebas** | 2010-08-11 → 2010-08-02 (-9d) | 2010-08-19 → 2010-08-09 (-10d) | 5.15d → 4.65d |  |  |
| 41 | Ejecución de las pruebas unitarias | 2010-08-11 → 2010-08-02 (-9d) | 2010-08-13 → 2010-08-04 (-9d) | 2.12d → 2d |  |  |
| 42 | Ejecución de las pruebas de integración | 2010-08-11 → 2010-08-02 (-9d) | 2010-08-17 → 2010-08-04 (-13d) | 2.59d → 2.29d |  |  |
| 43 | Ejecución de las pruebas del sistema | 2010-08-11 → 2010-08-02 (-9d) | 2010-08-17 → 2010-08-05 (-12d) | 3.27d → 2.65d |  |  |
| 44 | Aprobación del SI | 2010-08-17 → 2010-08-05 (-12d) | 2010-08-19 → 2010-08-09 (-10d) |  |  |  |
| 45 | Proyecto Finalizado | 2010-08-11 → 2010-08-02 (-9d) | 2010-08-11 → 2010-08-02 (-9d) |  | 5.15d → 4.65d |  |
| 46 | **Reunión del grupo de trabajo** |  |  | 63.38d → 65.38d | 12.17d → 4.7d |  |
| 50 | Reunión del grupo de trabajo 4 | 2010-05-25 → 2010-05-24 (-1d) | 2010-05-25 → 2010-05-24 (-1d) |  | 60.17d → 54.7d |  |
| 51 | Reunión del grupo de trabajo 5 | 2010-06-01 → 2010-05-31 (-1d) | 2010-06-01 → 2010-05-31 (-1d) |  | 56.17d → 49.7d |  |

## Version 9 (saved 2010-04-28, file p1.mpp)

Note of the change: Sudio archivo m1.mpp a falta del apartado altenativa y seguimiento

Last finish 2010-08-09 → 2010-10-26 (+78d).

Changed:

| ID | Task | Start | Finish | Duration | Total float | Predecessors | Other |
| --- | --- | --- | --- | --- | --- | --- | --- |
| 1 | **Análisis** |  | 2010-06-02 → 2010-06-10 (+8d) | 22.03d → 28.58d |  |  |  |
| 2 | Definición del sistema |  | 2010-05-06 → 2010-05-07 (+1d) | 3.83d → 4.64d | 0d → 0.06d |  | resources Coordinador; Miembro del grupo de trabajo [400%]; Ordenador [600%]; Analista; Pizarra interactiva → Coordinador; Miembro del grupo de trabajo [400%]; Ordenador [600%]; Analista; Pizarra interactiva; Proyector; Red Hat Enterprise Linux 5; Impresora láser color; Servidor Central |
| 3 | Establecimiento de requisitos | 2010-05-06 → 2010-05-07 (+1d) | 2010-05-12 → 2010-05-17 (+5d) | 3.75d → 5.5d |  |  | resources Miembro del grupo de trabajo [200%]; Coordinador; Ordenador [300%] → Miembro del grupo de trabajo [200%]; Coordinador |
| 4 | Identificación de subsistemas | 2010-05-12 → 2010-05-17 (+5d) | 2010-05-14 → 2010-05-21 (+7d) | 2d → 4d |  |  | resources Miembro del grupo de trabajo [200%]; Analista; Ordenador [300%] → Miembro del grupo de trabajo [200%]; Analista |
| 5 | **Elaboración del modelo de datos** | 2010-05-12 → 2010-05-17 (+5d) | 2010-05-26 → 2010-06-02 (+7d) | 9.43d → 12.18d |  |  |  |
| 6 | Elaboración de modelo conceptual y lógica de datos | 2010-05-12 → 2010-05-17 (+5d) | 2010-05-19 → 2010-05-26 (+7d) | 5d → 5.62d |  |  | resources Coordinador; Analista; Ordenador [200%]; Pizarra interactiva → Coordinador; Analista |
| 7 | Normalización | 2010-05-19 → 2010-05-26 (+7d) | 2010-05-24 → 2010-05-28 (+4d) |  |  |  | resources Miembro del grupo de trabajo [400%]; Ordenador [400%] → Miembro del grupo de trabajo [400%] |
| 8 | Especificación de necesidades de carga inicial | 2010-05-24 → 2010-05-28 (+4d) | 2010-05-26 → 2010-06-02 (+7d) |  |  |  | resources Secretario; Miembro del grupo de trabajo [300%]; Ordenador [400%] → Secretario; Miembro del grupo de trabajo [300%] |
| 9 | Elaboración del modelo de procesos | 2010-05-12 → 2010-05-17 (+5d) | 2010-05-20 → 2010-05-26 (+6d) | 5.78d → 5.87d | 3.65d → 5.31d |  | resources Coordinador; Analista; Ordenador [400%]; Miembro del grupo de trabajo [200%] → Coordinador; Analista; Miembro del grupo de trabajo [200%] |
| 10 | Definición de interfaz de usuario | 2010-05-12 → 2010-05-17 (+5d) | 2010-05-20 → 2010-05-26 (+6d) |  | 3.93d → 5.68d |  | resources Usuario experto; Miembro del grupo de trabajo [300%]; Secretario; Ordenador [500%]; Pizarra interactiva → Usuario experto; Miembro del grupo de trabajo [300%]; Secretario |
| 11 | Análisis de consistencia y especificación de requisitos | 2010-05-26 → 2010-06-02 (+7d) | 2010-05-31 → 2010-06-08 (+8d) | 3.28d → 3.78d | 0.94d → 1d |  | resources Analista; Coordinador; Miembro del grupo de trabajo [400%]; Pizarra interactiva; Ordenador [600%] → Analista; Coordinador; Miembro del grupo de trabajo [400%] |
| 12 | Especificación de plan de pruebas | 2010-05-26 → 2010-06-02 (+7d) | 2010-06-01 → 2010-06-09 (+8d) | 4.22d → 4.65d |  |  | resources Usuario experto; Analista; Coordinador; Ordenador [300%] → Usuario experto; Analista; Coordinador |
| 13 | Aprobación del análisis del SI | 2010-06-01 → 2010-06-09 (+8d) | 2010-06-02 → 2010-06-10 (+8d) | 0.8d → 1d |  |  | resources Ordenador; Coordinador; Analista; Pizarra interactiva; Programador; Secretario → Coordinador; Analista; Programador; Secretario |
| 14 | Análisis aprobado | 2010-06-02 → 2010-06-10 (+8d) | 2010-06-02 → 2010-06-10 (+8d) |  |  |  |  |
| 15 | **Diseño** | 2010-06-02 → 2010-06-10 (+8d) | 2010-07-16 → 2010-08-18 (+33d) | 32.01d → 48.97d |  |  |  |
| 16 | Definición de la arquitectura del sistema | 2010-06-02 → 2010-06-10 (+8d) | 2010-06-08 → 2010-06-17 (+9d) | 4.57d → 5.41d |  |  | resources Coordinador; Analista; Ordenador [200%]; Pizarra interactiva; Miembro del grupo de trabajo [400%] → Coordinador; Analista; Miembro del grupo de trabajo [400%] |
| 17 | Diseño de la arquitectura de soporte | 2010-06-08 → 2010-06-17 (+9d) | 2010-06-15 → 2010-06-24 (+9d) | 4.57d → 5.11d |  |  | resources Analista; Coordinador; Miembro del grupo de trabajo [200%]; Ordenador [400%]; Pizarra interactiva → Analista; Coordinador; Miembro del grupo de trabajo [200%] |
| 18 | **Diseño de la arquitectura de módulos de sistema** | 2010-06-08 → 2010-06-17 (+9d) | 2010-07-01 → 2010-07-21 (+20d) | 16.55d → 23.82d |  |  |  |
| 19 | Diseño de módulos del sistema | 2010-06-08 → 2010-06-17 (+9d) | 2010-06-21 → 2010-07-01 (+10d) |  |  |  | resources Miembro del grupo de trabajo [200%]; Ordenador [200%] → Miembro del grupo de trabajo [200%] |
| 20 | Diseño de comucación entre módulos | 2010-06-21 → 2010-07-01 (+10d) | 2010-06-25 → 2010-07-15 (+20d) | 4.27d → 9.04d |  |  | resources Miembro del grupo de trabajo [200%]; Coordinador [200%] → Miembro del grupo de trabajo [200%]; Coordinador |
| 21 | Revisión de la interfaz de usuario | 2010-06-25 → 2010-07-15 (+20d) | 2010-07-01 → 2010-07-21 (+20d) | 3.85d → 4.72d |  |  | resources Coordinador; Analista; Usuario experto; Ordenador [300%]; Pizarra interactiva → Coordinador; Analista; Usuario experto |
| 22 | **Diseño físico de datos** | 2010-06-08 → 2010-06-17 (+9d) | 2010-06-24 → 2010-07-20 (+26d) | 11.72d → 22.18d | 4.83d → 1.64d |  |  |
| 23 | Diseño del modelo físico de datos | 2010-06-08 → 2010-06-17 (+9d) | 2010-06-14 → 2010-06-30 (+16d) | 3.57d → 5d | 4.83d → 1.64d |  | resources Coordinador; Analista; Ordenador [300%]; Miembro del grupo de trabajo → Coordinador; Analista; Miembro del grupo de trabajo |
| 24 | Especificación de los caminos de acceso a los datos | 2010-06-14 → 2010-07-02 (+18d) | 2010-06-18 → 2010-07-14 (+26d) |  | 4.83d → 1.64d | 23 → 23FS+2d | resources Miembro del grupo de trabajo [300%]; Ordenador [300%] → Miembro del grupo de trabajo [300%] |
| 25 | Especificación de la distribución de datos | 2010-06-18 → 2010-07-14 (+26d) | 2010-06-24 → 2010-07-20 (+26d) |  | 4.83d → 1.64d | 24 → 24FS-1d | resources Miembro del grupo de trabajo [200%]; Ordenador [200%] → Miembro del grupo de trabajo [200%] |
| 26 | Verificación y aceptación de la arquitectura del sistema | 2010-07-01 → 2010-07-21 (+20d) | 2010-07-02 → 2010-07-23 (+21d) |  |  |  | resources Coordinador; Miembro del grupo de trabajo [400%]; Ordenador [500%] → Coordinador; Miembro del grupo de trabajo [400%] |
| 27 | Generación y especificación de construcción | 2010-07-02 → 2010-07-23 (+21d) | 2010-07-12 → 2010-08-03 (+22d) | 5.73d → 6.95d |  |  | resources Coordinador; Analista; Ordenador [200%] → Coordinador; Analista |
| 28 | Diseño de migración y carga inicial de datos | 2010-07-02 → 2010-07-23 (+21d) | 2010-07-07 → 2010-07-28 (+21d) |  |  |  | resources Miembro del grupo de trabajo [200%]; Ordenador [200%] → Miembro del grupo de trabajo [200%] |
| 29 | Especificación técnica del plan de prueba | 2010-07-02 → 2010-07-23 (+21d) | 2010-07-08 → 2010-07-29 (+21d) |  |  |  | resources Miembro del grupo de trabajo [200%]; Ordenador [200%] → Miembro del grupo de trabajo [200%] |
| 30 | Establecimiento de requisitos de implantación | 2010-07-02 → 2010-07-28 (+26d) | 2010-07-14 → 2010-08-17 (+34d) | 8.03d → 12.52d |  |  | resources Miembro del grupo de trabajo; Coordinador; Ordenador [200%] → Miembro del grupo de trabajo; Coordinador |
| 31 | Aprobación del diseño y SI | 2010-07-14 → 2010-08-17 (+34d) | 2010-07-16 → 2010-08-18 (+33d) |  |  |  | resources Coordinador; Secretario; Pizarra interactiva; Proyector; Ordenador → Coordinador; Secretario |
| 32 | Diseño Aprobado | 2010-07-16 → 2010-08-18 (+33d) | 2010-07-16 → 2010-08-18 (+33d) |  |  |  |  |
| 33 | **Implementación** | 2010-07-16 → 2010-08-18 (+33d) | 2010-08-02 → 2010-10-01 (+60d) | 11.39d → 31.6d |  |  |  |
| 34 | Preparación del entorno de generación y contrucción | 2010-07-16 → 2010-08-18 (+33d) | 2010-07-20 → 2010-08-23 (+34d) | 2.09d → 3.13d |  |  | resources Programador; Ordenador; Miembro del grupo de trabajo → Programador; Miembro del grupo de trabajo |
| 35 | Generación del código de los componentes y procedimientos | 2010-07-20 → 2010-09-10 (+52d) | 2010-08-02 → 2010-09-24 (+53d) |  | 0d → 5d |  | resources Programador; Ordenador → Programador |
| 36 | Elaboración del manual de usuario | 2010-07-16 → 2010-08-18 (+33d) | 2010-07-27 → 2010-09-07 (+42d) | 7.07d → 13.73d | 4.32d → 0d |  | resources Programador; Ordenador [200%]; Secretario → Programador; Secretario |
| 37 | Definición de la formación de usuarios finales | 2010-07-16 → 2010-09-07 (+53d) | 2010-07-21 → 2010-09-10 (+51d) |  | 6.39d → 0d |  | resources Programador; Ordenador → Programador |
| 38 | Construcción de los componentes y procedimientos de carga inicial de datos | 2010-07-16 → 2010-09-24 (+70d) | 2010-07-23 → 2010-10-01 (+70d) |  | 6.39d → 0d |  | resources Programador; Ordenador → Programador |
| 39 | Implementación aprobada | 2010-07-16 → 2010-10-01 (+77d) | 2010-07-16 → 2010-10-01 (+77d) |  | 11.39d → 0d | none → 38 |  |
| 40 | **Pruebas** | 2010-08-02 → 2010-10-01 (+60d) | 2010-08-09 → 2010-10-26 (+78d) | 4.65d → 17.37d |  |  |  |
| 41 | Ejecución de las pruebas unitarias | 2010-08-02 → 2010-10-01 (+60d) | 2010-08-04 → 2010-10-07 (+64d) | 2d → 4.5d |  |  | resources Usuario experto; Coordinador; Pizarra interactiva; Ordenador [200%] → Usuario experto; Coordinador |
| 42 | Ejecución de las pruebas de integración | 2010-08-02 → 2010-10-07 (+66d) | 2010-08-04 → 2010-10-14 (+71d) | 2.29d → 5.45d |  |  | resources Usuario experto; Coordinador; Pizarra interactiva; Ordenador [200%] → Usuario experto; Coordinador |
| 43 | Ejecución de las pruebas del sistema | 2010-08-02 → 2010-10-13 (+72d) | 2010-08-05 → 2010-10-22 (+78d) | 2.65d → 6.55d |  |  | resources Usuario experto; Coordinador; Pizarra interactiva; Ordenador [200%] → Usuario experto; Coordinador |
| 44 | Aprobación del SI | 2010-08-05 → 2010-10-22 (+78d) | 2010-08-09 → 2010-10-26 (+78d) | 2d → 2.5d |  |  | resources Secretario; Coordinador; Proyector; Ordenador → Secretario; Coordinador |
| 45 | Proyecto Finalizado | 2010-08-02 → 2010-10-26 (+85d) | 2010-08-02 → 2010-10-26 (+85d) |  | 4.65d → 0d | none → 44 |  |
| 47 | Reunión del grupo de trabajo 1 |  |  |  | 69.7d → 126.15d |  | resources Miembro del grupo de trabajo [400%]; Coordinador; Ordenador; Pizarra interactiva; Proyector → Miembro del grupo de trabajo [400%]; Coordinador; Sala de juntas |
| 48 | Reunión del grupo de trabajo 2 |  |  |  | 64.7d → 121.15d |  | resources Miembro del grupo de trabajo [400%]; Coordinador; Ordenador; Pizarra interactiva; Proyector → Miembro del grupo de trabajo [400%]; Coordinador; Sala de juntas |
| 49 | Reunión del grupo de trabajo 3 |  |  |  | 59.7d → 116.15d |  | resources Miembro del grupo de trabajo [400%]; Coordinador; Ordenador; Pizarra interactiva; Proyector → Miembro del grupo de trabajo [400%]; Coordinador; Sala de juntas |
| 50 | Reunión del grupo de trabajo 4 | 2010-05-24 → 2010-05-25 (+1d) | 2010-05-24 → 2010-05-25 (+1d) |  | 54.7d → 110.15d |  | resources Miembro del grupo de trabajo [400%]; Coordinador; Ordenador; Pizarra interactiva; Proyector → Miembro del grupo de trabajo [400%]; Coordinador; Sala de juntas |
| 51 | Reunión del grupo de trabajo 5 | 2010-05-31 → 2010-06-01 (+1d) | 2010-05-31 → 2010-06-01 (+1d) |  | 49.7d → 105.15d |  | resources Miembro del grupo de trabajo [400%]; Coordinador; Ordenador; Pizarra interactiva; Proyector → Miembro del grupo de trabajo [400%]; Coordinador; Sala de juntas |
| 52 | Reunión del grupo de trabajo 6 |  |  |  | 44.7d → 101.15d |  | resources Miembro del grupo de trabajo [400%]; Coordinador; Ordenador; Pizarra interactiva; Proyector → Miembro del grupo de trabajo [400%]; Coordinador; Sala de juntas |
| 53 | Reunión del grupo de trabajo 7 |  |  |  | 39.7d → 96.15d |  | resources Miembro del grupo de trabajo [400%]; Coordinador; Ordenador; Pizarra interactiva; Proyector → Miembro del grupo de trabajo [400%]; Coordinador; Sala de juntas |
| 54 | Reunión del grupo de trabajo 8 |  |  |  | 34.7d → 91.15d |  | resources Miembro del grupo de trabajo [400%]; Coordinador; Ordenador; Pizarra interactiva; Proyector → Miembro del grupo de trabajo [400%]; Coordinador; Sala de juntas |
| 55 | Reunión del grupo de trabajo 9 |  |  |  | 29.7d → 86.15d |  | resources Miembro del grupo de trabajo [400%]; Coordinador; Ordenador; Pizarra interactiva; Proyector → Miembro del grupo de trabajo [400%]; Coordinador; Sala de juntas |
| 56 | Reunión del grupo de trabajo 10 |  |  |  | 24.7d → 81.15d |  | resources Miembro del grupo de trabajo [400%]; Coordinador; Ordenador; Pizarra interactiva; Proyector → Miembro del grupo de trabajo [400%]; Coordinador; Sala de juntas |
| 57 | Reunión del grupo de trabajo 11 |  |  |  | 19.7d → 76.15d |  | resources Miembro del grupo de trabajo [400%]; Coordinador; Ordenador; Pizarra interactiva; Proyector → Miembro del grupo de trabajo [400%]; Coordinador; Sala de juntas |
| 58 | Reunión del grupo de trabajo 12 |  |  |  | 14.7d → 71.15d |  | resources Miembro del grupo de trabajo [400%]; Coordinador; Ordenador; Pizarra interactiva; Proyector → Miembro del grupo de trabajo [400%]; Coordinador; Sala de juntas |
| 59 | Reunión del grupo de trabajo 13 |  |  |  | 9.7d → 66.15d |  | resources Miembro del grupo de trabajo [400%]; Coordinador; Ordenador; Pizarra interactiva; Proyector → Miembro del grupo de trabajo [400%]; Coordinador; Sala de juntas |
| 60 | Reunión del grupo de trabajo 14 |  |  |  | 4.7d → 61.15d |  | resources Miembro del grupo de trabajo [400%]; Coordinador; Ordenador; Pizarra interactiva; Proyector → Miembro del grupo de trabajo [400%]; Coordinador; Sala de juntas |

## Version 10 (data date 2010-07-20, saved 2010-04-29, file p1seguimiento.mpp)

Note of the change: Se ha finalizado el trabajo con los archivos mpp

Last finish stays 2010-10-26. Complete tasks 0 → 30.

Changed:

| ID | Task | Start | Finish | Complete | Total float | Other |
| --- | --- | --- | --- | --- | --- | --- |
| 1 | **Análisis** | 2010-05-03 A | 2010-06-10 A | 0% → 100% | 0d → none | baseline start none → 2010-05-03; baseline finish none → 2010-06-10 |
| 2 | Definición del sistema | 2010-05-03 A | 2010-05-07 A | 0% → 100% | 0.06d → none | baseline start none → 2010-05-03; baseline finish none → 2010-05-07 |
| 3 | Establecimiento de requisitos | 2010-05-07 A | 2010-05-17 A | 0% → 100% | 0d → none | baseline start none → 2010-05-07; baseline finish none → 2010-05-17 |
| 4 | Identificación de subsistemas | 2010-05-17 A | 2010-05-21 A | 0% → 100% | 0d → none | baseline start none → 2010-05-17; baseline finish none → 2010-05-21 |
| 5 | **Elaboración del modelo de datos** | 2010-05-17 A | 2010-06-02 A | 0% → 100% | 0d → none | baseline start none → 2010-05-17; baseline finish none → 2010-06-02 |
| 6 | Elaboración de modelo conceptual y lógica de datos | 2010-05-17 A | 2010-05-26 A | 0% → 100% | 0d → none | baseline start none → 2010-05-17; baseline finish none → 2010-05-26 |
| 7 | Normalización | 2010-05-26 A | 2010-05-28 A | 0% → 100% | 0d → none | baseline start none → 2010-05-26; baseline finish none → 2010-05-28 |
| 8 | Especificación de necesidades de carga inicial | 2010-05-28 A | 2010-06-02 A | 0% → 100% | 0d → none | baseline start none → 2010-05-28; baseline finish none → 2010-06-02 |
| 9 | Elaboración del modelo de procesos | 2010-05-17 A | 2010-05-26 A | 0% → 100% | 5.31d → none | baseline start none → 2010-05-17; baseline finish none → 2010-05-26 |
| 10 | Definición de interfaz de usuario | 2010-05-17 A | 2010-05-26 A | 0% → 100% | 5.68d → none | baseline start none → 2010-05-17; baseline finish none → 2010-05-26 |
| 11 | Análisis de consistencia y especificación de requisitos | 2010-06-02 A | 2010-06-08 A | 0% → 100% | 1d → none | baseline start none → 2010-06-02; baseline finish none → 2010-06-08 |
| 12 | Especificación de plan de pruebas | 2010-06-02 A | 2010-06-09 A | 0% → 100% | 0d → none | baseline start none → 2010-06-02; baseline finish none → 2010-06-09 |
| 13 | Aprobación del análisis del SI | 2010-06-09 A | 2010-06-10 A | 0% → 100% | 0d → none | baseline start none → 2010-06-09; baseline finish none → 2010-06-10 |
| 14 | Análisis aprobado | 2010-06-10 A | 2010-06-10 A | 0% → 100% | 0d → none | baseline start none → 2010-06-10; baseline finish none → 2010-06-10 |
| 15 | **Diseño** | 2010-06-10 A |  | 0% → 59% |  | baseline start none → 2010-06-10; baseline finish none → 2010-08-18 |
| 16 | Definición de la arquitectura del sistema | 2010-06-10 A | 2010-06-17 A | 0% → 100% | 0d → none | baseline start none → 2010-06-10; baseline finish none → 2010-06-17 |
| 17 | Diseño de la arquitectura de soporte | 2010-06-17 A | 2010-06-24 A | 0% → 100% | 0d → none | baseline start none → 2010-06-17; baseline finish none → 2010-06-24 |
| 18 | **Diseño de la arquitectura de módulos de sistema** | 2010-06-17 A |  | 0% → 92% |  | baseline start none → 2010-06-17; baseline finish none → 2010-07-21 |
| 19 | Diseño de módulos del sistema | 2010-06-17 A | 2010-07-01 A | 0% → 100% | 0d → none | baseline start none → 2010-06-17; baseline finish none → 2010-07-01 |
| 20 | Diseño de comucación entre módulos | 2010-07-01 A | 2010-07-15 A | 0% → 100% | 0d → none | baseline start none → 2010-07-01; baseline finish none → 2010-07-15 |
| 21 | Revisión de la interfaz de usuario | 2010-07-15 A |  | 0% → 64% |  | baseline start none → 2010-07-15; baseline finish none → 2010-07-21 |
| 22 | **Diseño físico de datos** | 2010-06-17 A |  | 0% → 99% |  | baseline start none → 2010-06-17; baseline finish none → 2010-07-20 |
| 23 | Diseño del modelo físico de datos | 2010-06-17 A | 2010-06-30 A | 0% → 100% | 1.64d → none | baseline start none → 2010-06-17; baseline finish none → 2010-06-30 |
| 24 | Especificación de los caminos de acceso a los datos | 2010-07-02 A | 2010-07-14 A | 0% → 100% | 1.64d → none | baseline start none → 2010-07-02; baseline finish none → 2010-07-14 |
| 25 | Especificación de la distribución de datos | 2010-07-14 A |  | 0% → 99% |  | baseline start none → 2010-07-14; baseline finish none → 2010-07-20 |
| 26 | Verificación y aceptación de la arquitectura del sistema |  |  |  |  | baseline start none → 2010-07-21; baseline finish none → 2010-07-23 |
| 27 | Generación y especificación de construcción |  |  |  |  | baseline start none → 2010-07-23; baseline finish none → 2010-08-03 |
| 28 | Diseño de migración y carga inicial de datos |  |  |  |  | baseline start none → 2010-07-23; baseline finish none → 2010-07-28 |
| 29 | Especificación técnica del plan de prueba |  |  |  |  | baseline start none → 2010-07-23; baseline finish none → 2010-07-29 |
| 30 | Establecimiento de requisitos de implantación |  |  |  |  | baseline start none → 2010-07-28; baseline finish none → 2010-08-17 |
| 31 | Aprobación del diseño y SI |  |  |  |  | baseline start none → 2010-08-17; baseline finish none → 2010-08-18 |
| 32 | Diseño Aprobado |  |  |  |  | baseline start none → 2010-08-18; baseline finish none → 2010-08-18 |
| 33 | **Implementación** |  |  |  |  | baseline start none → 2010-08-18; baseline finish none → 2010-10-01 |
| 34 | Preparación del entorno de generación y contrucción |  |  |  |  | baseline start none → 2010-08-18; baseline finish none → 2010-08-23 |
| 35 | Generación del código de los componentes y procedimientos |  |  |  |  | baseline start none → 2010-09-10; baseline finish none → 2010-09-24 |
| 36 | Elaboración del manual de usuario |  |  |  |  | baseline start none → 2010-08-18; baseline finish none → 2010-09-07 |
| 37 | Definición de la formación de usuarios finales |  |  |  |  | baseline start none → 2010-09-07; baseline finish none → 2010-09-10 |
| 38 | Construcción de los componentes y procedimientos de carga inicial de datos |  |  |  |  | baseline start none → 2010-09-24; baseline finish none → 2010-10-01 |
| 39 | Implementación aprobada |  |  |  |  | baseline start none → 2010-10-01; baseline finish none → 2010-10-01 |
| 40 | **Pruebas** |  |  |  |  | baseline start none → 2010-10-01; baseline finish none → 2010-10-26 |
| 41 | Ejecución de las pruebas unitarias |  |  |  |  | baseline start none → 2010-10-01; baseline finish none → 2010-10-07 |
| 42 | Ejecución de las pruebas de integración |  |  |  |  | baseline start none → 2010-10-07; baseline finish none → 2010-10-14 |
| 43 | Ejecución de las pruebas del sistema |  |  |  |  | baseline start none → 2010-10-13; baseline finish none → 2010-10-22 |
| 44 | Aprobación del SI |  |  |  |  | baseline start none → 2010-10-22; baseline finish none → 2010-10-26 |
| 45 | Proyecto Finalizado |  |  |  |  | baseline start none → 2010-10-26; baseline finish none → 2010-10-26 |
| 46 | **Reunión del grupo de trabajo** | 2010-05-03 A |  | 0% → 86% |  | baseline start none → 2010-05-03; baseline finish none → 2010-08-02 |
| 47 | Reunión del grupo de trabajo 1 | 2010-05-03 A | 2010-05-03 A | 0% → 100% | 126.15d → none | baseline start none → 2010-05-03; baseline finish none → 2010-05-03 |
| 48 | Reunión del grupo de trabajo 2 | 2010-05-10 A | 2010-05-10 A | 0% → 100% | 121.15d → none | baseline start none → 2010-05-10; baseline finish none → 2010-05-10 |
| 49 | Reunión del grupo de trabajo 3 | 2010-05-17 A | 2010-05-17 A | 0% → 100% | 116.15d → none | baseline start none → 2010-05-17; baseline finish none → 2010-05-17 |
| 50 | Reunión del grupo de trabajo 4 | 2010-05-25 A | 2010-05-25 A | 0% → 100% | 110.15d → none | baseline start none → 2010-05-25; baseline finish none → 2010-05-25 |
| 51 | Reunión del grupo de trabajo 5 | 2010-06-01 A | 2010-06-01 A | 0% → 100% | 105.15d → none | baseline start none → 2010-06-01; baseline finish none → 2010-06-01 |
| 52 | Reunión del grupo de trabajo 6 | 2010-06-07 A | 2010-06-07 A | 0% → 100% | 101.15d → none | baseline start none → 2010-06-07; baseline finish none → 2010-06-07 |
| 53 | Reunión del grupo de trabajo 7 | 2010-06-14 A | 2010-06-14 A | 0% → 100% | 96.15d → none | baseline start none → 2010-06-14; baseline finish none → 2010-06-14 |
| 54 | Reunión del grupo de trabajo 8 | 2010-06-21 A | 2010-06-21 A | 0% → 100% | 91.15d → none | baseline start none → 2010-06-21; baseline finish none → 2010-06-21 |
| 55 | Reunión del grupo de trabajo 9 | 2010-06-28 A | 2010-06-28 A | 0% → 100% | 86.15d → none | baseline start none → 2010-06-28; baseline finish none → 2010-06-28 |
| 56 | Reunión del grupo de trabajo 10 | 2010-07-05 A | 2010-07-05 A | 0% → 100% | 81.15d → none | baseline start none → 2010-07-05; baseline finish none → 2010-07-05 |
| 57 | Reunión del grupo de trabajo 11 | 2010-07-12 A | 2010-07-12 A | 0% → 100% | 76.15d → none | baseline start none → 2010-07-12; baseline finish none → 2010-07-12 |
| 58 | Reunión del grupo de trabajo 12 | 2010-07-19 A | 2010-07-19 A | 0% → 100% | 71.15d → none | baseline start none → 2010-07-19; baseline finish none → 2010-07-19 |
| 59 | Reunión del grupo de trabajo 13 |  |  |  |  | baseline start none → 2010-07-26; baseline finish none → 2010-07-26 |
| 60 | Reunión del grupo de trabajo 14 |  |  |  |  | baseline start none → 2010-08-02; baseline finish none → 2010-08-02 |
