# P1 con sobreasignaciones resueltas y delimitaciones

How a schedule from MS Project changed from version to version. A marks actual dates.

## Version 1 (saved 2009-04-23, file P1_-_Alternativa1.mpp)

Note of the change: Ejemplo de tecnobit

| ID | WBS | Task | Duration | Start | Finish | Predecessors | Total float | Constraint |
| --- | --- | --- | --- | --- | --- | --- | --- | --- |
| 1 | 1 | **PS GestPerson** | 486d | 2009-03-23 | 2011-01-31 |  | 0d |  |
| 2 | 1.1 | **Reunion director** | 54d | 2009-04-15 | 2010-12-15 |  | 4d |  |
| 3 |  | Reunión Director Empresa 1 | 1h | 2009-04-15 | 2009-04-15 |  | 57.88d | start no earlier than 2009-04-15 |
| 4 |  | Reunión Director Empresa 2 | 1h | 2009-06-15 | 2009-06-15 |  | 52.62d | start no earlier than 2009-06-15 |
| 5 |  | Reunión Director Empresa 3 | 1h | 2009-08-17 | 2009-08-17 |  | 47d | start no earlier than 2009-08-15 |
| 6 |  | Reunión Director Empresa 4 | 1h | 2009-10-15 | 2009-10-15 |  | 41.75d | start no earlier than 2009-10-15 |
| 7 |  | Reunión Director Empresa 5 | 1h | 2009-12-15 | 2009-12-15 |  | 36.38d | start no earlier than 2009-12-15 |
| 8 |  | Reunión Director Empresa 6 | 1h | 2010-02-15 | 2010-02-15 |  | 30.88d | start no earlier than 2010-02-15 |
| 9 |  | Reunión Director Empresa 7 | 1h | 2010-04-15 | 2010-04-15 |  | 25.5d | start no earlier than 2010-04-15 |
| 10 |  | Reunión Director Empresa 8 | 1h | 2010-06-15 | 2010-06-15 |  | 20.12d | start no earlier than 2010-06-15 |
| 11 |  | Reunión Director Empresa 9 | 1h | 2010-08-16 | 2010-08-16 |  | 14.62d | start no earlier than 2010-08-15 |
| 12 |  | Reunión con el Director de la Empresa 10 | 1h | 2010-10-15 | 2010-10-15 |  | 9.25d | start no earlier than 2010-10-15 |
| 13 |  | Reunión con el Director de la Empresa 11 | 1h | 2010-12-15 | 2010-12-15 |  | 4d | start no earlier than 2010-12-15 |
| 14 | 1.2 | **Análisis de Requisitos** | 126.56d | 2009-03-23 | 2009-09-15 |  | 91d |  |
| 15 | 1.2.1 | **Definir modelo del sistema** | 42d | 2009-03-23 | 2009-05-19 |  | 90d |  |
| 16 |  | Identificación del Entorno Tecnológico | 25.88d | 2009-03-23 | 2009-04-23 |  | 85.5d |  |
| 17 |  | Especificación de Estándares y Normas | 18.25d | 2009-04-24 | 2009-05-19 | 16 | 84.77d |  |
| 18 |  | determinar usuarios finales | 11.75d | 2009-05-05 | 2009-05-19 | 17FF | 80.14d |  |
| 19 | 1.2.2 | **Establecimiento de Requisitos** | 46.56d | 2009-05-20 | 2009-07-23 | 15 | 90d |  |
| 20 |  | Obtención de Requisitos | 23d | 2009-05-20 | 2009-06-19 |  | 84.77d |  |
| 21 |  | Analizar requisitos | 22d | 2009-06-23 | 2009-07-23 | 20FS+2d | 91d |  |
| 22 | 1.2.3 | **Determinar el modelo de interfaz** | 38d | 2009-07-23 | 2009-09-15 | 19 | 91.44d |  |
| 23 |  | Especificar de requisitos | 17d | 2009-07-23 | 2009-08-17 |  | 91.44d |  |
| 24 |  | Especificación del Comportamiento Dinámico de la Interfaz | 20d | 2009-08-18 | 2009-09-15 | 23FS+1d | 81.58d |  |
| 25 |  | Análisis de Casos de Uso | 17d | 2009-07-09 | 2009-08-03 | 19FS-10d | 98.58d |  |
| 26 |  | Análisis de Clases | 13d | 2009-08-04 | 2009-08-21 | 25FS+1d | 98.58d |  |
| 27 |  | Fin analisis de requisitos | 0d | 2009-09-15 | 2009-09-15 | 26, 22 | 81.58d |  |
| 28 | 1.3 | **Diseño** | 70.75d | 2009-09-15 | 2009-12-23 | 14 | 90.88d |  |
| 29 | 1.3.1 | **Definir arquitectura** | 58d | 2009-09-15 | 2009-12-04 |  | 90.88d |  |
| 30 |  | Identificar requisitos de diseño | 37.5d | 2009-09-15 | 2009-11-09 |  | 90.44d |  |
| 31 |  | Especificar estandares | 50d | 2009-09-15 | 2009-11-25 | 30SS | 97.88d |  |
| 32 |  | Especificar requisitos de seguridad | 19.94d | 2009-11-09 | 2009-12-04 | 30 | 90.44d |  |
| 33 |  | Diseño de Casos de Uso Reales | 20.5d | 2009-09-15 | 2009-10-30 | 29SS | 128.75d | start no earlier than 2009-08-24 |
| 34 |  | Diseño de Clases | 16.19d | 2009-09-15 | 2009-10-07 | 33SS | 131.25d |  |
| 35 |  | Diseño de Migración y Carga Inicial de Datos | 15d | 2009-10-07 | 2009-10-28 | 34 | 130.31d |  |
| 36 | 1.3.5 | **Establecimiento de Requisitos de Implantación** | 27.25d | 2009-11-16 | 2009-12-23 | 29FS-2.5% | 90.88d |  |
| 37 |  | Especificación de Requisitos de Documentación de Usuario | 19.69d | 2009-11-16 | 2009-12-10 |  | 90.69d |  |
| 38 |  | Especificación de Requisitos de Implantación | 9.56d | 2009-12-10 | 2009-12-23 | 37 | 90.69d |  |
| 39 |  | Especificación Técnica de Plan de Pruebas | 13.38d | 2009-09-15 | 2009-10-02 | 34SS | 149.12d |  |
| 40 |  | Fin del diseño | 0d | 2009-12-23 | 2009-12-23 | 33, 35, 36, 39 | 90.88d |  |
| 41 | 1.4 | **Implementacion** | 101d | 2009-12-23 | 2010-05-13 | 28 | 90.69d |  |
| 42 | 1.4.1 | **Generación del Código de los Componentes y Procedimientos** | 63d | 2009-12-23 | 2010-03-22 |  | 90.88d |  |
| 43 |  | Implementar codigo | 38d | 2009-12-23 | 2010-02-15 |  | 90.88d |  |
| 44 |  | Implementar codigo de seguridad | 25d | 2010-02-15 | 2010-03-22 | 43 | 90.88d |  |
| 45 |  | Elaboración de los Manuales de Usuario | 38d | 2010-03-22 | 2010-05-13 | 42 | 90.69d |  |
| 46 |  | Definición de la Formación de Usuarios Finales | 37d | 2009-12-23 | 2010-02-12 | 42SS | 154.88d |  |
| 47 |  | Construcción de Componentes de Migración y Carga Inicial de Datos | 36.25d | 2009-12-23 | 2010-02-09 | 46SS | 157.69d |  |
| 48 |  | Fin de la implementacion | 0d | 2010-05-13 | 2010-05-13 | 45, 46, 47 | 90.69d |  |
| 49 | 1.5 | **Banco de pruebas** | 28d | 2010-05-13 | 2010-06-22 | 41 | 90.69d |  |
| 50 |  | Ejecución de las Pruebas Unitarias | 28d | 2010-05-13 | 2010-06-22 |  | 90.69d |  |
| 51 |  | Ejecutar pruebas de integracion | 23d | 2010-05-13 | 2010-06-15 | 50SS | 95.69d |  |
| 52 |  | Integración de las Pruebas del Sistema | 16.12d | 2010-05-13 | 2010-06-03 | 51SS | 103.88d |  |
| 53 |  | Fin del banco de Pruebas | 0d | 2010-06-22 | 2010-06-22 | 50, 51, 52 | 91.88d |  |
| 54 | 1.6 | **Implantacion** | 159.69d | 2010-06-22 | 2011-01-31 | 49 | 0d |  |
| 55 | 1.6.1 | **Establecimiento del Plan de Implantación** | 27.81d | 2010-06-22 | 2010-07-30 |  | 91.88d |  |
| 56 |  | Definición del Plan de Implantación | 12.88d | 2010-06-22 | 2010-07-08 |  | 91.88d |  |
| 57 |  | Especificación del Equipo de Implantación | 17.12d | 2010-07-08 | 2010-07-30 | 56 | 92.88d |  |
| 58 |  | Pruebas de Implantación del Sistema | 17.12d | 2010-08-02 | 2010-08-24 | 55FS+1d | 97.88d |  |
| 59 |  | Establecimiento del Acuerdo de Nivel de Servicio | 23.38d | 2010-07-30 | 2010-08-31 | 55, 58FF | 92.69d | finish no later than 2011-01-09 |
| 60 |  | Presentación y Aprobación del Sistema | 17d | 2011-01-10 | 2011-01-31 | 59FS+1d | 0d | must finish on 2011-01-31 |
| 61 |  | Preparación de Mantenimiento | 17.12d | 2010-06-23 | 2010-07-15 | 55SS+1d | 142.69d |  |
| 62 |  | Fin del implantacion | 0d | 2011-01-31 | 2011-01-31 | 60, 61 | 0d |  |
| 63 |  | Fin de proyecto | 0d | 2011-01-31 | 2011-01-31 | 54 | 0d |  |

## Version 2 (saved 2009-04-23, file P1_-_Alternativa2.mpp)

Note of the change: Ejemplo de tecnobit

Last finish 2011-01-31 → 2010-12-15 (-47d).

Changed:

| ID | Task | Start | Finish | Duration | Total float | Other |
| --- | --- | --- | --- | --- | --- | --- |
| 1 | **PS GestPerson** |  | 2011-01-31 → 2010-12-15 (-47d) | 486d → 453d |  |  |
| 28 | **Diseño** |  | 2009-12-23 → 2009-12-30 (+7d) | 70.75d → 76.42d | 90.88d → 79.35d |  |
| 29 | **Definir arquitectura** |  | 2009-12-04 → 2009-12-16 (+12d) | 58d → 65.56d | 90.88d → 79.35d |  |
| 30 | Identificar requisitos de diseño |  | 2009-11-09 → 2009-11-18 (+9d) | 37.5d → 44.62d | 90.44d → 85.2d |  |
| 31 | Especificar estandares |  | 2009-11-25 → 2009-10-28 (-28d) | 50d → 30.19d | 97.88d → 119.58d | resources Analista → Analista [200%] |
| 32 | Especificar requisitos de seguridad | 2009-11-09 → 2009-11-18 (+9d) | 2009-12-04 → 2009-12-16 (+12d) |  | 90.44d → 85.2d |  |
| 33 | Diseño de Casos de Uso Reales |  | 2009-10-30 → 2009-10-07 (-23d) | 20.5d → 15.5d | 128.75d → 131.31d | constraint start no earlier than 2009-08-24 → none |
| 36 | **Establecimiento de Requisitos de Implantación** | 2009-11-16 → 2009-11-23 (+7d) | 2009-12-23 → 2009-12-30 (+7d) |  | 90.88d → 79.35d |  |
| 37 | Especificación de Requisitos de Documentación de Usuario | 2009-11-16 → 2009-11-23 (+7d) | 2009-12-10 → 2009-12-18 (+8d) |  | 90.69d → 85.06d |  |
| 38 | Especificación de Requisitos de Implantación | 2009-12-10 → 2009-12-18 (+8d) | 2009-12-23 → 2009-12-30 (+7d) | 9.56d → 9.69d | 90.69d → 85.06d |  |
| 40 | Fin del diseño | 2009-12-23 → 2009-12-30 (+7d) | 2009-12-23 → 2009-12-30 (+7d) |  | 90.88d → 85.2d |  |
| 41 | **Implementacion** | 2009-12-23 → 2009-12-30 (+7d) | 2010-05-13 → 2010-04-13 (-30d) | 101d → 73.67d | 90.69d → 79.35d |  |
| 42 | **Generación del Código de los Componentes y Procedimientos** | 2009-12-23 → 2009-12-30 (+7d) | 2010-03-22 → 2010-02-18 (-32d) | 63d → 35.67d | 90.88d → 79.35d |  |
| 43 | Implementar codigo | 2009-12-23 → 2009-12-30 (+7d) | 2010-02-15 → 2010-01-26 (-20d) | 38d → 20.75d | 90.88d → 79.35d | resources Programador [200%] → Programador [200%]; Programador Subcontratado [200%] |
| 44 | Implementar codigo de seguridad | 2010-02-15 → 2010-01-26 (-20d) | 2010-03-22 → 2010-02-18 (-32d) | 25d → 17.98d | 90.88d → 79.35d | resources Analista [200%]; Programador [200%] → Analista [200%]; Programador [200%]; Programador Subcontratado [200%] |
| 45 | Elaboración de los Manuales de Usuario | 2010-03-22 → 2010-02-18 (-32d) | 2010-05-13 → 2010-04-13 (-30d) |  | 90.69d → 79.35d |  |
| 46 | Definición de la Formación de Usuarios Finales | 2009-12-23 → 2009-12-30 (+7d) | 2010-02-12 → 2010-02-19 (+7d) |  | 154.88d → 116.02d |  |
| 47 | Construcción de Componentes de Migración y Carga Inicial de Datos | 2009-12-23 → 2009-12-30 (+7d) | 2010-02-09 → 2010-02-16 (+7d) |  | 157.69d → 152.02d |  |
| 48 | Fin de la implementacion | 2010-05-13 → 2010-04-13 (-30d) | 2010-05-13 → 2010-04-13 (-30d) |  | 90.69d → 79.35d |  |
| 49 | **Banco de pruebas** | 2010-05-13 → 2010-04-13 (-30d) | 2010-06-22 → 2010-05-21 (-32d) | 28d → 27.81d | 90.69d → 79.35d |  |
| 50 | Ejecución de las Pruebas Unitarias | 2010-05-13 → 2010-04-13 (-30d) | 2010-06-22 → 2010-05-21 (-32d) |  | 90.69d → 79.35d |  |
| 51 | Ejecutar pruebas de integracion | 2010-05-13 → 2010-04-13 (-30d) | 2010-06-15 → 2010-05-14 (-32d) |  | 95.69d → 84.35d |  |
| 52 | Integración de las Pruebas del Sistema | 2010-05-13 → 2010-04-13 (-30d) | 2010-06-03 → 2010-05-04 (-30d) | 16.12d → 16d | 103.88d → 92.35d |  |
| 53 | Fin del banco de Pruebas | 2010-06-22 → 2010-05-21 (-32d) | 2010-06-22 → 2010-05-21 (-32d) |  | 91.88d → 79.54d |  |
| 54 | **Implantacion** | 2010-06-22 → 2010-05-21 (-32d) | 2011-01-31 → 2010-08-24 (-160d) | 159.69d → 67d | 0d → 79.54d |  |
| 55 | **Establecimiento del Plan de Implantación** | 2010-06-22 → 2010-05-21 (-32d) | 2010-07-30 → 2010-06-30 (-30d) | 27.81d → 28.19d | 91.88d → 79.54d |  |
| 56 | Definición del Plan de Implantación | 2010-06-22 → 2010-05-21 (-32d) | 2010-07-08 → 2010-06-08 (-30d) |  | 91.88d → 79.35d |  |
| 57 | Especificación del Equipo de Implantación | 2010-07-08 → 2010-06-08 (-30d) | 2010-07-30 → 2010-06-30 (-30d) |  | 92.88d → 79.35d |  |
| 58 | Pruebas de Implantación del Sistema | 2010-08-02 → 2010-07-01 (-32d) | 2010-08-24 → 2010-07-23 (-32d) |  | 97.88d → 85.35d |  |
| 59 | Establecimiento del Acuerdo de Nivel de Servicio | 2010-07-30 → 2010-06-30 (-30d) | 2010-08-31 → 2010-07-30 (-32d) | 23.38d → 23.12d | 92.69d → 80.35d |  |
| 60 | Presentación y Aprobación del Sistema | 2011-01-10 → 2010-08-02 (-161d) | 2011-01-31 → 2010-08-24 (-160d) | 17d → 17.12d | 0d → 81.54d | constraint must finish on 2011-01-31 → none |
| 61 | Preparación de Mantenimiento | 2010-06-23 → 2010-05-24 (-30d) | 2010-07-15 → 2010-06-15 (-30d) |  | 142.69d → 131.54d |  |
| 62 | Fin del implantacion | 2011-01-31 → 2010-08-24 (-160d) | 2011-01-31 → 2010-08-24 (-160d) |  | 0d → 81.54d |  |
| 63 | Fin de proyecto | 2011-01-31 → 2010-08-24 (-160d) | 2011-01-31 → 2010-08-24 (-160d) |  | 0d → 81.54d |  |

## Version 3 (saved 2009-04-23, file P1_-_Inicial.mpp)

Note of the change: Ejemplo de tecnobit

Last finish 2010-12-15 → 2011-01-31 (+47d).

Changed:

| ID | Task | Start | Finish | Duration | Total float | Other |
| --- | --- | --- | --- | --- | --- | --- |
| 1 | **PS GestPerson** |  | 2010-12-15 → 2011-01-31 (+47d) | 453d → 486d |  | baseline start none → 2009-03-23; baseline finish none → 2011-01-31 |
| 2 | **Reunion director** |  |  |  | 0d → 4d | baseline start none → 2009-04-15; baseline finish none → 2010-12-15 |
| 3 | Reunión Director Empresa 1 |  |  |  |  | baseline start none → 2009-04-15; baseline finish none → 2009-04-15 |
| 4 | Reunión Director Empresa 2 |  |  |  |  | baseline start none → 2009-06-15; baseline finish none → 2009-06-15 |
| 5 | Reunión Director Empresa 3 |  |  |  |  | baseline start none → 2009-08-17; baseline finish none → 2009-08-17 |
| 6 | Reunión Director Empresa 4 |  |  |  |  | baseline start none → 2009-10-15; baseline finish none → 2009-10-15 |
| 7 | Reunión Director Empresa 5 |  |  |  |  | baseline start none → 2009-12-15; baseline finish none → 2009-12-15 |
| 8 | Reunión Director Empresa 6 |  |  |  |  | baseline start none → 2010-02-15; baseline finish none → 2010-02-15 |
| 9 | Reunión Director Empresa 7 |  |  |  |  | baseline start none → 2010-04-15; baseline finish none → 2010-04-15 |
| 10 | Reunión Director Empresa 8 |  |  |  |  | baseline start none → 2010-06-15; baseline finish none → 2010-06-15 |
| 11 | Reunión Director Empresa 9 |  |  |  |  | baseline start none → 2010-08-16; baseline finish none → 2010-08-16 |
| 12 | Reunión con el Director de la Empresa 10 |  |  |  |  | baseline start none → 2010-10-15; baseline finish none → 2010-10-15 |
| 13 | Reunión con el Director de la Empresa 11 |  |  |  | 0d → 4d | baseline start none → 2010-12-15; baseline finish none → 2010-12-15 |
| 14 | **Análisis de Requisitos** |  |  |  | 80.35d → 85.77d | baseline start none → 2009-03-23; baseline finish none → 2009-09-15 |
| 15 | **Definir modelo del sistema** |  |  |  | 80d → 84.77d | baseline start none → 2009-03-23; baseline finish none → 2009-05-19 |
| 16 | Identificación del Entorno Tecnológico |  |  |  |  | baseline start none → 2009-03-23; baseline finish none → 2009-04-23 |
| 17 | Especificación de Estándares y Normas |  |  |  |  | baseline start none → 2009-04-24; baseline finish none → 2009-05-19 |
| 18 | determinar usuarios finales |  |  |  |  | baseline start none → 2009-05-05; baseline finish none → 2009-05-19 |
| 19 | **Establecimiento de Requisitos** |  |  |  | 80d → 84.77d | baseline start none → 2009-05-20; baseline finish none → 2009-07-23 |
| 20 | Obtención de Requisitos |  |  |  |  | baseline start none → 2009-05-20; baseline finish none → 2009-06-19 |
| 21 | Analizar requisitos |  |  |  | 80.35d → 85.94d | baseline start none → 2009-06-23; baseline finish none → 2009-07-23 |
| 22 | **Determinar el modelo de interfaz** |  |  |  | 80.35d → 85.94d | baseline start none → 2009-07-23; baseline finish none → 2009-09-15 |
| 23 | Especificar de requisitos |  |  |  | 80.35d → 85.94d | baseline start none → 2009-07-23; baseline finish none → 2009-08-17 |
| 24 | Especificación del Comportamiento Dinámico de la Interfaz |  |  |  |  | baseline start none → 2009-08-18; baseline finish none → 2009-09-15 |
| 25 | Análisis de Casos de Uso |  |  |  |  | baseline start none → 2009-07-09; baseline finish none → 2009-08-03 |
| 26 | Análisis de Clases |  |  |  |  | baseline start none → 2009-08-04; baseline finish none → 2009-08-21 |
| 27 | Fin analisis de requisitos |  |  |  |  | baseline start none → 2009-09-15; baseline finish none → 2009-09-15 |
| 28 | **Diseño** |  |  |  | 79.35d → 85.2d | baseline start none → 2009-09-15; baseline finish none → 2009-12-30 |
| 29 | **Definir arquitectura** |  |  |  | 79.35d → 85.2d | baseline start none → 2009-09-15; baseline finish none → 2009-12-16 |
| 30 | Identificar requisitos de diseño |  |  |  |  | baseline start none → 2009-09-15; baseline finish none → 2009-11-18 |
| 31 | Especificar estandares |  |  |  |  | baseline start none → 2009-09-15; baseline finish none → 2009-10-28 |
| 32 | Especificar requisitos de seguridad |  |  |  |  | baseline start none → 2009-11-18; baseline finish none → 2009-12-16 |
| 33 | Diseño de Casos de Uso Reales |  |  |  |  | baseline start none → 2009-09-15; baseline finish none → 2009-10-07 |
| 34 | Diseño de Clases |  |  |  |  | baseline start none → 2009-09-15; baseline finish none → 2009-10-07 |
| 35 | Diseño de Migración y Carga Inicial de Datos |  |  |  | 124.46d → 130.31d | baseline start none → 2009-10-07; baseline finish none → 2009-10-28 |
| 36 | **Establecimiento de Requisitos de Implantación** |  |  |  | 79.35d → 85.2d | baseline start none → 2009-11-23; baseline finish none → 2009-12-30 |
| 37 | Especificación de Requisitos de Documentación de Usuario |  |  |  |  | baseline start none → 2009-11-23; baseline finish none → 2009-12-18 |
| 38 | Especificación de Requisitos de Implantación |  |  |  |  | baseline start none → 2009-12-18; baseline finish none → 2009-12-30 |
| 39 | Especificación Técnica de Plan de Pruebas |  |  |  |  | baseline start none → 2009-09-15; baseline finish none → 2009-10-02 |
| 40 | Fin del diseño |  |  |  |  | baseline start none → 2009-12-30; baseline finish none → 2009-12-30 |
| 41 | **Implementacion** |  | 2010-04-13 → 2010-05-20 (+37d) | 73.67d → 101d | 79.35d → 85.02d | baseline start none → 2009-12-30; baseline finish none → 2010-05-20 |
| 42 | **Generación del Código de los Componentes y Procedimientos** |  | 2010-02-18 → 2010-03-29 (+39d) | 35.67d → 63d | 79.35d → 85.2d | baseline start none → 2009-12-30; baseline finish none → 2010-03-29 |
| 43 | Implementar codigo |  | 2010-01-26 → 2010-02-22 (+27d) | 20.75d → 38d | 79.35d → 85.2d | resources Programador [200%]; Programador Subcontratado [200%] → Programador [200%]; baseline start none → 2009-12-30; baseline finish none → 2010-02-22 |
| 44 | Implementar codigo de seguridad | 2010-01-26 → 2010-02-22 (+27d) | 2010-02-18 → 2010-03-29 (+39d) | 17.98d → 25d | 79.35d → 85.2d | resources Analista [200%]; Programador [200%]; Programador Subcontratado [200%] → Analista [200%]; Programador [200%]; baseline start none → 2010-02-22; baseline finish none → 2010-03-29 |
| 45 | Elaboración de los Manuales de Usuario | 2010-02-18 → 2010-03-29 (+39d) | 2010-04-13 → 2010-05-20 (+37d) |  | 79.35d → 85.02d | baseline start none → 2010-03-29; baseline finish none → 2010-05-20 |
| 46 | Definición de la Formación de Usuarios Finales |  |  |  | 116.02d → 149.2d | baseline start none → 2009-12-30; baseline finish none → 2010-02-19 |
| 47 | Construcción de Componentes de Migración y Carga Inicial de Datos |  |  |  |  | baseline start none → 2009-12-30; baseline finish none → 2010-02-16 |
| 48 | Fin de la implementacion | 2010-04-13 → 2010-05-20 (+37d) | 2010-04-13 → 2010-05-20 (+37d) |  | 79.35d → 85.02d | baseline start none → 2010-05-20; baseline finish none → 2010-05-20 |
| 49 | **Banco de pruebas** | 2010-04-13 → 2010-05-20 (+37d) | 2010-05-21 → 2010-06-29 (+39d) | 27.81d → 28d | 79.35d → 85.02d | baseline start none → 2010-05-20; baseline finish none → 2010-06-29 |
| 50 | Ejecución de las Pruebas Unitarias | 2010-04-13 → 2010-05-20 (+37d) | 2010-05-21 → 2010-06-29 (+39d) |  | 79.35d → 85.02d | baseline start none → 2010-05-20; baseline finish none → 2010-06-29 |
| 51 | Ejecutar pruebas de integracion | 2010-04-13 → 2010-05-20 (+37d) | 2010-05-14 → 2010-06-22 (+39d) |  | 84.35d → 90.02d | baseline start none → 2010-05-20; baseline finish none → 2010-06-22 |
| 52 | Integración de las Pruebas del Sistema | 2010-04-13 → 2010-05-20 (+37d) | 2010-05-04 → 2010-06-10 (+37d) | 16d → 16.12d | 92.35d → 98.2d | baseline start none → 2010-05-20; baseline finish none → 2010-06-10 |
| 53 | Fin del banco de Pruebas | 2010-05-21 → 2010-06-29 (+39d) | 2010-05-21 → 2010-06-29 (+39d) |  | 79.54d → 86.2d | baseline start none → 2010-06-29; baseline finish none → 2010-06-29 |
| 54 | **Implantacion** | 2010-05-21 → 2010-06-29 (+39d) | 2010-08-24 → 2011-01-31 (+160d) | 67d → 154.02d | 79.54d → 0d | baseline start none → 2010-06-29; baseline finish none → 2011-01-31 |
| 55 | **Establecimiento del Plan de Implantación** | 2010-05-21 → 2010-06-29 (+39d) | 2010-06-30 → 2010-08-06 (+37d) | 28.19d → 27.56d | 79.54d → 86.2d | baseline start none → 2010-06-29; baseline finish none → 2010-08-06 |
| 56 | Definición del Plan de Implantación | 2010-05-21 → 2010-06-29 (+39d) | 2010-06-08 → 2010-07-15 (+37d) |  | 79.35d → 86.2d | baseline start none → 2010-06-29; baseline finish none → 2010-07-15 |
| 57 | Especificación del Equipo de Implantación | 2010-06-08 → 2010-07-15 (+37d) | 2010-06-30 → 2010-08-06 (+37d) |  | 79.35d → 87.2d | baseline start none → 2010-07-15; baseline finish none → 2010-08-06 |
| 58 | Pruebas de Implantación del Sistema | 2010-07-01 → 2010-08-09 (+39d) | 2010-07-23 → 2010-08-31 (+39d) |  | 85.35d → 92.45d | baseline start none → 2010-08-09; baseline finish none → 2010-08-31 |
| 59 | Establecimiento del Acuerdo de Nivel de Servicio | 2010-06-30 → 2010-08-06 (+37d) | 2010-07-30 → 2010-09-07 (+39d) | 23.12d → 23.38d | 80.35d → 87.02d | baseline start none → 2010-08-06; baseline finish none → 2010-09-07 |
| 60 | Presentación y Aprobación del Sistema | 2010-08-02 → 2011-01-10 (+161d) | 2010-08-24 → 2011-01-31 (+160d) | 17.12d → 17d | 81.54d → 0d | constraint none → must finish on 2011-01-31; baseline start none → 2011-01-10; baseline finish none → 2011-01-31 |
| 61 | Preparación de Mantenimiento | 2010-05-24 → 2010-06-30 (+37d) | 2010-06-15 → 2010-07-22 (+37d) |  | 131.54d → 137.02d | baseline start none → 2010-06-30; baseline finish none → 2010-07-22 |
| 62 | Fin del implantacion | 2010-08-24 → 2011-01-31 (+160d) | 2010-08-24 → 2011-01-31 (+160d) |  | 81.54d → 0d | baseline start none → 2011-01-31; baseline finish none → 2011-01-31 |
| 63 | Fin de proyecto | 2010-08-24 → 2011-01-31 (+160d) | 2010-08-24 → 2011-01-31 (+160d) |  | 81.54d → 0d | baseline start none → 2011-01-31; baseline finish none → 2011-01-31 |

## Version 4 (data date 2010-01-11, saved 2009-04-23, file P1_-_Seguimiento.mpp)

Note of the change: Ejemplo de tecnobit

Last finish stays 2011-01-31. Complete tasks 0 → 25.

Changed:

| ID | Task | Start | Finish | Complete | Total float |
| --- | --- | --- | --- | --- | --- |
| 1 | **PS GestPerson** | 2009-03-23 A |  | 0% → 53% |  |
| 2 | **Reunion director** | 2009-04-15 A |  | 0% → 45% |  |
| 3 | Reunión Director Empresa 1 | 2009-04-15 A | 2009-04-15 A | 0% → 100% | 57.88d → none |
| 4 | Reunión Director Empresa 2 | 2009-06-15 A | 2009-06-15 A | 0% → 100% | 52.62d → none |
| 5 | Reunión Director Empresa 3 | 2009-08-17 A | 2009-08-17 A | 0% → 100% | 47d → none |
| 6 | Reunión Director Empresa 4 | 2009-10-15 A | 2009-10-15 A | 0% → 100% | 41.75d → none |
| 7 | Reunión Director Empresa 5 | 2009-12-15 A | 2009-12-15 A | 0% → 100% | 36.38d → none |
| 14 | **Análisis de Requisitos** | 2009-03-23 A | 2009-09-15 A | 0% → 100% | 85.77d → none |
| 15 | **Definir modelo del sistema** | 2009-03-23 A | 2009-05-19 A | 0% → 100% | 84.77d → none |
| 16 | Identificación del Entorno Tecnológico | 2009-03-23 A | 2009-04-23 A | 0% → 100% | 85.5d → none |
| 17 | Especificación de Estándares y Normas | 2009-04-24 A | 2009-05-19 A | 0% → 100% | 84.77d → none |
| 18 | determinar usuarios finales | 2009-05-05 A | 2009-05-19 A | 0% → 100% | 80.14d → none |
| 19 | **Establecimiento de Requisitos** | 2009-05-20 A | 2009-07-23 A | 0% → 100% | 84.77d → none |
| 20 | Obtención de Requisitos | 2009-05-20 A | 2009-06-19 A | 0% → 100% | 84.77d → none |
| 21 | Analizar requisitos | 2009-06-23 A | 2009-07-23 A | 0% → 100% | 85.94d → none |
| 22 | **Determinar el modelo de interfaz** | 2009-07-23 A | 2009-09-15 A | 0% → 100% | 85.94d → none |
| 23 | Especificar de requisitos | 2009-07-23 A | 2009-08-17 A | 0% → 100% | 85.94d → none |
| 24 | Especificación del Comportamiento Dinámico de la Interfaz | 2009-08-18 A | 2009-09-15 A | 0% → 100% | 81.58d → none |
| 25 | Análisis de Casos de Uso | 2009-07-09 A | 2009-08-03 A | 0% → 100% | 98.58d → none |
| 26 | Análisis de Clases | 2009-08-04 A | 2009-08-21 A | 0% → 100% | 98.58d → none |
| 27 | Fin analisis de requisitos | 2009-09-15 A | 2009-09-15 A | 0% → 100% | 81.58d → none |
| 28 | **Diseño** | 2009-09-15 A | 2009-12-30 A | 0% → 100% | 85.2d → none |
| 29 | **Definir arquitectura** | 2009-09-15 A | 2009-12-16 A | 0% → 100% | 85.2d → none |
| 30 | Identificar requisitos de diseño | 2009-09-15 A | 2009-11-18 A | 0% → 100% | 85.2d → none |
| 31 | Especificar estandares | 2009-09-15 A | 2009-10-28 A | 0% → 100% | 119.58d → none |
| 32 | Especificar requisitos de seguridad | 2009-11-18 A | 2009-12-16 A | 0% → 100% | 85.2d → none |
| 33 | Diseño de Casos de Uso Reales | 2009-09-15 A | 2009-10-07 A | 0% → 100% | 131.31d → none |
| 34 | Diseño de Clases | 2009-09-15 A | 2009-10-07 A | 0% → 100% | 131.25d → none |
| 35 | Diseño de Migración y Carga Inicial de Datos | 2009-10-07 A | 2009-10-28 A | 0% → 100% | 130.31d → none |
| 36 | **Establecimiento de Requisitos de Implantación** | 2009-11-23 A | 2009-12-30 A | 0% → 100% | 85.2d → none |
| 37 | Especificación de Requisitos de Documentación de Usuario | 2009-11-23 A | 2009-12-18 A | 0% → 100% | 85.06d → none |
| 38 | Especificación de Requisitos de Implantación | 2009-12-18 A | 2009-12-30 A | 0% → 100% | 85.06d → none |
| 39 | Especificación Técnica de Plan de Pruebas | 2009-09-15 A | 2009-10-02 A | 0% → 100% | 149.12d → none |
| 40 | Fin del diseño | 2009-12-30 A | 2009-12-30 A | 0% → 100% | 85.2d → none |
| 41 | **Implementacion** | 2009-12-30 A |  | 0% → 12% |  |
| 42 | **Generación del Código de los Componentes y Procedimientos** | 2009-12-30 A |  | 0% → 11% |  |
| 43 | Implementar codigo | 2009-12-30 A |  | 0% → 18% |  |
| 46 | Definición de la Formación de Usuarios Finales | 2009-12-30 A |  | 0% → 19% | 149.2d → 149.45d |
| 47 | Construcción de Componentes de Migración y Carga Inicial de Datos | 2009-12-30 A |  | 0% → 20% |  |
