# p1

How a schedule from MS Project changed from version to version. A marks actual dates.

## Version 1 (data date 2010-04-14, saved 2010-04-14, file p1.mpp)

Note of the change: Subido

| ID | WBS | Task | Duration | Start | Finish | Predecessors | Complete | Total float | Constraint |
| --- | --- | --- | --- | --- | --- | --- | --- | --- | --- |
| 1 | 1 | **Análisis** | 19d | 2010-04-06 A | 2010-05-03 |  | 20% | 0d | as late as possible |
| 2 |  | Definición del sistema | 3d | 2010-04-06 A | 2010-04-09 A |  | 100% |  |  |
| 3 |  | Establecimiento de requisitos | 6d | 2010-04-09 A | 2010-04-19 | 2 | 50% | 0d |  |
| 4 |  | Identificación de subsistemas | 2d | 2010-04-19 | 2010-04-21 | 3 |  | 0d | finish no later than 2010-04-21 |
| 5 | 1.4 | **Elaboración del modelo de datos** | 6d | 2010-04-19 | 2010-04-27 | 4SS |  | 0d | as late as possible |
| 6 |  | Elaboración de modelo conceptual y lógica de datos | 2d | 2010-04-19 | 2010-04-21 |  |  | 13d |  |
| 7 |  | Normalización | 2d | 2010-04-21 | 2010-04-23 | 6 |  | 13d |  |
| 8 |  | Especificación de necesidades de carga inicial | 2d | 2010-04-23 | 2010-04-27 | 7 |  | 13d |  |
| 9 |  | Elaboración del modelo de procesos | 4d | 2010-04-19 | 2010-04-23 | 5SS |  | 0d | start no later than 2010-04-21 |
| 10 |  | Definición de interfaz de usuario | 2d | 2010-04-19 | 2010-04-21 | 9SS |  | 17d |  |
| 11 |  | Análisis de consistencia y especificación de requisitos | 3d | 2010-04-27 | 2010-04-30 | 10, 9, 5, 4 |  | 13d |  |
| 12 |  | Especificación de plan de pruebas | 3d | 2010-04-27 | 2010-04-30 | 5, 10, 9, 4 |  | 13d |  |
| 13 |  | Aprobación del análisis del SI | 1d | 2010-04-30 | 2010-05-03 | 12, 11 |  | 13d |  |
| 14 | 2 | **Diseño** | 16d | 2010-05-03 | 2010-05-25 | 1 |  | 0d | as late as possible |
| 15 |  | Definición de la arquitectura del sistema | 4d | 2010-05-03 | 2010-05-07 |  |  | 13d |  |
| 16 |  | Diseño de la arquitectura de soporte | 2d | 2010-05-07 | 2010-05-11 | 15 |  | 13d |  |
| 17 | 2.3 | **Diseño de la arquitectura de módulos de sistema** | 5d | 2010-05-07 | 2010-05-14 | 16SS |  | 0d | as late as possible |
| 18 |  | Diseño de módulos del sistema | 2d | 2010-05-07 | 2010-05-11 |  |  | 13d |  |
| 19 |  | Diseño de comucación entre módulos | 2d | 2010-05-11 | 2010-05-13 | 18 |  | 13d |  |
| 20 |  | Revisión de la interfaz de usuario | 1d | 2010-05-13 | 2010-05-14 | 19 |  | 13d |  |
| 21 | 2.4 | **Diseño físico de datos** | 4d | 2010-05-07 | 2010-05-13 | 17SS |  | 0d | as late as possible |
| 22 |  | Diseño del modelo físico de datos | 2d | 2010-05-07 | 2010-05-11 |  |  | 14d |  |
| 23 |  | Especificación de los caminos de acceso a los datos | 1d | 2010-05-11 | 2010-05-12 | 22 |  | 14d |  |
| 24 |  | Especificación de la distribución de datos | 1d | 2010-05-12 | 2010-05-13 | 23 |  | 14d |  |
| 25 |  | Verificación y aceptación de la arquitectura del sistema | 2d | 2010-05-14 | 2010-05-18 | 21, 17, 16 |  | 13d |  |
| 26 |  | Generación y especificación de construcción | 3d | 2010-05-18 | 2010-05-21 | 25 |  | 13d |  |
| 27 |  | Diseño de migración y carga inicial de datos | 4d | 2010-05-18 | 2010-05-24 | 26SS |  | 13d |  |
| 28 |  | Especificación técnica del plan de prueba | 2d | 2010-05-18 | 2010-05-20 | 27SS |  | 14d |  |
| 29 |  | Establecimiento de requisitos de implantación | 3d | 2010-05-18 | 2010-05-21 | 28SS |  | 14d |  |
| 30 |  | Aprobación del diseño y SI | 1d | 2010-05-24 | 2010-05-25 | 29, 28, 27, 26 |  | 13d |  |
| 31 | 3 | **Implementación** | 10d | 2010-05-25 | 2010-06-08 | 14 |  | 0d | as late as possible |
| 32 |  | Preparación del entorno de generación y contrucción | 5d | 2010-05-25 | 2010-06-01 |  |  | 13d |  |
| 33 |  | Generación del código de los componentes y procedimientos | 5d | 2010-06-01 | 2010-06-08 | 32 |  | 13d |  |
| 34 |  | Elaboración del manual de usuario | 3d | 2010-05-25 | 2010-05-28 | 32SS |  | 19d |  |
| 35 |  | Definición de la formación de usuarios finales | 4d | 2010-05-25 | 2010-05-31 | 34SS |  | 19d |  |
| 36 |  | Construcción de los componentes y procedimientos de carga inicial de datos | 4d | 2010-05-25 | 2010-05-31 | 35SS |  | 19d |  |
| 37 | 4 | **Pruebas** | 3d | 2010-06-08 | 2010-06-11 | 31 |  | 0d | as late as possible |
| 38 |  | Ejecución de las pruebas unitarias | 2d | 2010-06-08 | 2010-06-10 |  |  | 13d |  |
| 39 |  | Ejecución de las pruebas de integración | 2d | 2010-06-08 | 2010-06-10 | 38SS |  | 13d |  |
| 40 |  | Ejecución de las pruebas del sistema | 2d | 2010-06-08 | 2010-06-10 | 39SS |  | 13d |  |
| 41 |  | Aprobación del SI | 1d | 2010-06-10 | 2010-06-11 | 40, 39, 38 |  | 13d |  |

## Version 2 (saved 2010-04-28, file p1.mpp)

Note of the change: Project hasta el seguimiento mejorado, comprando más ordenadores y asignando los demás recursos materiales al principio del proyecto

Last finish 2010-06-11 → 2010-10-20 (+131d). Complete tasks 1 → 0.

Added:

| ID | Task | Duration | Start | Finish | Predecessors | Constraint | Resources |
| --- | --- | --- | --- | --- | --- | --- | --- |
| 14 | Análisis aprobado | 0d | 2010-06-24 | 2010-06-24 | 13 |  |  |
| 32 | Diseño Aprobado | 0d | 2010-08-30 | 2010-08-30 | 31 |  |  |
| 39 | Implementación aprobada | 0d | 2010-09-23 | 2010-09-23 | 38 |  |  |
| 45 | Proyecto Finalizado | 0d | 2010-10-20 | 2010-10-20 | 44 |  |  |
| 46 | **Reunión del grupo de trabajo** | 63.38d | 2010-05-03 | 2010-08-02 |  |  |  |
| 47 | Reunión del grupo de trabajo 1 | 3h | 2010-05-03 | 2010-05-03 |  | start no earlier than 2010-05-03 | Miembro del grupo de trabajo [400%]; Coordinador; Ordenador; Sala de juntas |
| 48 | Reunión del grupo de trabajo 2 | 3h | 2010-05-10 | 2010-05-10 |  | start no earlier than 2010-05-10 | Miembro del grupo de trabajo [400%]; Coordinador; Ordenador; Sala de juntas |
| 49 | Reunión del grupo de trabajo 3 | 3h | 2010-05-17 | 2010-05-17 |  | start no earlier than 2010-05-17 | Miembro del grupo de trabajo [400%]; Coordinador; Ordenador; Sala de juntas |
| 50 | Reunión del grupo de trabajo 4 | 3h | 2010-05-25 | 2010-05-25 |  | start no earlier than 2010-05-24 | Miembro del grupo de trabajo [400%]; Coordinador; Ordenador; Sala de juntas |
| 51 | Reunión del grupo de trabajo 5 | 3h | 2010-06-01 | 2010-06-01 |  | start no earlier than 2010-05-31 | Miembro del grupo de trabajo [400%]; Coordinador; Ordenador; Sala de juntas |
| 52 | Reunión del grupo de trabajo 6 | 3h | 2010-06-07 | 2010-06-07 |  | start no earlier than 2010-06-07 | Miembro del grupo de trabajo [400%]; Coordinador; Ordenador; Sala de juntas |
| 53 | Reunión del grupo de trabajo 7 | 3h | 2010-06-14 | 2010-06-14 |  | start no earlier than 2010-06-14 | Miembro del grupo de trabajo [400%]; Coordinador; Ordenador; Sala de juntas |
| 54 | Reunión del grupo de trabajo 8 | 3h | 2010-06-21 | 2010-06-21 |  | start no earlier than 2010-06-21 | Miembro del grupo de trabajo [400%]; Coordinador; Ordenador; Sala de juntas |
| 55 | Reunión del grupo de trabajo 9 | 3h | 2010-06-28 | 2010-06-28 |  | start no earlier than 2010-06-28 | Miembro del grupo de trabajo [400%]; Coordinador; Ordenador; Sala de juntas |
| 56 | Reunión del grupo de trabajo 10 | 3h | 2010-07-05 | 2010-07-05 |  | start no earlier than 2010-07-05 | Miembro del grupo de trabajo [400%]; Coordinador; Ordenador; Sala de juntas |
| 57 | Reunión del grupo de trabajo 11 | 3h | 2010-07-12 | 2010-07-12 |  | start no earlier than 2010-07-12 | Miembro del grupo de trabajo [400%]; Coordinador; Ordenador; Sala de juntas |
| 58 | Reunión del grupo de trabajo 12 | 3h | 2010-07-19 | 2010-07-19 |  | start no earlier than 2010-07-19 | Sala de juntas; Coordinador; Ordenador; Miembro del grupo de trabajo [400%] |
| 59 | Reunión del grupo de trabajo 13 | 3h | 2010-07-26 | 2010-07-26 |  | start no earlier than 2010-07-26 | Miembro del grupo de trabajo [400%]; Coordinador; Ordenador; Sala de juntas |
| 60 | Reunión del grupo de trabajo 14 | 3h | 2010-08-02 | 2010-08-02 |  | start no earlier than 2010-08-02 | Miembro del grupo de trabajo [400%]; Coordinador; Ordenador; Sala de juntas |

Changed:

| ID | Task | Start | Finish | Duration | Complete | Total float | Predecessors | Other |
| --- | --- | --- | --- | --- | --- | --- | --- | --- |
| 1 | **Análisis** | 2010-04-06 A → 2010-05-03 (+27d) | 2010-05-03 → 2010-06-24 (+52d) | 19d → 36.34d | 20% → 0% | 0d → 2.62d |  | constraint as late as possible → none |
| 2 | Definición del sistema | 2010-04-06 A → 2010-05-03 (+27d) | 2010-04-09 A → 2010-05-07 (+28d) | 3d → 4.21d | 100% → 0% | none → 2.62d |  | resources none → Coordinador; Miembro del grupo de trabajo [400%]; Ordenador [600%]; Analista; Pizarra interactiva; Proyector; Red Hat Enterprise Linux 5; Servidor Central; Impresora láser color |
| 3 | Establecimiento de requisitos | 2010-04-09 A → 2010-05-07 (+28d) | 2010-04-19 → 2010-05-13 (+24d) | 6d → 4.62d | 50% → 0% | 0d → 2.99d |  | resources none → Miembro del grupo de trabajo [200%]; Coordinador; Ordenador [300%] |
| 4 | Identificación de subsistemas | 2010-04-19 → 2010-05-13 (+24d) | 2010-04-21 → 2010-05-17 (+26d) | 2d → 2.09d |  | 0d → 3.12d |  | constraint finish no later than 2010-04-21 → none; resources none → Miembro del grupo de trabajo [200%]; Analista; Ordenador [300%] |
| 5 | **Elaboración del modelo de datos** | 2010-04-19 → 2010-05-13 (+24d) | 2010-04-27 → 2010-06-10 (+44d) | 6d → 17.46d |  | 0d → 3.12d |  | constraint as late as possible → none |
| 6 | Elaboración de modelo conceptual y lógica de datos | 2010-04-19 → 2010-05-13 (+24d) | 2010-04-21 → 2010-06-03 (+43d) | 2d → 7.33d |  | 13d → 3.12d |  | resources none → Coordinador; Analista; Ordenador [200%] |
| 7 | Normalización | 2010-04-21 → 2010-06-03 (+43d) | 2010-04-23 → 2010-06-08 (+46d) | 2d → 2.81d |  | 13d → 3.12d |  | resources none → Miembro del grupo de trabajo [400%]; Ordenador [400%] |
| 8 | Especificación de necesidades de carga inicial | 2010-04-23 → 2010-06-08 (+46d) | 2010-04-27 → 2010-06-10 (+44d) |  |  | 13d → 3.12d |  | resources none → Secretario; Miembro del grupo de trabajo [300%]; Ordenador [400%] |
| 9 | Elaboración del modelo de procesos | 2010-04-19 → 2010-05-13 (+24d) | 2010-04-23 → 2010-06-04 (+42d) | 4d → 12.77d |  | 0d → 7.05d |  | constraint start no later than 2010-04-21 → none; resources none → Coordinador; Analista; Ordenador [400%]; Miembro del grupo de trabajo [200%] |
| 10 | Definición de interfaz de usuario | 2010-04-19 → 2010-05-13 (+24d) | 2010-04-21 → 2010-06-02 (+42d) | 2d → 10.83d |  | 17d → 8.62d |  | resources none → Usuario experto; Miembro del grupo de trabajo [300%]; Secretario; Ordenador [500%] |
| 11 | Análisis de consistencia y especificación de requisitos | 2010-04-27 → 2010-06-10 (+44d) | 2010-04-30 → 2010-06-23 (+54d) | 3d → 8.44d |  | 13d → 3.49d |  | resources none → Analista; Coordinador; Miembro del grupo de trabajo [400%]; Ordenador [600%] |
| 12 | Especificación de plan de pruebas | 2010-04-27 → 2010-06-10 (+44d) | 2010-04-30 → 2010-06-23 (+54d) | 3d → 5.22d |  | 13d → 3.12d |  | resources none → Usuario experto; Analista; Coordinador; Ordenador [300%] |
| 13 | Aprobación del análisis del SI | 2010-04-30 → 2010-06-23 (+54d) | 2010-05-03 → 2010-06-24 (+52d) | 1d → 0.8d |  | 13d → 3.12d |  | resources none → Ordenador; Coordinador; Analista; Programador; Secretario |
| 15 | **Diseño** | 2010-05-03 → 2010-06-24 (+52d) | 2010-05-25 → 2010-08-30 (+97d) | 16d → 46.19d |  |  |  | constraint as late as possible → none |
| 16 | Definición de la arquitectura del sistema | 2010-05-03 → 2010-06-24 (+52d) | 2010-05-07 → 2010-07-01 (+55d) | 4d → 5.57d |  | 13d → 3.12d | none → 14 | resources none → Coordinador; Analista; Ordenador [200%]; Miembro del grupo de trabajo [400%] |
| 17 | Diseño de la arquitectura de soporte | 2010-05-07 → 2010-07-01 (+55d) | 2010-05-11 → 2010-07-15 (+65d) | 2d → 5.95d |  | 13d → 3.12d |  | resources none → Analista; Coordinador; Miembro del grupo de trabajo [200%]; Ordenador [400%] |
| 18 | **Diseño de la arquitectura de módulos de sistema** | 2010-05-07 → 2010-07-01 (+55d) | 2010-05-14 → 2010-07-28 (+75d) | 5d → 19.01d |  | 0d → 3.12d |  | constraint as late as possible → none |
| 19 | Diseño de módulos del sistema | 2010-05-07 → 2010-07-01 (+55d) | 2010-05-11 → 2010-07-14 (+64d) | 2d → 9.18d |  | 13d → 3.12d |  | resources none → Miembro del grupo de trabajo [200%]; Ordenador [200%] |
| 20 | Diseño de comucación entre módulos | 2010-05-11 → 2010-07-14 (+64d) | 2010-05-13 → 2010-07-22 (+70d) | 2d → 4.64d |  | 13d → 3.12d |  | resources none → Miembro del grupo de trabajo [200%]; Ordenador [200%] |
| 21 | Revisión de la interfaz de usuario | 2010-05-13 → 2010-07-22 (+70d) | 2010-05-14 → 2010-07-28 (+75d) | 1d → 4.85d |  | 13d → 3.12d |  | constraint none → finish no earlier than 2010-07-20; resources none → Coordinador; Analista; Usuario experto; Ordenador [300%] |
| 22 | **Diseño físico de datos** | 2010-05-07 → 2010-07-01 (+55d) | 2010-05-13 → 2010-08-02 (+81d) | 4d → 22.12d |  |  |  | constraint as late as possible → none |
| 23 | Diseño del modelo físico de datos | 2010-05-07 → 2010-07-01 (+55d) | 2010-05-11 → 2010-07-15 (+65d) | 2d → 8.64d |  | 14d → 0d |  | resources none → Coordinador; Analista; Ordenador [300%]; Miembro del grupo de trabajo |
| 24 | Especificación de los caminos de acceso a los datos | 2010-05-11 → 2010-07-19 (+69d) | 2010-05-12 → 2010-07-28 (+77d) | 1d → 6.51d |  | 14d → 0d | 23 → 23FS+2d | resources none → Miembro del grupo de trabajo [300%]; Ordenador [300%] |
| 25 | Especificación de la distribución de datos | 2010-05-12 → 2010-07-27 (+76d) | 2010-05-13 → 2010-08-02 (+81d) | 1d → 4.72d |  | 14d → 0d | 24 → 24FS-1d | resources none → Miembro del grupo de trabajo [200%]; Ordenador [200%] |
| 26 | Verificación y aceptación de la arquitectura del sistema | 2010-05-14 → 2010-08-02 (+80d) | 2010-05-18 → 2010-08-04 (+78d) | 2d → 1.43d |  | 13d → 0d |  | resources none → Coordinador; Miembro del grupo de trabajo [400%]; Ordenador [500%] |
| 27 | Generación y especificación de construcción | 2010-05-18 → 2010-08-04 (+78d) | 2010-05-21 → 2010-08-12 (+83d) | 3d → 6.36d |  | 13d → 0d |  | resources none → Coordinador; Analista; Ordenador [200%] |
| 28 | Diseño de migración y carga inicial de datos | 2010-05-18 → 2010-08-04 (+78d) | 2010-05-24 → 2010-08-09 (+77d) | 4d → 2.87d |  | 13d → 0d |  | resources none → Miembro del grupo de trabajo [200%]; Ordenador [200%] |
| 29 | Especificación técnica del plan de prueba | 2010-05-18 → 2010-08-04 (+78d) | 2010-05-20 → 2010-08-10 (+82d) | 2d → 3.73d |  | 14d → 0d |  | resources none → Miembro del grupo de trabajo [200%]; Ordenador [200%] |
| 30 | Establecimiento de requisitos de implantación | 2010-05-18 → 2010-08-04 (+78d) | 2010-05-21 → 2010-08-26 (+97d) | 3d → 15.01d |  | 14d → 0d |  | resources none → Miembro del grupo de trabajo; Coordinador; Ordenador [200%] |
| 31 | Aprobación del diseño y SI | 2010-05-24 → 2010-08-26 (+94d) | 2010-05-25 → 2010-08-30 (+97d) | 1d → 2.06d |  | 13d → 0d |  | resources none → Coordinador; Secretario; Ordenador |
| 33 | **Implementación** | 2010-05-25 → 2010-08-30 (+97d) | 2010-06-08 → 2010-10-06 (+120d) | 10d → 27.02d |  |  |  | constraint as late as possible → none |
| 34 | Preparación del entorno de generación y contrucción | 2010-05-25 → 2010-08-30 (+97d) | 2010-06-01 → 2010-09-01 (+92d) | 5d → 2.09d |  | 13d → 0d | none → 32 | resources none → Programador; Ordenador; Miembro del grupo de trabajo |
| 35 | Generación del código de los componentes y procedimientos | 2010-06-01 → 2010-09-01 (+92d) | 2010-06-08 → 2010-10-06 (+120d) | 5d → 18.6d |  | 13d → 0d |  | resources none → Programador; Ordenador |
| 36 | Elaboración del manual de usuario | 2010-05-25 → 2010-08-30 (+97d) | 2010-05-28 → 2010-09-10 (+105d) | 3d → 9.15d |  | 19d → 9.3d |  | resources none → Programador; Ordenador [200%]; Secretario |
| 37 | Definición de la formación de usuarios finales | 2010-05-25 → 2010-08-30 (+97d) | 2010-05-31 → 2010-09-16 (+108d) | 4d → 7.14d |  | 19d → 9.3d |  | resources none → Programador; Ordenador |
| 38 | Construcción de los componentes y procedimientos de carga inicial de datos | 2010-05-25 → 2010-08-30 (+97d) | 2010-05-31 → 2010-09-23 (+115d) | 4d → 10d |  | 19d → 9.3d |  | resources none → Programador; Ordenador |
| 40 | **Pruebas** | 2010-06-08 → 2010-10-06 (+120d) | 2010-06-11 → 2010-10-20 (+131d) | 3d → 9.94d |  |  |  | constraint as late as possible → none |
| 41 | Ejecución de las pruebas unitarias | 2010-06-08 → 2010-10-06 (+120d) | 2010-06-10 → 2010-10-11 (+123d) | 2d → 2.18d |  | 13d → 0d |  | resources none → Usuario experto; Coordinador; Ordenador [200%] |
| 42 | Ejecución de las pruebas de integración | 2010-06-08 → 2010-10-06 (+120d) | 2010-06-10 → 2010-10-13 (+125d) | 2d → 4.79d |  | 13d → 0d |  | resources none → Usuario experto; Coordinador; Ordenador [200%] |
| 43 | Ejecución de las pruebas del sistema | 2010-06-08 → 2010-10-06 (+120d) | 2010-06-10 → 2010-10-18 (+130d) | 2d → 5.92d |  | 13d → 0d |  | resources none → Usuario experto; Coordinador; Ordenador [200%] |
| 44 | Aprobación del SI | 2010-06-10 → 2010-10-18 (+130d) | 2010-06-11 → 2010-10-20 (+131d) | 1d → 2d |  | 13d → 0d |  | resources none → Secretario; Coordinador; Ordenador |

## Version 3 (saved 2010-04-28, file p1bis.mpp)

Note of the change: version r160 a project 2003 en al archivo p1bis.mpp

Last finish 2010-10-20 → 2010-08-09 (-72d).

Changed:

| ID | Task | Start | Finish | Duration | Total float | Predecessors | Other |
| --- | --- | --- | --- | --- | --- | --- | --- |
| 1 | **Análisis** |  | 2010-06-24 → 2010-06-02 (-22d) | 36.34d → 22.03d | 2.62d → 0d |  |  |
| 2 | Definición del sistema |  | 2010-05-07 → 2010-05-06 (-1d) | 4.21d → 3.83d | 2.62d → 0d |  | resources Coordinador; Miembro del grupo de trabajo [400%]; Ordenador [600%]; Analista; Pizarra interactiva; Proyector; Red Hat Enterprise Linux 5; Servidor Central; Impresora láser color → Coordinador; Miembro del grupo de trabajo [400%]; Ordenador [600%]; Analista; Pizarra interactiva |
| 3 | Establecimiento de requisitos | 2010-05-07 → 2010-05-06 (-1d) | 2010-05-13 → 2010-05-12 (-1d) | 4.62d → 3.75d | 2.99d → 0d |  |  |
| 4 | Identificación de subsistemas | 2010-05-13 → 2010-05-12 (-1d) | 2010-05-17 → 2010-05-14 (-3d) | 2.09d → 2d | 3.12d → 0d |  |  |
| 5 | **Elaboración del modelo de datos** | 2010-05-13 → 2010-05-12 (-1d) | 2010-06-10 → 2010-05-26 (-15d) | 17.46d → 9.43d | 3.12d → 0d |  |  |
| 6 | Elaboración de modelo conceptual y lógica de datos | 2010-05-13 → 2010-05-12 (-1d) | 2010-06-03 → 2010-05-19 (-15d) | 7.33d → 5d | 3.12d → 0d |  | resources Coordinador; Analista; Ordenador [200%] → Coordinador; Analista; Ordenador [200%]; Pizarra interactiva |
| 7 | Normalización | 2010-06-03 → 2010-05-19 (-15d) | 2010-06-08 → 2010-05-24 (-15d) | 2.81d → 2.43d | 3.12d → 0d |  |  |
| 8 | Especificación de necesidades de carga inicial | 2010-06-08 → 2010-05-24 (-15d) | 2010-06-10 → 2010-05-26 (-15d) |  | 3.12d → 0d |  |  |
| 9 | Elaboración del modelo de procesos | 2010-05-13 → 2010-05-12 (-1d) | 2010-06-04 → 2010-05-20 (-15d) | 12.77d → 5.78d | 7.05d → 3.65d |  |  |
| 10 | Definición de interfaz de usuario | 2010-05-13 → 2010-05-12 (-1d) | 2010-06-02 → 2010-05-20 (-13d) | 10.83d → 5.5d | 8.62d → 3.93d |  | resources Usuario experto; Miembro del grupo de trabajo [300%]; Secretario; Ordenador [500%] → Usuario experto; Miembro del grupo de trabajo [300%]; Secretario; Ordenador [500%]; Pizarra interactiva |
| 11 | Análisis de consistencia y especificación de requisitos | 2010-06-10 → 2010-05-26 (-15d) | 2010-06-23 → 2010-05-31 (-23d) | 8.44d → 3.28d | 3.49d → 0.94d |  | resources Analista; Coordinador; Miembro del grupo de trabajo [400%]; Ordenador [600%] → Analista; Coordinador; Miembro del grupo de trabajo [400%]; Pizarra interactiva; Ordenador [600%] |
| 12 | Especificación de plan de pruebas | 2010-06-10 → 2010-05-26 (-15d) | 2010-06-23 → 2010-06-01 (-22d) | 5.22d → 4.22d | 3.12d → 0d |  |  |
| 13 | Aprobación del análisis del SI | 2010-06-23 → 2010-06-01 (-22d) | 2010-06-24 → 2010-06-02 (-22d) |  | 3.12d → 0d |  | resources Ordenador; Coordinador; Analista; Programador; Secretario → Ordenador; Coordinador; Analista; Pizarra interactiva; Programador; Secretario |
| 14 | Análisis aprobado | 2010-06-24 → 2010-06-02 (-22d) | 2010-06-24 → 2010-06-02 (-22d) |  | 3.12d → 0d |  |  |
| 15 | **Diseño** | 2010-06-24 → 2010-06-02 (-22d) | 2010-08-30 → 2010-07-16 (-45d) | 46.19d → 32.01d |  |  |  |
| 16 | Definición de la arquitectura del sistema | 2010-06-24 → 2010-06-02 (-22d) | 2010-07-01 → 2010-06-08 (-23d) | 5.57d → 4.57d | 3.12d → 0d |  | resources Coordinador; Analista; Ordenador [200%]; Miembro del grupo de trabajo [400%] → Coordinador; Analista; Ordenador [200%]; Pizarra interactiva; Miembro del grupo de trabajo [400%] |
| 17 | Diseño de la arquitectura de soporte | 2010-07-01 → 2010-06-08 (-23d) | 2010-07-15 → 2010-06-15 (-30d) | 5.95d → 4.57d | 3.12d → 0d |  | resources Analista; Coordinador; Miembro del grupo de trabajo [200%]; Ordenador [400%] → Analista; Coordinador; Miembro del grupo de trabajo [200%]; Ordenador [400%]; Pizarra interactiva |
| 18 | **Diseño de la arquitectura de módulos de sistema** | 2010-07-01 → 2010-06-08 (-23d) | 2010-07-28 → 2010-07-01 (-27d) | 19.01d → 16.55d | 3.12d → 0d |  |  |
| 19 | Diseño de módulos del sistema | 2010-07-01 → 2010-06-08 (-23d) | 2010-07-14 → 2010-06-21 (-23d) | 9.18d → 8.43d | 3.12d → 0d |  |  |
| 20 | Diseño de comucación entre módulos | 2010-07-14 → 2010-06-21 (-23d) | 2010-07-22 → 2010-06-25 (-27d) | 4.64d → 4.27d | 3.12d → 0d |  | resources Miembro del grupo de trabajo [200%]; Ordenador [200%] → Miembro del grupo de trabajo [200%]; Coordinador [200%] |
| 21 | Revisión de la interfaz de usuario | 2010-07-22 → 2010-06-25 (-27d) | 2010-07-28 → 2010-07-01 (-27d) | 4.85d → 3.85d | 3.12d → 0d |  | constraint finish no earlier than 2010-07-20 → none; resources Coordinador; Analista; Usuario experto; Ordenador [300%] → Coordinador; Analista; Usuario experto; Ordenador [300%]; Pizarra interactiva |
| 22 | **Diseño físico de datos** | 2010-07-01 → 2010-06-08 (-23d) | 2010-08-02 → 2010-06-24 (-39d) | 22.12d → 11.72d | 0d → 4.83d |  |  |
| 23 | Diseño del modelo físico de datos | 2010-07-01 → 2010-06-08 (-23d) | 2010-07-15 → 2010-06-14 (-31d) | 8.64d → 3.57d | 0d → 4.83d |  |  |
| 24 | Especificación de los caminos de acceso a los datos | 2010-07-19 → 2010-06-14 (-35d) | 2010-07-28 → 2010-06-18 (-40d) | 6.51d → 4.43d | 0d → 4.83d | 23FS+2d → 23 |  |
| 25 | Especificación de la distribución de datos | 2010-07-27 → 2010-06-18 (-39d) | 2010-08-02 → 2010-06-24 (-39d) | 4.72d → 3.72d | 0d → 4.83d | 24FS-1d → 24 |  |
| 26 | Verificación y aceptación de la arquitectura del sistema | 2010-08-02 → 2010-07-01 (-32d) | 2010-08-04 → 2010-07-02 (-33d) |  |  |  |  |
| 27 | Generación y especificación de construcción | 2010-08-04 → 2010-07-02 (-33d) | 2010-08-12 → 2010-07-12 (-31d) | 6.36d → 5.73d |  |  |  |
| 28 | Diseño de migración y carga inicial de datos | 2010-08-04 → 2010-07-02 (-33d) | 2010-08-09 → 2010-07-07 (-33d) |  |  |  |  |
| 29 | Especificación técnica del plan de prueba | 2010-08-04 → 2010-07-02 (-33d) | 2010-08-10 → 2010-07-08 (-33d) |  |  |  |  |
| 30 | Establecimiento de requisitos de implantación | 2010-08-04 → 2010-07-02 (-33d) | 2010-08-26 → 2010-07-14 (-43d) | 15.01d → 8.03d |  |  |  |
| 31 | Aprobación del diseño y SI | 2010-08-26 → 2010-07-14 (-43d) | 2010-08-30 → 2010-07-16 (-45d) | 2.06d → 1.43d |  |  | resources Coordinador; Secretario; Ordenador → Coordinador; Secretario; Pizarra interactiva; Proyector; Ordenador |
| 32 | Diseño Aprobado | 2010-08-30 → 2010-07-16 (-45d) | 2010-08-30 → 2010-07-16 (-45d) |  |  |  |  |
| 33 | **Implementación** | 2010-08-30 → 2010-07-16 (-45d) | 2010-10-06 → 2010-08-02 (-65d) | 27.02d → 11.39d |  |  |  |
| 34 | Preparación del entorno de generación y contrucción | 2010-08-30 → 2010-07-16 (-45d) | 2010-09-01 → 2010-07-20 (-43d) |  |  |  |  |
| 35 | Generación del código de los componentes y procedimientos | 2010-09-01 → 2010-07-20 (-43d) | 2010-10-06 → 2010-08-02 (-65d) | 18.6d → 9.3d |  |  |  |
| 36 | Elaboración del manual de usuario | 2010-08-30 → 2010-07-16 (-45d) | 2010-09-10 → 2010-07-27 (-45d) | 9.15d → 7.07d | 9.3d → 4.32d |  |  |
| 37 | Definición de la formación de usuarios finales | 2010-08-30 → 2010-07-16 (-45d) | 2010-09-16 → 2010-07-21 (-57d) | 7.14d → 3.57d | 9.3d → 6.39d |  |  |
| 38 | Construcción de los componentes y procedimientos de carga inicial de datos | 2010-08-30 → 2010-07-16 (-45d) | 2010-09-23 → 2010-07-23 (-62d) | 10d → 5d | 9.3d → 6.39d |  |  |
| 39 | Implementación aprobada | 2010-09-23 → 2010-07-16 (-69d) | 2010-09-23 → 2010-07-16 (-69d) |  | 9.3d → 11.39d | 38 → none |  |
| 40 | **Pruebas** | 2010-10-06 → 2010-08-02 (-65d) | 2010-10-20 → 2010-08-09 (-72d) | 9.94d → 4.65d |  |  |  |
| 41 | Ejecución de las pruebas unitarias | 2010-10-06 → 2010-08-02 (-65d) | 2010-10-11 → 2010-08-04 (-68d) | 2.18d → 2d |  |  | resources Usuario experto; Coordinador; Ordenador [200%] → Usuario experto; Coordinador; Pizarra interactiva; Ordenador [200%] |
| 42 | Ejecución de las pruebas de integración | 2010-10-06 → 2010-08-02 (-65d) | 2010-10-13 → 2010-08-04 (-70d) | 4.79d → 2.29d |  |  | resources Usuario experto; Coordinador; Ordenador [200%] → Usuario experto; Coordinador; Pizarra interactiva; Ordenador [200%] |
| 43 | Ejecución de las pruebas del sistema | 2010-10-06 → 2010-08-02 (-65d) | 2010-10-18 → 2010-08-05 (-74d) | 5.92d → 2.65d |  |  | resources Usuario experto; Coordinador; Ordenador [200%] → Usuario experto; Coordinador; Pizarra interactiva; Ordenador [200%] |
| 44 | Aprobación del SI | 2010-10-18 → 2010-08-05 (-74d) | 2010-10-20 → 2010-08-09 (-72d) |  |  |  | resources Secretario; Coordinador; Ordenador → Secretario; Coordinador; Proyector; Ordenador |
| 45 | Proyecto Finalizado | 2010-10-20 → 2010-08-02 (-79d) | 2010-10-20 → 2010-08-02 (-79d) |  | 0d → 4.65d | 44 → none |  |
| 46 | **Reunión del grupo de trabajo** |  |  | 63.38d → 65.38d | 56.11d → 4.7d |  |  |
| 47 | Reunión del grupo de trabajo 1 |  |  |  | 119.11d → 69.7d |  | resources Miembro del grupo de trabajo [400%]; Coordinador; Ordenador; Sala de juntas → Miembro del grupo de trabajo [400%]; Coordinador; Ordenador; Pizarra interactiva; Proyector |
| 48 | Reunión del grupo de trabajo 2 |  |  |  | 114.11d → 64.7d |  | resources Miembro del grupo de trabajo [400%]; Coordinador; Ordenador; Sala de juntas → Miembro del grupo de trabajo [400%]; Coordinador; Ordenador; Pizarra interactiva; Proyector |
| 49 | Reunión del grupo de trabajo 3 |  |  |  | 109.11d → 59.7d |  | resources Miembro del grupo de trabajo [400%]; Coordinador; Ordenador; Sala de juntas → Miembro del grupo de trabajo [400%]; Coordinador; Ordenador; Pizarra interactiva; Proyector |
| 50 | Reunión del grupo de trabajo 4 | 2010-05-25 → 2010-05-24 (-1d) | 2010-05-25 → 2010-05-24 (-1d) |  | 104.11d → 54.7d |  | resources Miembro del grupo de trabajo [400%]; Coordinador; Ordenador; Sala de juntas → Miembro del grupo de trabajo [400%]; Coordinador; Ordenador; Pizarra interactiva; Proyector |
| 51 | Reunión del grupo de trabajo 5 | 2010-06-01 → 2010-05-31 (-1d) | 2010-06-01 → 2010-05-31 (-1d) |  | 100.11d → 49.7d |  | resources Miembro del grupo de trabajo [400%]; Coordinador; Ordenador; Sala de juntas → Miembro del grupo de trabajo [400%]; Coordinador; Ordenador; Pizarra interactiva; Proyector |
| 52 | Reunión del grupo de trabajo 6 |  |  |  | 96.11d → 44.7d |  | resources Miembro del grupo de trabajo [400%]; Coordinador; Ordenador; Sala de juntas → Miembro del grupo de trabajo [400%]; Coordinador; Ordenador; Pizarra interactiva; Proyector |
| 53 | Reunión del grupo de trabajo 7 |  |  |  | 91.11d → 39.7d |  | resources Miembro del grupo de trabajo [400%]; Coordinador; Ordenador; Sala de juntas → Miembro del grupo de trabajo [400%]; Coordinador; Ordenador; Pizarra interactiva; Proyector |
| 54 | Reunión del grupo de trabajo 8 |  |  |  | 86.11d → 34.7d |  | resources Miembro del grupo de trabajo [400%]; Coordinador; Ordenador; Sala de juntas → Miembro del grupo de trabajo [400%]; Coordinador; Ordenador; Pizarra interactiva; Proyector |
| 55 | Reunión del grupo de trabajo 9 |  |  |  | 81.11d → 29.7d |  | resources Miembro del grupo de trabajo [400%]; Coordinador; Ordenador; Sala de juntas → Miembro del grupo de trabajo [400%]; Coordinador; Ordenador; Pizarra interactiva; Proyector |
| 56 | Reunión del grupo de trabajo 10 |  |  |  | 76.11d → 24.7d |  | resources Miembro del grupo de trabajo [400%]; Coordinador; Ordenador; Sala de juntas → Miembro del grupo de trabajo [400%]; Coordinador; Ordenador; Pizarra interactiva; Proyector |
| 57 | Reunión del grupo de trabajo 11 |  |  |  | 71.11d → 19.7d |  | resources Miembro del grupo de trabajo [400%]; Coordinador; Ordenador; Sala de juntas → Miembro del grupo de trabajo [400%]; Coordinador; Ordenador; Pizarra interactiva; Proyector |
| 58 | Reunión del grupo de trabajo 12 |  |  |  | 66.11d → 14.7d |  | resources Sala de juntas; Coordinador; Ordenador; Miembro del grupo de trabajo [400%] → Miembro del grupo de trabajo [400%]; Coordinador; Ordenador; Pizarra interactiva; Proyector |
| 59 | Reunión del grupo de trabajo 13 |  |  |  | 61.11d → 9.7d |  | resources Miembro del grupo de trabajo [400%]; Coordinador; Ordenador; Sala de juntas → Miembro del grupo de trabajo [400%]; Coordinador; Ordenador; Pizarra interactiva; Proyector |
| 60 | Reunión del grupo de trabajo 14 |  |  |  | 56.11d → 4.7d |  | resources Miembro del grupo de trabajo [400%]; Coordinador; Ordenador; Sala de juntas → Miembro del grupo de trabajo [400%]; Coordinador; Ordenador; Pizarra interactiva; Proyector |

## Version 4 (saved 2010-04-29, file p1seguimiento.mpp)

Note of the change: Subido p1 para hacer el seguimiento, el archivo p1.mpp se queda como está

Last finish 2010-08-09 → 2010-10-26 (+78d).

Changed:

| ID | Task | Start | Finish | Duration | Total float | Predecessors | Other |
| --- | --- | --- | --- | --- | --- | --- | --- |
| 1 | **Análisis** |  | 2010-06-02 → 2010-06-10 (+8d) | 22.03d → 28.58d |  |  |  |
| 2 | Definición del sistema |  | 2010-05-06 → 2010-05-07 (+1d) | 3.83d → 4.64d | 0d → 0.06d |  | resources Coordinador; Miembro del grupo de trabajo [400%]; Ordenador [600%]; Analista; Pizarra interactiva → Coordinador; Miembro del grupo de trabajo [400%]; Ordenador [600%]; Analista; Pizarra interactiva; Proyector; Red Hat Enterprise Linux 5; Impresora láser color; Servidor Central |
| 3 | Establecimiento de requisitos | 2010-05-06 → 2010-05-07 (+1d) | 2010-05-12 → 2010-05-17 (+5d) | 3.75d → 5.5d |  |  | resources Miembro del grupo de trabajo [200%]; Coordinador; Ordenador [300%] → Miembro del grupo de trabajo [200%]; Coordinador |
| 4 | Identificación de subsistemas | 2010-05-12 → 2010-05-17 (+5d) | 2010-05-14 → 2010-05-21 (+7d) | 2d → 4d |  |  | resources Miembro del grupo de trabajo [200%]; Analista; Ordenador [300%] → Miembro del grupo de trabajo [200%]; Analista |
| 5 | **Elaboración del modelo de datos** | 2010-05-12 → 2010-05-17 (+5d) | 2010-05-26 → 2010-06-02 (+7d) | 9.43d → 12.18d |  |  |  |
| 6 | Elaboración de modelo conceptual y lógica de datos | 2010-05-12 → 2010-05-17 (+5d) | 2010-05-19 → 2010-05-26 (+7d) | 5d → 5.62d |  |  | resources Coordinador; Analista; Ordenador [200%]; Pizarra interactiva → Coordinador; Analista |
| 7 | Normalización | 2010-05-19 → 2010-05-26 (+7d) | 2010-05-24 → 2010-05-28 (+4d) |  |  |  | resources Miembro del grupo de trabajo [400%]; Ordenador [400%] → Miembro del grupo de trabajo [400%] |
| 8 | Especificación de necesidades de carga inicial | 2010-05-24 → 2010-05-28 (+4d) | 2010-05-26 → 2010-06-02 (+7d) |  |  |  | resources Secretario; Miembro del grupo de trabajo [300%]; Ordenador [400%] → Secretario; Miembro del grupo de trabajo [300%] |
| 9 | Elaboración del modelo de procesos | 2010-05-12 → 2010-05-17 (+5d) | 2010-05-20 → 2010-05-26 (+6d) | 5.78d → 5.87d | 3.65d → 5.31d |  | resources Coordinador; Analista; Ordenador [400%]; Miembro del grupo de trabajo [200%] → Coordinador; Analista; Miembro del grupo de trabajo [200%] |
| 10 | Definición de interfaz de usuario | 2010-05-12 → 2010-05-17 (+5d) | 2010-05-20 → 2010-05-26 (+6d) |  | 3.93d → 5.68d |  | resources Usuario experto; Miembro del grupo de trabajo [300%]; Secretario; Ordenador [500%]; Pizarra interactiva → Usuario experto; Miembro del grupo de trabajo [300%]; Secretario |
| 11 | Análisis de consistencia y especificación de requisitos | 2010-05-26 → 2010-06-02 (+7d) | 2010-05-31 → 2010-06-08 (+8d) | 3.28d → 3.78d | 0.94d → 1d |  | resources Analista; Coordinador; Miembro del grupo de trabajo [400%]; Pizarra interactiva; Ordenador [600%] → Analista; Coordinador; Miembro del grupo de trabajo [400%] |
| 12 | Especificación de plan de pruebas | 2010-05-26 → 2010-06-02 (+7d) | 2010-06-01 → 2010-06-09 (+8d) | 4.22d → 4.65d |  |  | resources Usuario experto; Analista; Coordinador; Ordenador [300%] → Usuario experto; Analista; Coordinador |
| 13 | Aprobación del análisis del SI | 2010-06-01 → 2010-06-09 (+8d) | 2010-06-02 → 2010-06-10 (+8d) | 0.8d → 1d |  |  | resources Ordenador; Coordinador; Analista; Pizarra interactiva; Programador; Secretario → Coordinador; Analista; Programador; Secretario |
| 14 | Análisis aprobado | 2010-06-02 → 2010-06-10 (+8d) | 2010-06-02 → 2010-06-10 (+8d) |  |  |  |  |
| 15 | **Diseño** | 2010-06-02 → 2010-06-10 (+8d) | 2010-07-16 → 2010-08-18 (+33d) | 32.01d → 48.97d |  |  |  |
| 16 | Definición de la arquitectura del sistema | 2010-06-02 → 2010-06-10 (+8d) | 2010-06-08 → 2010-06-17 (+9d) | 4.57d → 5.41d |  |  | resources Coordinador; Analista; Ordenador [200%]; Pizarra interactiva; Miembro del grupo de trabajo [400%] → Coordinador; Analista; Miembro del grupo de trabajo [400%] |
| 17 | Diseño de la arquitectura de soporte | 2010-06-08 → 2010-06-17 (+9d) | 2010-06-15 → 2010-06-24 (+9d) | 4.57d → 5.11d |  |  | resources Analista; Coordinador; Miembro del grupo de trabajo [200%]; Ordenador [400%]; Pizarra interactiva → Analista; Coordinador; Miembro del grupo de trabajo [200%] |
| 18 | **Diseño de la arquitectura de módulos de sistema** | 2010-06-08 → 2010-06-17 (+9d) | 2010-07-01 → 2010-07-21 (+20d) | 16.55d → 23.82d |  |  |  |
| 19 | Diseño de módulos del sistema | 2010-06-08 → 2010-06-17 (+9d) | 2010-06-21 → 2010-07-01 (+10d) |  |  |  | resources Miembro del grupo de trabajo [200%]; Ordenador [200%] → Miembro del grupo de trabajo [200%] |
| 20 | Diseño de comucación entre módulos | 2010-06-21 → 2010-07-01 (+10d) | 2010-06-25 → 2010-07-15 (+20d) | 4.27d → 9.04d |  |  | resources Miembro del grupo de trabajo [200%]; Coordinador [200%] → Miembro del grupo de trabajo [200%]; Coordinador |
| 21 | Revisión de la interfaz de usuario | 2010-06-25 → 2010-07-15 (+20d) | 2010-07-01 → 2010-07-21 (+20d) | 3.85d → 4.72d |  |  | resources Coordinador; Analista; Usuario experto; Ordenador [300%]; Pizarra interactiva → Coordinador; Analista; Usuario experto |
| 22 | **Diseño físico de datos** | 2010-06-08 → 2010-06-17 (+9d) | 2010-06-24 → 2010-07-20 (+26d) | 11.72d → 22.18d | 4.83d → 1.64d |  |  |
| 23 | Diseño del modelo físico de datos | 2010-06-08 → 2010-06-17 (+9d) | 2010-06-14 → 2010-06-30 (+16d) | 3.57d → 5d | 4.83d → 1.64d |  | resources Coordinador; Analista; Ordenador [300%]; Miembro del grupo de trabajo → Coordinador; Analista; Miembro del grupo de trabajo |
| 24 | Especificación de los caminos de acceso a los datos | 2010-06-14 → 2010-07-02 (+18d) | 2010-06-18 → 2010-07-14 (+26d) |  | 4.83d → 1.64d | 23 → 23FS+2d | resources Miembro del grupo de trabajo [300%]; Ordenador [300%] → Miembro del grupo de trabajo [300%] |
| 25 | Especificación de la distribución de datos | 2010-06-18 → 2010-07-14 (+26d) | 2010-06-24 → 2010-07-20 (+26d) |  | 4.83d → 1.64d | 24 → 24FS-1d | resources Miembro del grupo de trabajo [200%]; Ordenador [200%] → Miembro del grupo de trabajo [200%] |
| 26 | Verificación y aceptación de la arquitectura del sistema | 2010-07-01 → 2010-07-21 (+20d) | 2010-07-02 → 2010-07-23 (+21d) |  |  |  | resources Coordinador; Miembro del grupo de trabajo [400%]; Ordenador [500%] → Coordinador; Miembro del grupo de trabajo [400%] |
| 27 | Generación y especificación de construcción | 2010-07-02 → 2010-07-23 (+21d) | 2010-07-12 → 2010-08-03 (+22d) | 5.73d → 6.95d |  |  | resources Coordinador; Analista; Ordenador [200%] → Coordinador; Analista |
| 28 | Diseño de migración y carga inicial de datos | 2010-07-02 → 2010-07-23 (+21d) | 2010-07-07 → 2010-07-28 (+21d) |  |  |  | resources Miembro del grupo de trabajo [200%]; Ordenador [200%] → Miembro del grupo de trabajo [200%] |
| 29 | Especificación técnica del plan de prueba | 2010-07-02 → 2010-07-23 (+21d) | 2010-07-08 → 2010-07-29 (+21d) |  |  |  | resources Miembro del grupo de trabajo [200%]; Ordenador [200%] → Miembro del grupo de trabajo [200%] |
| 30 | Establecimiento de requisitos de implantación | 2010-07-02 → 2010-07-28 (+26d) | 2010-07-14 → 2010-08-17 (+34d) | 8.03d → 12.52d |  |  | resources Miembro del grupo de trabajo; Coordinador; Ordenador [200%] → Miembro del grupo de trabajo; Coordinador |
| 31 | Aprobación del diseño y SI | 2010-07-14 → 2010-08-17 (+34d) | 2010-07-16 → 2010-08-18 (+33d) |  |  |  | resources Coordinador; Secretario; Pizarra interactiva; Proyector; Ordenador → Coordinador; Secretario |
| 32 | Diseño Aprobado | 2010-07-16 → 2010-08-18 (+33d) | 2010-07-16 → 2010-08-18 (+33d) |  |  |  |  |
| 33 | **Implementación** | 2010-07-16 → 2010-08-18 (+33d) | 2010-08-02 → 2010-10-01 (+60d) | 11.39d → 31.6d |  |  |  |
| 34 | Preparación del entorno de generación y contrucción | 2010-07-16 → 2010-08-18 (+33d) | 2010-07-20 → 2010-08-23 (+34d) | 2.09d → 3.13d |  |  | resources Programador; Ordenador; Miembro del grupo de trabajo → Programador; Miembro del grupo de trabajo |
| 35 | Generación del código de los componentes y procedimientos | 2010-07-20 → 2010-09-10 (+52d) | 2010-08-02 → 2010-09-24 (+53d) |  | 0d → 5d |  | resources Programador; Ordenador → Programador |
| 36 | Elaboración del manual de usuario | 2010-07-16 → 2010-08-18 (+33d) | 2010-07-27 → 2010-09-07 (+42d) | 7.07d → 13.73d | 4.32d → 0d |  | resources Programador; Ordenador [200%]; Secretario → Programador; Secretario |
| 37 | Definición de la formación de usuarios finales | 2010-07-16 → 2010-09-07 (+53d) | 2010-07-21 → 2010-09-10 (+51d) |  | 6.39d → 0d |  | resources Programador; Ordenador → Programador |
| 38 | Construcción de los componentes y procedimientos de carga inicial de datos | 2010-07-16 → 2010-09-24 (+70d) | 2010-07-23 → 2010-10-01 (+70d) |  | 6.39d → 0d |  | resources Programador; Ordenador → Programador |
| 39 | Implementación aprobada | 2010-07-16 → 2010-10-01 (+77d) | 2010-07-16 → 2010-10-01 (+77d) |  | 11.39d → 0d | none → 38 |  |
| 40 | **Pruebas** | 2010-08-02 → 2010-10-01 (+60d) | 2010-08-09 → 2010-10-26 (+78d) | 4.65d → 17.37d |  |  |  |
| 41 | Ejecución de las pruebas unitarias | 2010-08-02 → 2010-10-01 (+60d) | 2010-08-04 → 2010-10-07 (+64d) | 2d → 4.5d |  |  | resources Usuario experto; Coordinador; Pizarra interactiva; Ordenador [200%] → Usuario experto; Coordinador |
| 42 | Ejecución de las pruebas de integración | 2010-08-02 → 2010-10-07 (+66d) | 2010-08-04 → 2010-10-14 (+71d) | 2.29d → 5.45d |  |  | resources Usuario experto; Coordinador; Pizarra interactiva; Ordenador [200%] → Usuario experto; Coordinador |
| 43 | Ejecución de las pruebas del sistema | 2010-08-02 → 2010-10-13 (+72d) | 2010-08-05 → 2010-10-22 (+78d) | 2.65d → 6.55d |  |  | resources Usuario experto; Coordinador; Pizarra interactiva; Ordenador [200%] → Usuario experto; Coordinador |
| 44 | Aprobación del SI | 2010-08-05 → 2010-10-22 (+78d) | 2010-08-09 → 2010-10-26 (+78d) | 2d → 2.5d |  |  | resources Secretario; Coordinador; Proyector; Ordenador → Secretario; Coordinador |
| 45 | Proyecto Finalizado | 2010-08-02 → 2010-10-26 (+85d) | 2010-08-02 → 2010-10-26 (+85d) |  | 4.65d → 0d | none → 44 |  |
| 47 | Reunión del grupo de trabajo 1 |  |  |  | 69.7d → 126.15d |  | resources Miembro del grupo de trabajo [400%]; Coordinador; Ordenador; Pizarra interactiva; Proyector → Miembro del grupo de trabajo [400%]; Coordinador; Sala de juntas |
| 48 | Reunión del grupo de trabajo 2 |  |  |  | 64.7d → 121.15d |  | resources Miembro del grupo de trabajo [400%]; Coordinador; Ordenador; Pizarra interactiva; Proyector → Miembro del grupo de trabajo [400%]; Coordinador; Sala de juntas |
| 49 | Reunión del grupo de trabajo 3 |  |  |  | 59.7d → 116.15d |  | resources Miembro del grupo de trabajo [400%]; Coordinador; Ordenador; Pizarra interactiva; Proyector → Miembro del grupo de trabajo [400%]; Coordinador; Sala de juntas |
| 50 | Reunión del grupo de trabajo 4 | 2010-05-24 → 2010-05-25 (+1d) | 2010-05-24 → 2010-05-25 (+1d) |  | 54.7d → 110.15d |  | resources Miembro del grupo de trabajo [400%]; Coordinador; Ordenador; Pizarra interactiva; Proyector → Miembro del grupo de trabajo [400%]; Coordinador; Sala de juntas |
| 51 | Reunión del grupo de trabajo 5 | 2010-05-31 → 2010-06-01 (+1d) | 2010-05-31 → 2010-06-01 (+1d) |  | 49.7d → 105.15d |  | resources Miembro del grupo de trabajo [400%]; Coordinador; Ordenador; Pizarra interactiva; Proyector → Miembro del grupo de trabajo [400%]; Coordinador; Sala de juntas |
| 52 | Reunión del grupo de trabajo 6 |  |  |  | 44.7d → 101.15d |  | resources Miembro del grupo de trabajo [400%]; Coordinador; Ordenador; Pizarra interactiva; Proyector → Miembro del grupo de trabajo [400%]; Coordinador; Sala de juntas |
| 53 | Reunión del grupo de trabajo 7 |  |  |  | 39.7d → 96.15d |  | resources Miembro del grupo de trabajo [400%]; Coordinador; Ordenador; Pizarra interactiva; Proyector → Miembro del grupo de trabajo [400%]; Coordinador; Sala de juntas |
| 54 | Reunión del grupo de trabajo 8 |  |  |  | 34.7d → 91.15d |  | resources Miembro del grupo de trabajo [400%]; Coordinador; Ordenador; Pizarra interactiva; Proyector → Miembro del grupo de trabajo [400%]; Coordinador; Sala de juntas |
| 55 | Reunión del grupo de trabajo 9 |  |  |  | 29.7d → 86.15d |  | resources Miembro del grupo de trabajo [400%]; Coordinador; Ordenador; Pizarra interactiva; Proyector → Miembro del grupo de trabajo [400%]; Coordinador; Sala de juntas |
| 56 | Reunión del grupo de trabajo 10 |  |  |  | 24.7d → 81.15d |  | resources Miembro del grupo de trabajo [400%]; Coordinador; Ordenador; Pizarra interactiva; Proyector → Miembro del grupo de trabajo [400%]; Coordinador; Sala de juntas |
| 57 | Reunión del grupo de trabajo 11 |  |  |  | 19.7d → 76.15d |  | resources Miembro del grupo de trabajo [400%]; Coordinador; Ordenador; Pizarra interactiva; Proyector → Miembro del grupo de trabajo [400%]; Coordinador; Sala de juntas |
| 58 | Reunión del grupo de trabajo 12 |  |  |  | 14.7d → 71.15d |  | resources Miembro del grupo de trabajo [400%]; Coordinador; Ordenador; Pizarra interactiva; Proyector → Miembro del grupo de trabajo [400%]; Coordinador; Sala de juntas |
| 59 | Reunión del grupo de trabajo 13 |  |  |  | 9.7d → 66.15d |  | resources Miembro del grupo de trabajo [400%]; Coordinador; Ordenador; Pizarra interactiva; Proyector → Miembro del grupo de trabajo [400%]; Coordinador; Sala de juntas |
| 60 | Reunión del grupo de trabajo 14 |  |  |  | 4.7d → 61.15d |  | resources Miembro del grupo de trabajo [400%]; Coordinador; Ordenador; Pizarra interactiva; Proyector → Miembro del grupo de trabajo [400%]; Coordinador; Sala de juntas |
